# Cronograma

Schedule from MS Project, 2022-04-01 to 2022-05-31, costs in S.

## Calendars

- Estándar: Mon-Sun 07:00-12:00, 13:00-16:00.

## Resources

| Resource | Group | Rate | Cost per use |
| --- | --- | --- | --- |
| OPERARIO | Mano de Obra | 24.79 |  |
| OFICIAL | Mano de Obra | 19.59 |  |
| PEON | Mano de Obra | 17.71 |  |
| TOPOGRAFO | Mano de Obra | 24.79 |  |
| AGUA | Material |  | 5 |
| FIERRO CORRUGADO Ø=3/4" L= 1.33 M CON HILO PARA TUERCA M18 | Material |  | 35 |
| ALAMBRE NEGRO N°8 | Material |  | 5 |
| ALAMBRE NEGRO N°16 | Material |  | 5 |
| CLAVOS CON CABEZA DE 2 1/2" 3" 4" | Material |  | 6.5 |
| PERNOS DE ALTA RESISTENCIA ASTM 325 Ø=5/8" L=2.5" | Material |  | 3 |
| PERNOS DE ALTA RESISTENCIA ASTM 325 Ø=3/4" L=2.0" | Material |  | 3 |
| ARANDELA DE PRESION Ø=3/4" | Material |  | 0.5 |
| ARANDELA DE PRESION Ø=5/8" | Material |  | 0.5 |
| TUERCA M18 GRADO 8 | Material |  | 2 |
| TUERCA Ø=5/8" GRADO 8 | Material |  | 2 |
| TUERCA Ø=3/4" GRADO 8 | Material |  | 3 |
| ACERO fy=4200 Kg/cm2 | Material |  | 5 |
| PIEDRA CHANCADA DE 1/2" Y 3/4" | Material |  | 100 |
| ARENA GRUESA | Material |  | 100 |
| CEMENTO PORTLAND TIPO I | Material |  | 28.5 |
| AUTOPERFORANTE NO 8X1/2" | Material |  | 20 |
| FIJACION / AUTOPERFORANTES | Material |  | 0.5 |
| WAYPE | Material |  | 12 |
| CORDEL | Material |  | 0.2 |
| ELECTRODO E7018 | Material |  | 18 |
| ELECTRODO E6011 | Material |  | 18 |
| PANEL ALUZINC AZ 150 CURVO PREPINTADO E=0.45MM CON CAPA INTERNA DE POLIURETANO E=6MM. | Material |  | 120 |
| YESO DE 28 Kg | Material |  | 12 |
| SELLADOR ELASTIC.POLIURETANO SIKAFLEX 1A | Material |  | 40 |
| PEGAMENTO PARA PVC 1/4 GLN | Material |  | 25 |
| LIJA | Material |  | 2 |
| DISCO DE CORTE DE ACERO DE 14" (TRONSADORA) | Material |  | 22 |
| NEOPRENO E=12 MM | Material |  | 290 |
| DISCO DE CORTE DE ACERO DE 7" (AMOLADORA) | Material |  | 9.5 |
| CEPILLO DE ALAMBRE TICO COPA DE 4'' | Material |  | 25 |
| GROUT DE NIVELACION | Material |  | 7.5 |
| GASOLINA 84 OCTANOS | Material |  | 18 |
| DETERGENTE | Material |  | 6.5 |
| SOGA DE 3/4" NYLON | Material |  | 4.8 |
| TRAPO INDUSTRIAL | Material |  | 7 |
| ENSAYOS NO DESTRUCTIVOS | Material |  | 1500 |
| MADERA TORNILLO | Material |  | 3.5 |
| PLATINA 1" E=3/16" | Material |  | 5.3 |
| ANGULAR 4" E=1/4" | Material |  | 50.5 |
| TUBO CIRCULAR SCHEDULE 40 Ø=8" | Material |  | 383.49 |
| DILUYENTE ESTANDAR (THINNER) | Material |  | 19 |
| PETROLEO | Material |  | 17 |
| PINTURA ESMALTE SINTETICO | Material |  | 45 |
| BASE ANTICORROSIVA | Material |  | 40 |
| PLANCHA METÁLICA E=12 MM Ø=0.40M | Material |  | 710.38 |
| PLANCHA METÁLICA E=3/8 PLG | Material |  | 532.79 |
| PLANCHA METÁLICA E=6 MM | Material |  | 340.62 |
| PLANCHA MET. ASTM A1008 LAF E=1/32" TAPAS | Material |  | 53.78 |
| PLANCHA METÁLICA GALVANIZADA E=1/27" | Material |  | 53.78 |
| CINTA BUTILICO DE DOBLE CONTACTO PARA TECHOS +15M | Material |  | 98.5 |
| TUBO LAC 100X50X2.5 MM | Material |  | 65.07 |
| TUBO LAC 50X50X2 MM | Material |  | 24.07 |
| TUBO LAC 70X50X2.5 MM | Material |  | 44.95 |
| TUBO LAC 80x40X2 MM | Material |  | 28.48 |
| CODO PVC SAL 4"x90º | Material |  | 9 |
| TUBO PVC SAL 4" | Material |  | 11 |
| CODO PVC SAL 4"X45º | Material |  | 9 |
| HERRAMIENTAS MANUALES | Equipo | 8 |  |
| TRONZADORA C/DISCO DE CORTE Ø 14" | Equipo | 5 |  |
| SOLDADORA | Equipo | 5 |  |
| EQUIPO DE OXICORTE | Equipo | 35 |  |
| ANDAMIO METALICO | Equipo | 5 |  |
| COMPRESORA NEUMATICA 76 HP 125-175 PCM (MAQUINA SERVIDA) | Equipo | 5 |  |
| VIBRADOR DE CONCRETO Ø 1 3/4" 4 HP | Equipo | 7 |  |
| MEZCLADORA CONCRETO TROMPO 8 HP 9 P3 | Equipo | 12.5 |  |
| ESTACION TOTAL | Equipo | 100 |  |
| GRUA 5 TN | Equipo | 200 |  |

## Schedule

| ID | WBS | Task | Type | Duration | Start | Finish | Predecessors | Total slack | Free slack | Constraint | Resources | Work | Cost | Text1 | Text8 | Text2 | Text3 | Text4 | Text6 |
| --- | --- | --- | --- | --- | --- | --- | --- | --- | --- | --- | --- | --- | --- | --- | --- | --- | --- | --- | --- |
| 1 | 1 | **"CONSTRUCCION DE COBERTURA EN LA I.E.P SANTA ROSA DE LIMA - ABANCAY EN LA LOCALIDAD DE ABANCAY, DISTRITO DE ABANCAY, PROVINCIA DE ABANCAY, DEPARTAMENTO APURIMAC"** |  | 60d | 2022-04-01 | 2022-05-31 |  | 0d |  |  |  | 4805.48h | 640,757.88 |  |  |  |  |  |  |
| 2 | 1.1 | **CUBIERTA METALICA DE LOSA DEPORTIVA PRIMARIA** |  | 60d | 2022-04-01 | 2022-05-31 |  |  |  |  |  | 2526.27h | 332,188.58 | 01 | 000000000000048 |  |  |  |  |
| 3 | 1.1.1 | INICIO DE ACTIVIDADES LOSA DEPORTIVA PRIMARIA | milestone | 0d | 2022-04-01 | 2022-04-01 |  | 0d |  |  |  |  |  |  |  |  |  |  |  |
| 4 | 1.1.2 | **TRABAJOS PRELIMINARES** |  | 1d | 2022-04-01 | 2022-04-02 |  | 0d |  |  |  | 35.77h | 1,304.84 | 01.01 | 000000000000049 |  |  |  |  |
| 5 | 1.1.2.1 | TRAZO Y REPLANTEO DE ESTRUCTURAS METALICAS |  | 1d | 2022-04-01 | 2022-04-02 | 3 | 0d |  | start no earlier than 2022-03-25 | YESO DE 28 Kg [102%]; PEON [268.5%]; TOPOGRAFO [89.3%]; ESTACION TOTAL [89.3%]; CLAVOS CON CABEZA DE 2 1/2" 3" 4" [5.4%]; CORDEL [10204.3%] | 35.77h | 1,304.84 | 01.01.01 | 000000000000050 | 537.07 | 2.48 | 1331.93 | 600 |
| 6 | 1.1.3 | **OBRAS DE CONCRETO ARMADO** |  | 8d | 2022-04-02 | 2022-04-10 |  | 51d |  |  |  | 168.88h | 13,568.61 | 01.02 | 000000000000051 |  |  |  |  |
| 7 | 1.1.3.1 | **ZAPATAS** |  | 3d | 2022-04-02 | 2022-04-05 |  | 56d |  |  |  | 52.64h | 5,629.59 | 01.02.01 | 000000000000052 |  |  |  |  |
| 8 | 1.1.3.1.1 | ZAPATAS - CONCRETO F´c=210 Kg/cm2 |  | 1d | 2022-04-04 | 2022-04-05 | 9 | 56d |  | start no earlier than 2022-03-25 | CEMENTO PORTLAND TIPO I [6305%]; GASOLINA 84 OCTANOS [129.6%]; OPERARIO [51.8%]; OFICIAL [51.8%]; PEON [207.4%]; VIBRADOR DE CONCRETO Ø 1 3/4" 4 HP [25.9%]; MEZCLADORA CONCRETO TROMPO 8 HP 9 P3 [25.9%]; AGUA [119.2%]; PIEDRA CHANCADA DE 1/2" Y 3/4" [375.8%]; ARENA GRUESA [356.4%] | 29.03h | 3,076.74 | 01.02.01.01 | 000000000000095 | 6.48 | 477.03 | 3091.15 | 25 |
| 9 | 1.1.3.1.2 | ZAPATAS - ACERO f'y=4200 Kg/cm2 |  | 2d | 2022-04-02 | 2022-04-04 | 5 | 56d | 0d | start no earlier than 2022-03-25 | OPERARIO [73.8%]; OFICIAL [73.8%]; ALAMBRE NEGRO N°16 [1844.5%]; ACERO fy=4200 Kg/cm2 [38734.5%] | 23.61h | 2,552.85 | 01.02.01.02 | 000000000000096 | 368.9 | 6.99 | 2578.61 | 250 |
| 10 | 1.1.3.2 | **COLUMNAS** |  | 8d | 2022-04-02 | 2022-04-10 |  | 51d |  |  |  | 116.24h | 7,939.02 | 01.02.02 | 000000000000055 |  |  |  |  |
| 11 | 1.1.3.2.1 | COLUMNAS - CONCRETO f'c=210 Kg/cm2 |  | 1d | 2022-04-09 | 2022-04-10 | 12 | 51d |  | start no earlier than 2022-03-25 | CEMENTO PORTLAND TIPO I [3298.5%]; GASOLINA 84 OCTANOS [84.8%]; OPERARIO [18.8%]; OFICIAL [37.7%]; PEON [207.2%]; VIBRADOR DE CONCRETO Ø 1 3/4" 4 HP [18.8%]; MEZCLADORA CONCRETO TROMPO 8 HP 9 P3 [18.8%]; PIEDRA CHANCADA DE 1/2" Y 3/4" [176.3%]; ARENA GRUESA [179.7%] | 24.11h | 1,730.54 | 01.02.02.01 | 000000000000056 | 3.39 | 513.94 | 1742.26 | 18 |
| 12 | 1.1.3.2.2 | COLUMNAS - ENCOFRADO Y DESENCOFRADO |  | 4d | 2022-04-05 | 2022-04-09 | 13 | 51d | 0d | start no earlier than 2022-03-25 | PETROLEO [678.6%]; OPERARIO [84.8%]; OFICIAL [84.8%]; ALAMBRE NEGRO N°8 [1017.9%]; CLAVOS CON CABEZA DE 2 1/2" 3" 4" [576.8%]; MADERA TORNILLO [20222.3%] | 54.29h | 2,116.18 | 01.02.02.02 | 000000000000057 | 33.93 | 63.44 | 2152.52 | 10 |
| 13 | 1.1.3.2.3 | COLUMNAS - ACERO f'y=4200 Kg/cm2 |  | 3d | 2022-04-02 | 2022-04-05 | 5 | 51d | 0d | start no earlier than 2022-03-25 | OPERARIO [78.8%]; OFICIAL [78.8%]; ALAMBRE NEGRO N°16 [2956.8%]; ACERO fy=4200 Kg/cm2 [62092.8%] | 37.85h | 4,092.3 | 01.02.02.03 | 000000000000058 | 591.36 | 6.96 | 4115.87 | 250 |
| 14 | 1.1.4 | **LIMPIEZA DE TUBOS** |  | 1d | 2022-04-02 | 2022-04-03 |  | 0d |  |  |  | 48h | 1,440.08 | 01.03 | 000000000000059 |  |  |  |  |
| 15 | 1.1.4.1 | LIMPIEZA DE TUBOS |  | 1d | 2022-04-02 | 2022-04-03 | 5 | 0d |  | start no earlier than 2022-03-25 | PEON [600%]; WAYPE [1000%]; DETERGENTE [4000%]; TRAPO INDUSTRIAL [3000%] | 48h | 1,440.08 | 01.03.01 | 000000000000060 |  | 1440.08 | 1440.08 |  |
| 16 | 1.1.5 | **FABRICACION DE ESTRUCTURAS METALICAS** |  | 29d | 2022-04-03 | 2022-05-02 |  | 0d |  |  |  | 1461.49h | 192,511.42 | 01.04 | 000000000000061 |  |  |  |  |
| 17 | 1.1.5.1 | FABRICACION DE ANCLAJE DE COLUMNAS |  | 1d | 2022-04-03 | 2022-04-04 | 15 | 0d |  | start no earlier than 2022-03-25 | OPERARIO [200%]; OFICIAL; PEON; SOLDADORA; EQUIPO DE OXICORTE; GROUT DE NIVELACION [5810%]; PLANCHA METÁLICA E=12 MM Ø=0.40M [160%]; FIERRO CORRUGADO Ø=3/4" L= 1.33 M CON HILO PARA TUERCA M18 [6300%]; ARANDELA DE PRESION Ø=3/4" [6300%]; TUERCA M18 GRADO 8 [12600%] | 48h | 5,075.9 | 01.04.01 | 000000000000062 | 10 | 509.68 | 5096.8 | 10 |
| 18 | 1.1.5.2 | COLUMNA METÁLICA CIRCULAR TIPO 1 - L=8.40 m |  | 4d | 2022-04-04 | 2022-04-08 | 17 | 0d |  | start no earlier than 2022-03-25 | OPERARIO [166.7%]; OFICIAL [83.3%]; PEON [83.3%]; TRONZADORA C/DISCO DE CORTE Ø 14" [33.3%]; SOLDADORA [166.7%]; EQUIPO DE OXICORTE [33.3%]; ELECTRODO E7018 [1519%]; ELECTRODO E6011 [235.6%]; TUBO CIRCULAR SCHEDULE 40 Ø=8" [4410%]; NEOPRENO E=12 MM [126%]; PLANCHA METÁLICA E=3/8 PLG [368.3%]; PERNOS DE ALTA RESISTENCIA ASTM 325 Ø=5/8" L=2.5" [4200%]; ARANDELA DE PRESION Ø=5/8" [4200%]; TUERCA Ø=5/8" GRADO 8 [4200%]; DISCO DE CORTE DE ACERO DE 14" (TRONSADORA) [1000%]; DISCO DE CORTE DE ACERO DE 7" (AMOLADORA) [3000%]; CEPILLO DE ALAMBRE TICO COPA DE 4'' [500%] | 181.33h | 23,426.52 | 01.04.02 | 000000000000063 |  | 4545.22 | 22726.1 |  |
| 19 | 1.1.5.3 | COLUMNA METÁLICA CIRCULAR TIPO 2 - L=4.90 m |  | 4d | 2022-04-08 | 2022-04-12 | 18 | 0d |  | start no earlier than 2022-03-25 | OPERARIO [166.7%]; OFICIAL [83.3%]; PEON [83.3%]; TRONZADORA C/DISCO DE CORTE Ø 14" [33.3%]; SOLDADORA [166.7%]; EQUIPO DE OXICORTE [33.3%]; ELECTRODO E7018 [1361.9%]; ELECTRODO E6011 [157%]; TUBO CIRCULAR SCHEDULE 40 Ø=8" [3000%]; NEOPRENO E=12 MM [126%]; PLANCHA METÁLICA E=3/8 PLG [368.3%]; PERNOS DE ALTA RESISTENCIA ASTM 325 Ø=5/8" L=2.5" [4200%]; ARANDELA DE PRESION Ø=5/8" [4200%]; TUERCA Ø=5/8" GRADO 8 [4200%]; DISCO DE CORTE DE ACERO DE 14" (TRONSADORA) [1000%]; DISCO DE CORTE DE ACERO DE 7" (AMOLADORA) [3000%]; CEPILLO DE ALAMBRE TICO COPA DE 4'' [500%] | 181.33h | 17,976.9 | 01.04.03 | 000000000000064 |  | 3455.3 | 17276.5 |  |
| 20 | 1.1.5.4 | CERCHA PRINCIPAL |  | 8d | 2022-04-12 | 2022-04-20 | 19 | 0d |  | start no earlier than 2022-03-25 | OPERARIO [200%]; OFICIAL [200%]; PEON; TRONZADORA C/DISCO DE CORTE Ø 14"; SOLDADORA [200%]; EQUIPO DE OXICORTE; ELECTRODO E7018 [1577.8%]; ELECTRODO E6011 [11513.4%]; TUBO LAC 100X50X2.5 MM [57148.9%]; TUBO LAC 50X50X2 MM [59927.2%]; NEOPRENO E=12 MM [453.6%]; PLANCHA METÁLICA E=3/8 PLG [1158.9%]; PLANCHA METÁLICA E=6 MM [1835.6%]; PERNOS DE ALTA RESISTENCIA ASTM 325 Ø=5/8" L=2.5" [15120%]; ARANDELA DE PRESION Ø=5/8" [15120%]; TUERCA Ø=5/8" GRADO 8 [15120%]; DISCO DE CORTE DE ACERO DE 14" (TRONSADORA) [1836%]; DISCO DE CORTE DE ACERO DE 7" (AMOLADORA) [5400%]; CEPILLO DE ALAMBRE TICO COPA DE 4'' [900%] | 576h | 79,697.96 | 01.04.04 | 000000000000065 |  | 9019.97 | 81179.73 |  |
| 21 | 1.1.5.5 | VIGA ENCAJONADA |  | 2d | 2022-04-20 | 2022-04-22 | 20 | 0d |  | start no earlier than 2022-03-25 | OPERARIO [200%]; OFICIAL [200%]; PEON; TRONZADORA C/DISCO DE CORTE Ø 14"; SOLDADORA [200%]; EQUIPO DE OXICORTE; ELECTRODO E6011 [3093.8%]; TUBO LAC 50X50X2 MM [33957%]; TUBO LAC 70X50X2.5 MM [24696%]; PLANCHA METÁLICA E=3/8 PLG [258.2%]; PLANCHA METÁLICA E=6 MM [952.6%]; DISCO DE CORTE DE ACERO DE 14" (TRONSADORA) [408%]; DISCO DE CORTE DE ACERO DE 7" (AMOLADORA) [1200%]; CEPILLO DE ALAMBRE TICO COPA DE 4'' [200%] | 144h | 27,208.95 | 01.04.05 | 000000000000066 |  | 12991.37 | 25982.74 |  |
| 22 | 1.1.5.6 | CERCHA LONGITUDINAL L= 3.29 m |  | 3d | 2022-04-22 | 2022-04-25 | 21 | 0d |  | start no earlier than 2022-03-25 | OPERARIO [66.7%]; OFICIAL [33.3%]; PEON [33.3%]; TRONZADORA C/DISCO DE CORTE Ø 14" [53.3%]; SOLDADORA [133.3%]; ELECTRODO E6011 [1650.1%]; TUBO LAC 50X50X2 MM [27165.6%]; DISCO DE CORTE DE ACERO DE 14" (TRONSADORA) [160%]; DISCO DE CORTE DE ACERO DE 7" (AMOLADORA) [160%]; CEPILLO DE ALAMBRE TICO COPA DE 4'' [1600%] | 76.8h | 8,205.2 | 01.04.06 | 000000000000067 | 16 | 494.55 | 7912.8 | 12 |
| 23 | 1.1.5.7 | CORREAS METALICAS |  | 3d | 2022-04-25 | 2022-04-28 | 22 | 0d |  | start no earlier than 2022-03-25 | OPERARIO [198.9%]; OFICIAL [49.7%]; PEON [99.5%]; TRONZADORA C/DISCO DE CORTE Ø 14" [79.6%]; SOLDADORA [198.9%]; ELECTRODO E6011 [931%]; TUBO LAC 80x40X2 MM [69087.9%]; PLANCHA MET. ASTM A1008 LAF E=1/32" TAPAS [23.9%]; DISCO DE CORTE DE ACERO DE 14" (TRONSADORA) [23.9%]; DISCO DE CORTE DE ACERO DE 7" (AMOLADORA) [23.9%] | 150.4h | 22,038.63 | 01.04.07 | 000000000000068 | 596.82 | 37.01 | 22088.31 | 200 |
| 24 | 1.1.5.8 | ARRIOSTRAMIENTO |  | 1d | 2022-04-28 | 2022-04-29 | 23 | 0d |  | start no earlier than 2022-03-25 | OPERARIO [51.2%]; OFICIAL [25.6%]; PEON [51.2%]; TRONZADORA C/DISCO DE CORTE Ø 14" [41%]; SOLDADORA [51.2%]; ELECTRODO E6011 [189.7%]; ANGULAR 4" E=1/4" [8467.2%]; PLANCHA METÁLICA E=3/8 PLG [122.1%]; PERNOS DE ALTA RESISTENCIA ASTM 325 Ø=3/4" L=2.0" [6144%]; ARANDELA DE PRESION Ø=3/4" [6144%]; TUERCA Ø=3/4" GRADO 8 [6144%]; DISCO DE CORTE DE ACERO DE 14" (TRONSADORA) [1.5%]; DISCO DE CORTE DE ACERO DE 7" (AMOLADORA) [1.5%] | 17.61h | 5,611.52 | 01.04.08 | 000000000000069 | 76.8 | 73.33 | 5631.74 | 150 |
| 25 | 1.1.5.9 | CANALETA |  | 3d | 2022-04-29 | 2022-05-02 | 24 | 0d |  | start no earlier than 2022-03-25 | AUTOPERFORANTE NO 8X1/2" [199.9%]; OPERARIO [74.7%]; OFICIAL [37.3%]; PEON [37.3%]; TRONZADORA C/DISCO DE CORTE Ø 14" [59.7%]; SOLDADORA [149.3%]; PLATINA 1" E=3/16" [1852.5%]; PLANCHA METÁLICA GALVANIZADA E=1/27" [3759.8%]; SELLADOR ELASTIC.POLIURETANO SIKAFLEX 1A [199.9%]; DISCO DE CORTE DE ACERO DE 14" (TRONSADORA) [1.1%]; DISCO DE CORTE DE ACERO DE 7" (AMOLADORA) [1.1%] | 86.02h | 3,269.85 | 01.05.02 | 000000000000070 | 56 | 59.76 | 3346.56 | 25 |

| ID | WBS | Task | Type | Duration | Start | Finish | Predecessors | Total slack | Constraint | Resources | Work | Cost | Text1 | Text8 | Text2 | Text3 | Text4 | Text6 |
| --- | --- | --- | --- | --- | --- | --- | --- | --- | --- | --- | --- | --- | --- | --- | --- | --- | --- | --- |
| 26 | 1.1.6 | **INSTALACION Y MONTAJE** |  | 12d | 2022-05-02 | 2022-05-14 |  | 0d |  |  | 443.71h | 10,527.81 | 01.05 | 000000000000071 |  |  |  |  |
| 27 | 1.1.6.1 | INSTALACION DE ANCLAJE DE COLUMNAS |  | 1d | 2022-05-02 | 2022-05-03 | 25 | 0d | start no earlier than 2022-03-25 | OPERARIO; PEON; TOPOGRAFO [50%]; SOLDADORA [62.5%]; ELECTRODO E6011 [1%] | 25h | 464.34 | 01.05.03 | 000000000000072 | 10 | 48.64 | 486.4 | 10 |
| 28 | 1.1.6.2 | MONTAJE DE COLUMNA METÁLICA CIRCULAR TIPO 1 - L=8.40 m |  | 1d | 2022-05-03 | 2022-05-04 | 27 | 27d | start no earlier than 2022-03-25 | OPERARIO [33.3%]; OFICIAL [33.3%]; PEON [33.3%]; TOPOGRAFO [16.7%]; SOLDADORA [41.7%]; ANDAMIO METALICO [41.7%]; ESTACION TOTAL [16.7%]; GRUA 5 TN [31.2%]; ELECTRODO E6011 [0.5%]; SOGA DE 3/4" NYLON [1000%] | 19.83h | 913.4 | 01.05.01 | 000000000000073 |  | 183.86 | 919.3 | 15 |
| 29 | 1.1.6.3 | MONTAJE DE COLUMNA METÁLICA CIRCULAR TIPO 2 - L=4.90 m |  | 1d | 2022-05-03 | 2022-05-04 | 27 | 0d | start no earlier than 2022-03-25 | OPERARIO [33.3%]; OFICIAL [33.3%]; PEON [33.3%]; TOPOGRAFO [16.7%]; SOLDADORA [41.7%]; ANDAMIO METALICO [41.7%]; ESTACION TOTAL [16.7%]; GRUA 5 TN [25%]; ELECTRODO E6011 [0.5%]; SOGA DE 3/4" NYLON [1000%] | 19.33h | 813.4 | 01.05.04 | 000000000000074 |  | 163.86 | 819.3 | 15 |
| 30 | 1.1.6.4 | MONTAJE DE CERCHA PRINCIPAL |  | 1d | 2022-05-04 | 2022-05-05 | 29 | 0d | start no earlier than 2022-03-25 | OPERARIO [180%]; OFICIAL [90%]; PEON [90%]; TOPOGRAFO [45%]; SOLDADORA [90%]; ANDAMIO METALICO [90%]; GRUA 5 TN [45%]; ELECTRODO E6011 [0.9%]; SOGA DE 3/4" NYLON [3600%] | 50.4h | 1,679.74 | 01.05.05 | 000000000000075 |  | 189.02 | 1701.18 | 10 |
| 31 | 1.1.6.5 | MONTAJE DE VIGA ENCAJONADA |  | 1d | 2022-05-05 | 2022-05-06 | 30 | 0d | start no earlier than 2022-03-25 | OPERARIO; OFICIAL [50%]; PEON [50%]; TOPOGRAFO [25%]; SOLDADORA [50%]; ANDAMIO METALICO [50%]; GRUA 5 TN [50%]; ELECTRODO E6011 [0.2%]; SOGA DE 3/4" NYLON [800%] | 30h | 1,275.54 | 01.05.06 | 000000000000076 |  | 643.73 | 1287.46 |  |
| 32 | 1.1.6.6 | MONTAJE DE CERCHA LONGITUDINAL L= 3.29 m |  | 1d | 2022-05-06 | 2022-05-07 | 31 | 0d | start no earlier than 2022-03-25 | OPERARIO [160%]; OFICIAL [80%]; PEON [80%]; TOPOGRAFO [40%]; SOLDADORA [80%]; ANDAMIO METALICO [80%]; GRUA 5 TN [20%]; ELECTRODO E6011 [1.6%]; SOGA DE 3/4" NYLON [6400%] | 43.2h | 1,326.85 | 01.05.07 | 000000000000077 | 16 | 84.12 | 1345.92 | 20 |
| 33 | 1.1.6.7 | MONTAJE DE CORREAS METALICAS |  | 4d | 2022-05-07 | 2022-05-11 | 32 | 0d | start no earlier than 2022-03-25 | OPERARIO [159.2%]; OFICIAL [79.6%]; PEON [159.2%]; SOLDADORA [79.6%]; ANDAMIO METALICO [79.6%]; ELECTRODO E6011 [59.7%]; SOGA DE 3/4" NYLON [596.8%] | 178.25h | 2,957.35 | 01.05.08 | 000000000000078 | 596.82 | 3.91 | 2333.57 | 250 |
| 34 | 1.1.6.8 | MONTAJE DE ARRIOSTRAMIENTO |  | 2d | 2022-05-11 | 2022-05-13 | 33 | 0d | start no earlier than 2022-03-25 | OPERARIO [76.8%]; OFICIAL [38.4%]; PEON [76.8%]; SOLDADORA [76.8%]; ANDAMIO METALICO [76.8%]; ELECTRODO E6011 [7.7%]; SOGA DE 3/4" NYLON [76.8%] | 55.3h | 770.55 | 01.05.09 | 000000000000079 | 76.8 | 5.26 | 403.97 | 200 |
| 35 | 1.1.6.9 | MONTAJE DE CANALETA |  | 1d | 2022-05-13 | 2022-05-14 | 34 | 0d | start no earlier than 2022-03-25 | OPERARIO [56%]; OFICIAL [56%]; PEON [56%]; SOLDADORA [56%]; ANDAMIO METALICO [56%]; ELECTRODO E6011 [5.6%]; SOGA DE 3/4" NYLON [56%] | 22.4h | 326.66 | 01.05.10 | 000000000000080 | 56 | 6.09 | 341.04 | 100 |
| 36 | 1.1.7 | **PRUEBAS DE LABORATORIO** |  | 1d | 2022-04-08 | 2022-04-09 |  | 52d |  |  |  | 1,500 | 01.06 | 000000000000081 |  |  |  |  |
| 37 | 1.1.7.1 | ENSAYOS NO DESTRUCTIVOS |  | 1d | 2022-04-08 | 2022-04-09 | 18 | 52d | start no earlier than 2022-03-25 | ENSAYOS NO DESTRUCTIVOS |  | 1,500 | 01.06.01 | 000000000000082 |  | 1500 | 1500 |  |
| 38 | 1.1.8 | **PINTURAS** |  | 9d | 2022-05-14 | 2022-05-23 |  | 0d |  |  | 138.61h | 7,168.73 | 01.07 | 000000000000083 |  |  |  |  |
| 39 | 1.1.8.1 | PINTURA - COLUMNA METÁLICA CIRCULAR TIPO 1 - L=8.40 m |  | 1d | 2022-05-14 | 2022-05-15 | 35 | 0d | start no earlier than 2022-03-25 | DILUYENTE ESTANDAR (THINNER) [150%]; PINTURA ESMALTE SINTETICO [200%]; BASE ANTICORROSIVA [250%]; OPERARIO [50%]; PEON [50%]; COMPRESORA NEUMATICA 76 HP 125-175 PCM (MAQUINA SERVIDA) [50%]; LIJA [250%] | 12h | 413.5 | 01.07.01 | 000000000000084 |  | 83.72 | 418.6 | 10 |
| 40 | 1.1.8.2 | PINTURA - COLUMNA METÁLICA CIRCULAR TIPO 2 - L=4.90 m |  | 1d | 2022-05-15 | 2022-05-16 | 39 | 0d | start no earlier than 2022-03-25 | DILUYENTE ESTANDAR (THINNER) [68.3%]; PINTURA ESMALTE SINTETICO [119.4%]; BASE ANTICORROSIVA [154.1%]; OPERARIO [50%]; PEON [50%]; COMPRESORA NEUMATICA 76 HP 125-175 PCM (MAQUINA SERVIDA) [50%]; LIJA [250%] | 12h | 323.36 | 01.07.02 | 000000000000085 |  | 65.69 | 328.45 | 10 |
| 41 | 1.1.8.3 | PINTURA - CERCHA PRINCIPAL |  | 2d | 2022-05-16 | 2022-05-18 | 40 | 0d | start no earlier than 2022-03-25 | DILUYENTE ESTANDAR (THINNER) [1308.3%]; PINTURA ESMALTE SINTETICO [2289.6%]; BASE ANTICORROSIVA [2943.7%]; OPERARIO [75%]; PEON [75%]; COMPRESORA NEUMATICA 76 HP 125-175 PCM (MAQUINA SERVIDA) [75%]; LIJA [4500%] | 36h | 3,116.39 | 01.07.03 | 000000000000086 |  | 380.48 | 3424.32 |  |
| 42 | 1.1.8.4 | PINTURA - VIGA ENCAJONADA |  | 1d | 2022-05-18 | 2022-05-19 | 41 | 0d | start no earlier than 2022-03-25 | DILUYENTE ESTANDAR (THINNER) [426.4%]; PINTURA ESMALTE SINTETICO [746.1%]; BASE ANTICORROSIVA [959.3%]; OPERARIO; PEON; COMPRESORA NEUMATICA 76 HP 125-175 PCM (MAQUINA SERVIDA); LIJA [1000%] | 24h | 1,200.51 | 01.07.04 | 000000000000087 |  | 605.36 | 1210.72 |  |
| 43 | 1.1.8.5 | PINTURA - CERCHA LONGITUDINAL L=3.29 m |  | 1d | 2022-05-19 | 2022-05-20 | 42 | 0d | start no earlier than 2022-03-25 | DILUYENTE ESTANDAR (THINNER) [102.4%]; PINTURA ESMALTE SINTETICO [179.3%]; BASE ANTICORROSIVA [230.5%]; OPERARIO [30%]; PEON [30%]; COMPRESORA NEUMATICA 76 HP 125-175 PCM (MAQUINA SERVIDA) [30%]; LIJA [450%] | 7.2h | 315.35 | 01.07.05 | 000000000000088 |  | 35.36 | 318.24 | 30 |
| 44 | 1.1.8.6 | PINTURA - CORREAS METALICAS |  | 2d | 2022-05-20 | 2022-05-22 | 43 | 0d | start no earlier than 2022-03-25 | DILUYENTE ESTANDAR (THINNER) [501.3%]; PINTURA ESMALTE SINTETICO [883.3%]; BASE ANTICORROSIVA [1134%]; OPERARIO [79.6%]; PEON [79.6%]; COMPRESORA NEUMATICA 76 HP 125-175 PCM (MAQUINA SERVIDA) [79.6%]; LIJA [59.7%] | 38.2h | 1,552.29 | 01.07.06 | 000000000000089 | 596.82 | 3.18 | 1897.89 | 250 |
| 45 | 1.1.8.7 | PINTURA - ARRIOSTRAMIENTO |  | 1d | 2022-05-22 | 2022-05-23 | 44 | 0d | start no earlier than 2022-03-25 | DILUYENTE ESTANDAR (THINNER) [53.8%]; PINTURA ESMALTE SINTETICO [94.5%]; BASE ANTICORROSIVA [121.3%]; OPERARIO [38.4%]; PEON [38.4%]; COMPRESORA NEUMATICA 76 HP 125-175 PCM (MAQUINA SERVIDA) [38.4%]; LIJA [7.7%] | 9.22h | 247.33 | 01.07.07 | 000000000000090 | 76.8 | 3.3 | 253.44 | 200 |
| 46 | 1.1.9 | **COBERTURA** |  | 7d | 2022-05-23 | 2022-05-30 |  | 0d |  |  | 217.81h | 103,426.97 | 01.08 | 000000000000091 |  |  |  |  |
| 47 | 1.1.9.1 | SUMINISTRO E INSTALACION DE COBERTURA |  | 7d | 2022-05-23 | 2022-05-30 | 45 | 0d | start no earlier than 2022-03-25 | OPERARIO [194.4%]; OFICIAL [97.3%]; PEON [97.3%]; PANEL ALUZINC AZ 150 CURVO PREPINTADO E=0.45MM CON CAPA INTERNA DE POLIURETANO E=6MM. [77000%]; FIJACION / AUTOPERFORANTES [294000%]; CINTA BUTILICO DE DOBLE CONTACTO PARA TECHOS +15M [4900%] | 217.81h | 103,426.97 | 01.08.01 | 000000000000092 | 700 | 147.37 | 103159 | 120 |
| 48 | 1.1.10 | **AGUAS PLUVIALES** |  | 1d | 2022-05-30 | 2022-05-31 |  | 0d |  |  | 12h | 740.12 | 01.09 | 000000000000093 |  |  |  |  |
| 49 | 1.1.10.1 | SUMINISTRO E INSTALACION DE MONTANTES DE EVACUACION PLUVIAL |  | 1d | 2022-05-30 | 2022-05-31 | 47 | 0d | start no earlier than 2022-03-25 | OPERARIO [50%]; OFICIAL [50%]; ANDAMIO METALICO [50%]; TUBO PVC SAL 4" [3660%]; PEGAMENTO PARA PVC 1/4 GLN [200%]; CODO PVC SAL 4"x90º [600%]; CODO PVC SAL 4"X45º [400%] | 12h | 740.12 | 01.09.01 | 000000000000094 |  | 374.5 | 749 |  |
| 50 | 1.1.10.2 | FIN DE ACTIVIDADES LOSA DEPORTIVA PRIMARIA | milestone | 0d | 2022-05-31 | 2022-05-31 | 49, 37, 11 | 0d |  |  |  |  |  |  |  |  |  |  |

| ID | WBS | Task | Type | Duration | Start | Finish | Predecessors | Total slack | Free slack | Constraint | Resources | Work | Cost | Text1 | Text8 | Text2 | Text3 | Text4 | Text6 |
| --- | --- | --- | --- | --- | --- | --- | --- | --- | --- | --- | --- | --- | --- | --- | --- | --- | --- | --- | --- |
| 51 | 1.2 | **CUBIERTA METALICA DE LOSA DEPORTIVA SECUNDARIA** |  | 57d | 2022-04-01 | 2022-05-28 |  |  |  |  |  | 2279.21h | 308,569.29 | 02 | 000000000000001 |  |  |  |  |
| 52 | 1.2.1 | INICIO DE ACTIVIDADES LOSA DEPORTIVA SECUNDARIA | milestone | 0d | 2022-04-01 | 2022-04-01 |  | 3d | 0d |  |  |  |  |  |  |  |  |  |  |
| 53 | 1.2.2 | **TRABAJOS PRELIMINARES** |  | 1d | 2022-04-01 | 2022-04-02 |  | 3d |  |  |  | 36.19h | 1,320.22 | 02.01 | 000000000000002 |  |  |  |  |
| 54 | 1.2.2.1 | TRAZO Y REPLANTEO DE ESTRUCTURAS METALICAS |  | 1d | 2022-04-01 | 2022-04-02 | 52 | 3d | 0d | start no earlier than 2022-03-25 | YESO DE 28 Kg [103.2%]; PEON [271.7%]; TOPOGRAFO [90.3%]; ESTACION TOTAL [90.3%]; CLAVOS CON CABEZA DE 2 1/2" 3" 4" [5.4%]; CORDEL [10324.6%] | 36.19h | 1,320.22 | 02.01.01 | 000000000000003 | 543.4 | 2.48 | 1347.63 | 600 |
| 55 | 1.2.3 | **OBRAS DE CONCRETO ARMADO** |  | 6d | 2022-04-02 | 2022-04-08 |  | 53d |  |  |  | 137.66h | 11,127.12 | 02.02 | 000000000000004 |  |  |  |  |
| 56 | 1.2.3.1 | **ZAPATAS** |  | 3d | 2022-04-02 | 2022-04-05 |  | 56d |  |  |  | 44.69h | 4,777.16 | 02.02.01 | 000000000000005 |  |  |  |  |
| 57 | 1.2.3.1.1 | ZAPATAS - CONCRETO F´c=210 Kg/cm2 |  | 1d | 2022-04-04 | 2022-04-05 | 58 | 56d | 53d | start no earlier than 2022-03-25 | CEMENTO PORTLAND TIPO I [5604.5%]; GASOLINA 84 OCTANOS [115.2%]; OPERARIO [46.1%]; OFICIAL [46.1%]; PEON [184.3%]; VIBRADOR DE CONCRETO Ø 1 3/4" 4 HP [23%]; MEZCLADORA CONCRETO TROMPO 8 HP 9 P3 [23%]; AGUA [106%]; PIEDRA CHANCADA DE 1/2" Y 3/4" [334.1%]; ARENA GRUESA [316.8%] | 25.8h | 2,734.88 | 02.02.01.01 | 000000000000006 | 5.76 | 477.03 | 2747.69 | 25 |
| 58 | 1.2.3.1.2 | ZAPATAS - ACERO f'y=4200 Kg/cm2 |  | 2d | 2022-04-02 | 2022-04-04 | 54 | 56d | 0d | start no earlier than 2022-03-25 | OPERARIO [59%]; OFICIAL [59%]; ALAMBRE NEGRO N°16 [1475.6%]; ACERO fy=4200 Kg/cm2 [30987.6%] | 18.89h | 2,042.28 | 02.02.01.02 | 000000000000007 | 295.12 | 6.99 | 2062.89 | 250 |
| 59 | 1.2.3.2 | **COLUMNAS** |  | 6d | 2022-04-02 | 2022-04-08 |  | 53d |  |  |  | 92.97h | 6,349.96 | 02.02.02 | 000000000000008 |  |  |  |  |
| 60 | 1.2.3.2.1 | COLUMNAS - CONCRETO f'c=210 Kg/cm2 |  | 1d | 2022-04-07 | 2022-04-08 | 61 | 53d | 50d | start no earlier than 2022-03-25 | CEMENTO PORTLAND TIPO I [2636.8%]; GASOLINA 84 OCTANOS [67.8%]; OPERARIO [15.1%]; OFICIAL [30.1%]; PEON [165.6%]; VIBRADOR DE CONCRETO Ø 1 3/4" 4 HP [15.1%]; MEZCLADORA CONCRETO TROMPO 8 HP 9 P3 [15.1%]; PIEDRA CHANCADA DE 1/2" Y 3/4" [140.9%]; ARENA GRUESA [143.6%] | 19.27h | 1,383.41 | 02.02.02.01 | 000000000000009 | 2.71 | 513.94 | 1392.78 | 18 |
| 61 | 1.2.3.2.2 | COLUMNAS - ENCOFRADO Y DESENCOFRADO |  | 3d | 2022-04-04 | 2022-04-07 | 62 | 53d | 0d | start no earlier than 2022-03-25 | PETROLEO [542.8%]; OPERARIO [90.5%]; OFICIAL [90.5%]; ALAMBRE NEGRO N°8 [814.2%]; CLAVOS CON CABEZA DE 2 1/2" 3" 4" [461.4%]; MADERA TORNILLO [16175.4%] | 43.42h | 1,692.69 | 02.02.02.02 | 000000000000010 | 27.14 | 63.44 | 1721.76 | 10 |
| 62 | 1.2.3.2.3 | COLUMNAS - ACERO f'y=4200 Kg/cm2 |  | 2d | 2022-04-02 | 2022-04-04 | 54 | 53d | 0d | start no earlier than 2022-03-25 | OPERARIO [94.6%]; OFICIAL [94.6%]; ALAMBRE NEGRO N°16 [2365.4%]; ACERO fy=4200 Kg/cm2 [49674.4%] | 30.28h | 3,273.86 | 02.02.02.03 | 000000000000011 | 473.09 | 6.96 | 3292.71 | 250 |
| 63 | 1.2.4 | **LIMPIEZA DE TUBOS** |  | 1d | 2022-04-02 | 2022-04-03 |  | 3d |  |  |  | 48h | 1,440.08 | 02.03 | 000000000000012 |  |  |  |  |
| 64 | 1.2.4.1 | LIMPIEZA DE TUBOS |  | 1d | 2022-04-02 | 2022-04-03 | 54 | 3d | 0d | start no earlier than 2022-03-25 | PEON [600%]; WAYPE [1000%]; DETERGENTE [4000%]; TRAPO INDUSTRIAL [3000%] | 48h | 1,440.08 | 02.03.01 | 000000000000013 |  | 1440.08 | 1440.08 |  |
| 65 | 1.2.5 | **FABRICACION DE ESTRUCTURAS METALICAS** |  | 26d | 2022-04-03 | 2022-04-29 |  | 3d |  |  |  | 1351.78h | 170,818.01 | 02.04 | 000000000000014 |  |  |  |  |
| 66 | 1.2.5.1 | FABRICACION DE ANCLAJE DE COLUMNAS |  | 1d | 2022-04-03 | 2022-04-04 | 64 | 3d | 0d | start no earlier than 2022-03-25 | OPERARIO [160%]; OFICIAL [80%]; PEON [80%]; SOLDADORA [80%]; EQUIPO DE OXICORTE [80%]; GROUT DE NIVELACION [4648%]; PLANCHA METÁLICA E=12 MM Ø=0.40M [128%]; FIERRO CORRUGADO Ø=3/4" L= 1.33 M CON HILO PARA TUERCA M18 [5040%]; ARANDELA DE PRESION Ø=3/4" [5040%]; TUERCA M18 GRADO 8 [10080%] | 38.4h | 4,060.72 | 02.04.01 | 000000000000015 |  | 509.68 | 4077.44 | 10 |
| 67 | 1.2.5.2 | COLUMNA METÁLICA CIRCULAR TIPO 1 - L=8.37 m |  | 2d | 2022-04-04 | 2022-04-06 | 66 | 3d | 0d | start no earlier than 2022-03-25 | OPERARIO [200%]; OFICIAL; PEON; TRONZADORA C/DISCO DE CORTE Ø 14" [40%]; SOLDADORA [200%]; EQUIPO DE OXICORTE [40%]; ELECTRODO E7018 [1215.2%]; ELECTRODO E6011 [188.4%]; TUBO CIRCULAR SCHEDULE 40 Ø=8" [3516%]; NEOPRENO E=12 MM [100.8%]; PLANCHA METÁLICA E=3/8 PLG [294.6%]; PERNOS DE ALTA RESISTENCIA ASTM 325 Ø=5/8" L=2.5" [3360%]; ARANDELA DE PRESION Ø=5/8" [3360%]; TUERCA Ø=5/8" GRADO 8 [3360%]; DISCO DE CORTE DE ACERO DE 14" (TRONSADORA) [800%]; DISCO DE CORTE DE ACERO DE 7" (AMOLADORA) [2400%]; CEPILLO DE ALAMBRE TICO COPA DE 4'' [400%] | 108.8h | 18,093.17 | 02.04.02 | 000000000000016 |  | 4533.72 | 18134.88 |  |
| 68 | 1.2.5.3 | COLUMNA METÁLICA CIRCULAR TIPO 2 - L=4.87 m |  | 2d | 2022-04-06 | 2022-04-08 | 67 | 3d | 0d | start no earlier than 2022-03-25 | OPERARIO [200%]; OFICIAL; PEON; TRONZADORA C/DISCO DE CORTE Ø 14" [40%]; SOLDADORA [200%]; EQUIPO DE OXICORTE [40%]; ELECTRODO E7018 [1089.5%]; ELECTRODO E6011 [125.6%]; TUBO CIRCULAR SCHEDULE 40 Ø=8" [2400%]; NEOPRENO E=12 MM [100.8%]; PLANCHA METÁLICA E=3/8 PLG [294.6%]; PERNOS DE ALTA RESISTENCIA ASTM 325 Ø=5/8" L=2.5" [3360%]; ARANDELA DE PRESION Ø=5/8" [3360%]; TUERCA Ø=5/8" GRADO 8 [3360%]; DISCO DE CORTE DE ACERO DE 14" (TRONSADORA) [800%]; DISCO DE CORTE DE ACERO DE 7" (AMOLADORA) [2400%]; CEPILLO DE ALAMBRE TICO COPA DE 4'' [400%] | 108.8h | 13,779.49 | 02.04.03 | 000000000000017 |  | 3455.3 | 13821.2 |  |
| 69 | 1.2.5.4 | CERCHA PRINCIPAL |  | 8d | 2022-04-08 | 2022-04-16 | 68 | 3d | 0d | start no earlier than 2022-03-25 | OPERARIO [200%]; OFICIAL [200%]; PEON; TRONZADORA C/DISCO DE CORTE Ø 14"; SOLDADORA [200%]; EQUIPO DE OXICORTE; ELECTRODO E7018 [1227.2%]; ELECTRODO E6011 [9676.2%]; TUBO LAC 100X50X2.5 MM [47961.7%]; TUBO LAC 50X50X2 MM [57896.7%]; NEOPRENO E=12 MM [352.8%]; PLANCHA METÁLICA E=3/8 PLG [901.4%]; PLANCHA METÁLICA E=6 MM [1582%]; PERNOS DE ALTA RESISTENCIA ASTM 325 Ø=5/8" L=2.5" [11760%]; ARANDELA DE PRESION Ø=5/8" [11760%]; TUERCA Ø=5/8" GRADO 8 [11760%]; DISCO DE CORTE DE ACERO DE 14" (TRONSADORA) [728%]; DISCO DE CORTE DE ACERO DE 7" (AMOLADORA) [4200%]; CEPILLO DE ALAMBRE TICO COPA DE 4'' [700%] | 576h | 69,716.3 | 02.04.04 | 000000000000018 |  | 9806.2 | 68643.4 |  |
| 70 | 1.2.5.5 | VIGA ENCAJONADA |  | 2d | 2022-04-16 | 2022-04-18 | 69 | 3d | 0d | start no earlier than 2022-03-25 | OPERARIO [200%]; OFICIAL [200%]; PEON; TRONZADORA C/DISCO DE CORTE Ø 14"; SOLDADORA [200%]; EQUIPO DE OXICORTE; ELECTRODO E6011 [3093.8%]; TUBO LAC 50X50X2 MM [33295.5%]; TUBO LAC 70X50X2.5 MM [22843.8%]; PLANCHA METÁLICA E=3/8 PLG [228.6%]; PLANCHA METÁLICA E=6 MM [952.6%]; DISCO DE CORTE DE ACERO DE 14" (TRONSADORA) [408%]; DISCO DE CORTE DE ACERO DE 7" (AMOLADORA) [1200%]; CEPILLO DE ALAMBRE TICO COPA DE 4'' [200%] | 144h | 26,059.35 | 02.04.05 | 000000000000019 |  | 12416.56 | 24833.12 |  |
| 71 | 1.2.5.6 | CERCHA LONGITUDINAL L=4.05m |  | 2d | 2022-04-18 | 2022-04-20 | 70 | 3d | 0d | start no earlier than 2022-03-25 | OPERARIO; OFICIAL [50%]; PEON [50%]; TRONZADORA C/DISCO DE CORTE Ø 14" [80%]; SOLDADORA [200%]; ELECTRODO E6011 [1237.6%]; TUBO LAC 50X50X2 MM [24343.2%]; DISCO DE CORTE DE ACERO DE 14" (TRONSADORA) [120%]; DISCO DE CORTE DE ACERO DE 7" (AMOLADORA) [1200%]; CEPILLO DE ALAMBRE TICO COPA DE 4'' [1200%] | 76.8h | 7,441.59 | 02.04.06 | 000000000000020 | 12 | 582.71 | 6992.52 | 12 |
| 72 | 1.2.5.7 | CORREAS METALICAS |  | 5d | 2022-04-20 | 2022-04-25 | 71 | 3d | 0d | start no earlier than 2022-03-25 | OPERARIO [156.3%]; OFICIAL [39.1%]; PEON [78.2%]; TRONZADORA C/DISCO DE CORTE Ø 14" [62.5%]; SOLDADORA [156.3%]; ELECTRODO E6011 [975.4%]; TUBO LAC 80x40X2 MM [72377.8%]; PLANCHA MET. ASTM A1008 LAF E=1/32" TAPAS [25%]; DISCO DE CORTE DE ACERO DE 14" (TRONSADORA) [25%]; DISCO DE CORTE DE ACERO DE 7" (AMOLADORA) [25%] | 196.95h | 23,657.59 | 02.04.07 | 000000000000021 | 625.24 | 37.01 | 23140.13 | 200 |
| 73 | 1.2.5.8 | ARRIOSTRAMIENTO |  | 1d | 2022-04-25 | 2022-04-26 | 72 | 3d | 0d | start no earlier than 2022-03-25 | OPERARIO [42.8%]; OFICIAL [21.4%]; PEON [42.8%]; TRONZADORA C/DISCO DE CORTE Ø 14" [34.3%]; SOLDADORA [42.8%]; ELECTRODO E6011 [158.6%]; ANGULAR 4" E=1/4" [7078.1%]; PLANCHA METÁLICA E=3/8 PLG [102.1%]; PERNOS DE ALTA RESISTENCIA ASTM 325 Ø=3/4" L=2.0" [5136%]; ARANDELA DE PRESION Ø=3/4" [5136%]; TUERCA Ø=3/4" GRADO 8 [5136%]; DISCO DE CORTE DE ACERO DE 14" (TRONSADORA) [1.3%]; DISCO DE CORTE DE ACERO DE 7" (AMOLADORA) [1.3%] | 14.72h | 4,690.9 | 02.04.08 | 000000000000022 | 64.2 | 73.33 | 4707.79 | 150 |
| 74 | 1.2.5.9 | CANALETA |  | 3d | 2022-04-26 | 2022-04-29 | 73 | 3d | 0d | start no earlier than 2022-03-25 | AUTOPERFORANTE NO 8X1/2" [202.9%]; OPERARIO [75.8%]; OFICIAL [37.9%]; PEON [37.9%]; TRONZADORA C/DISCO DE CORTE Ø 14" [60.6%]; SOLDADORA [151.6%]; PLATINA 1" E=3/16" [1880.3%]; PLANCHA METÁLICA GALVANIZADA E=1/27" [3816.2%]; SELLADOR ELASTIC.POLIURETANO SIKAFLEX 1A [202.9%]; DISCO DE CORTE DE ACERO DE 14" (TRONSADORA) [1.1%]; DISCO DE CORTE DE ACERO DE 7" (AMOLADORA) [1.1%] | 87.31h | 3,318.9 | 02.04.09 | 000000000000023 | 56.84 | 59.76 | 3396.76 | 25 |

| ID | WBS | Task | Type | Duration | Start | Finish | Predecessors | Total slack | Free slack | Constraint | Resources | Work | Cost | Text1 | Text8 | Text3 | Text4 | Text6 | Text2 |
| --- | --- | --- | --- | --- | --- | --- | --- | --- | --- | --- | --- | --- | --- | --- | --- | --- | --- | --- | --- |
| 75 | 1.2.6 | **INSTALACION Y MONTAJE** |  | 11d | 2022-04-29 | 2022-05-10 |  | 3d |  |  |  | 338.84h | 8,319.73 | 02.05 | 000000000000024 |  |  |  |  |
| 76 | 1.2.6.1 | INSTALACION DE ANCLAJE DE COLUMNAS |  | 1d | 2022-04-29 | 2022-04-30 | 74 | 3d | 0d | start no earlier than 2022-03-25 | OPERARIO [80%]; PEON [80%]; TOPOGRAFO [40%]; SOLDADORA [50%]; ELECTRODO E6011 [0.8%] | 20h | 371.47 | 02.05.01 | 000000000000025 | 48.64 | 389.12 | 10 |  |
| 77 | 1.2.6.2 | MONTAJE DE COLUMNA METÁLICA CIRCULAR TIPO 1 - L=8.37 m |  | 1d | 2022-04-30 | 2022-05-01 | 76 | 3d | 0d | start no earlier than 2022-03-25 | OPERARIO [26.7%]; OFICIAL [26.7%]; PEON [26.7%]; TOPOGRAFO [13.3%]; SOLDADORA [33.3%]; ANDAMIO METALICO [33.3%]; ESTACION TOTAL [13.3%]; GRUA 5 TN [25%]; ELECTRODO E6011 [0.4%]; SOGA DE 3/4" NYLON [800%] | 15.87h | 730.72 | 02.05.02 | 000000000000026 | 183.86 | 735.44 | 15 |  |
| 78 | 1.2.6.3 | MONTAJE DE COLUMNA METÁLICA CIRCULAR TIPO 2 - L=4.87 m |  | 1d | 2022-05-01 | 2022-05-02 | 77 | 3d | 0d | start no earlier than 2022-03-25 | OPERARIO [26.7%]; OFICIAL [26.7%]; PEON [26.7%]; TOPOGRAFO [13.3%]; SOLDADORA [33.3%]; ANDAMIO METALICO [33.3%]; ESTACION TOTAL [13.3%]; GRUA 5 TN [20%]; ELECTRODO E6011 [0.4%]; SOGA DE 3/4" NYLON [800%] | 15.47h | 650.72 | 02.05.03 | 000000000000027 | 163.86 | 655.44 | 15 |  |
| 79 | 1.2.6.4 | MONTAJE DE CERCHA PRINCIPAL |  | 1d | 2022-05-02 | 2022-05-03 | 78 | 3d | 0d | start no earlier than 2022-03-25 | OPERARIO [140%]; OFICIAL [70%]; PEON [70%]; TOPOGRAFO [35%]; SOLDADORA [70%]; ANDAMIO METALICO [70%]; GRUA 5 TN [35%]; ELECTRODO E6011 [0.7%]; SOGA DE 3/4" NYLON [2800%] | 39.2h | 1,306.47 | 02.05.04 | 000000000000028 | 189.02 | 1323.14 | 10 |  |
| 80 | 1.2.6.5 | MONTAJE DE VIGA ENCAJONADA |  | 1d | 2022-05-03 | 2022-05-04 | 79 | 3d | 0d | start no earlier than 2022-03-25 | OPERARIO; OFICIAL [50%]; PEON [50%]; TOPOGRAFO [25%]; SOLDADORA [50%]; ANDAMIO METALICO [50%]; GRUA 5 TN [50%]; ELECTRODO E6011 [0.2%]; SOGA DE 3/4" NYLON [800%] | 30h | 1,275.54 | 02.05.05 | 000000000000029 | 643.73 | 1287.46 |  |  |
| 81 | 1.2.6.6 | MONTAJE DE CERCHA LONGITUDINAL L=4.05m |  | 1d | 2022-05-04 | 2022-05-05 | 80 | 3d | 0d | start no earlier than 2022-03-25 | OPERARIO [120%]; OFICIAL [60%]; PEON [60%]; TOPOGRAFO [30%]; SOLDADORA [60%]; ANDAMIO METALICO [60%]; GRUA 5 TN [15%]; ELECTRODO E6011 [1.2%]; SOGA DE 3/4" NYLON [4800%] | 32.4h | 995.14 | 02.05.06 | 000000000000030 | 84.12 | 1009.44 | 20 | 12 |
| 82 | 1.2.6.7 | MONTAJE DE CORREAS METALICAS |  | 3d | 2022-05-05 | 2022-05-08 | 81 | 3d | 0d | start no earlier than 2022-03-25 | OPERARIO [166.7%]; OFICIAL [83.4%]; PEON [166.7%]; SOLDADORA [83.4%]; ANDAMIO METALICO [83.4%]; ELECTRODO E6011 [62.5%]; SOGA DE 3/4" NYLON [625.2%] | 140.05h | 2,333.95 | 02.05.07 | 000000000000031 | 3.91 | 2444.69 | 250 | 625.24 |
| 83 | 1.2.6.8 | MONTAJE DE ARRIOSTRAMIENTO |  | 1d | 2022-05-08 | 2022-05-09 | 82 | 3d | 0d | start no earlier than 2022-03-25 | OPERARIO [64.2%]; OFICIAL [32.1%]; PEON [64.2%]; SOLDADORA [64.2%]; ANDAMIO METALICO [64.2%]; ELECTRODO E6011 [6.4%]; SOGA DE 3/4" NYLON [64.2%] | 23.11h | 324.18 | 02.05.08 | 000000000000032 | 5.26 | 337.69 | 200 | 64.2 |
| 84 | 1.2.6.9 | MONTAJE DE CANALETA |  | 1d | 2022-05-09 | 2022-05-10 | 83 | 3d | 0d | start no earlier than 2022-03-25 | OPERARIO [56.8%]; OFICIAL [56.8%]; PEON [56.8%]; SOLDADORA [56.8%]; ANDAMIO METALICO [56.8%]; ELECTRODO E6011 [5.7%]; SOGA DE 3/4" NYLON [56.8%] | 22.74h | 331.56 | 02.05.09 | 000000000000033 | 6.09 | 346.16 | 100 | 56.84 |
| 85 | 1.2.7 | **PRUEBAS DE LABORATORIO** |  | 1d | 2022-04-06 | 2022-04-07 |  | 54d |  |  |  |  | 1,500 | 02.06 | 000000000000034 |  |  |  |  |
| 86 | 1.2.7.1 | ENSAYOS NO DESTRUCTIVOS |  | 1d | 2022-04-06 | 2022-04-07 | 67 | 54d | 51d | start no earlier than 2022-03-25 | ENSAYOS NO DESTRUCTIVOS |  | 1,500 | 02.06.01 | 000000000000035 | 1500 | 1500 |  |  |
| 87 | 1.2.8 | **PINTURAS** |  | 10d | 2022-05-10 | 2022-05-20 |  | 3d |  |  |  | 162.53h | 7,558.67 | 02.07 | 000000000000036 |  |  |  |  |
| 88 | 1.2.8.1 | PINTURA - COLUMNA METÁLICA CIRCULAR TIPO 1 - L=8.37 m |  | 1d | 2022-05-10 | 2022-05-11 | 84 | 3d | 0d | start no earlier than 2022-03-25 | DILUYENTE ESTANDAR (THINNER) [85.9%]; PINTURA ESMALTE SINTETICO [150.2%]; BASE ANTICORROSIVA [193.5%]; OPERARIO [40%]; PEON [40%]; COMPRESORA NEUMATICA 76 HP 125-175 PCM (MAQUINA SERVIDA) [40%]; LIJA [200%] | 9.6h | 317.34 | 02.07.01 | 000000000000037 | 80.35 | 321.4 | 10 |  |
| 89 | 1.2.8.2 | PINTURA -COLUMNA METÁLICA CIRCULAR TIPO 2 - L=4.87 m |  | 1d | 2022-05-11 | 2022-05-12 | 88 | 3d | 0d | start no earlier than 2022-03-25 | DILUYENTE ESTANDAR (THINNER) [54.7%]; PINTURA ESMALTE SINTETICO [95.6%]; BASE ANTICORROSIVA [123.2%]; OPERARIO [40%]; PEON [40%]; COMPRESORA NEUMATICA 76 HP 125-175 PCM (MAQUINA SERVIDA) [40%]; LIJA [200%] | 9.6h | 258.69 | 02.07.02 | 000000000000038 | 65.69 | 262.76 | 10 |  |
| 90 | 1.2.8.3 | PINTURA - CERCHA PRINCIPAL |  | 2d | 2022-05-12 | 2022-05-14 | 89 | 3d | 0d | start no earlier than 2022-03-25 | DILUYENTE ESTANDAR (THINNER) [1149.3%]; PINTURA ESMALTE SINTETICO [2011.3%]; BASE ANTICORROSIVA [2586%]; OPERARIO [87.5%]; PEON [87.5%]; COMPRESORA NEUMATICA 76 HP 125-175 PCM (MAQUINA SERVIDA) [87.5%]; LIJA [3500%] | 42h | 2,892.87 | 02.07.03 | 000000000000039 | 415.82 | 2910.74 |  |  |
| 91 | 1.2.8.4 | PINTURA - VIGA ENCAJONADA |  | 1d | 2022-05-14 | 2022-05-15 | 90 | 3d | 0d | start no earlier than 2022-03-25 | DILUYENTE ESTANDAR (THINNER) [421%]; PINTURA ESMALTE SINTETICO [736.8%]; BASE ANTICORROSIVA [947.4%]; OPERARIO; PEON; COMPRESORA NEUMATICA 76 HP 125-175 PCM (MAQUINA SERVIDA); LIJA [1000%] | 24h | 1,190.52 | 02.07.04 | 000000000000040 | 600.36 | 1200.72 |  |  |
| 92 | 1.2.8.5 | PINTURA - CERCHA LONGITUDINAL L=4.05m |  | 1d | 2022-05-15 | 2022-05-16 | 91 | 3d | 0d | start no earlier than 2022-03-25 | DILUYENTE ESTANDAR (THINNER) [1632%]; PINTURA ESMALTE SINTETICO [285.6%]; BASE ANTICORROSIVA [367.2%]; OPERARIO [40%]; PEON [40%]; COMPRESORA NEUMATICA 76 HP 125-175 PCM (MAQUINA SERVIDA) [40%]; LIJA [600%] | 9.6h | 749.5 | 02.07.05 | 000000000000041 | 62.79 | 753.48 | 30 | 12 |
| 93 | 1.2.8.6 | PINTURA - CORREAS METALICAS |  | 3d | 2022-05-16 | 2022-05-19 | 92 | 3d | 0d | start no earlier than 2022-03-25 | DILUYENTE ESTANDAR (THINNER) [525.2%]; PINTURA ESMALTE SINTETICO [925.4%]; BASE ANTICORROSIVA [1188%]; OPERARIO [83.4%]; PEON [83.4%]; COMPRESORA NEUMATICA 76 HP 125-175 PCM (MAQUINA SERVIDA) [83.4%]; LIJA [62.5%] | 60.02h | 1,943 | 02.07.06 | 000000000000042 | 3.18 | 1988.26 | 250 | 625.24 |
| 94 | 1.2.8.7 | PINTURA - ARRIOSTRAMIENTO |  | 1d | 2022-05-19 | 2022-05-20 | 93 | 3d | 0d | start no earlier than 2022-03-25 | DILUYENTE ESTANDAR (THINNER) [44.9%]; PINTURA ESMALTE SINTETICO [79%]; BASE ANTICORROSIVA [101.4%]; OPERARIO [32.1%]; PEON [32.1%]; COMPRESORA NEUMATICA 76 HP 125-175 PCM (MAQUINA SERVIDA) [32.1%]; LIJA [6.4%] | 7.7h | 206.76 | 02.07.07 | 000000000000043 | 3.3 | 211.86 | 200 | 64.2 |
| 95 | 1.2.9 | **COBERTURA** |  | 7d | 2022-05-20 | 2022-05-27 |  | 3d |  |  |  | 192.22h | 105,794.1 | 02.08 | 000000000000044 |  |  |  |  |
| 96 | 1.2.9.1 | SUMINISTRO E INSTALACION DE COBERTURA |  | 7d | 2022-05-20 | 2022-05-27 | 94 | 3d | 0d | start no earlier than 2022-03-25 | OPERARIO [171.6%]; OFICIAL [85.8%]; PEON [85.8%]; PANEL ALUZINC AZ 150 CURVO PREPINTADO E=0.45MM CON CAPA INTERNA DE POLIURETANO E=6MM. [79280.3%]; FIJACION / AUTOPERFORANTES [302707%]; CINTA BUTILICO DE DOBLE CONTACTO PARA TECHOS +15M [5045.1%] | 192.22h | 105,794.1 | 02.08.01 | 000000000000045 | 147.37 | 106213.98 | 120 | 720.73 |
| 97 | 1.2.10 | **AGUAS PLUVIALES** |  | 1d | 2022-05-27 | 2022-05-28 |  | 3d |  |  |  | 12h | 691.37 | 02.09 | 000000000000046 |  |  |  |  |
| 98 | 1.2.10.1 | SUMINISTRO E INSTALACION DE MONTANTES DE EVACUACION PLUVIAL |  | 1d | 2022-05-27 | 2022-05-28 | 96 | 3d | 0d | start no earlier than 2022-03-25 | OPERARIO [50%]; OFICIAL [50%]; ANDAMIO METALICO [50%]; TUBO PVC SAL 4" [3660%]; PEGAMENTO PARA PVC 1/4 GLN [5%]; CODO PVC SAL 4"x90º [600%]; CODO PVC SAL 4"X45º [400%] | 12h | 691.37 | 02.09.01 | 000000000000047 | 350.13 | 700.26 |  |  |
| 99 | 1.2.10.2 | FIN DE ACTIVIDADES LOSA DEPORTIVA SECUNDARIA | milestone | 0d | 2022-05-28 | 2022-05-28 | 98, 86, 60, 57 | 3d |  |  |  |  |  |  |  |  |  |  |  |
