# Cronograma

Schedule from MS Project, 2022-03-01 to 2022-04-01, costs in S.

## Calendars

- Estándar: Mon-Sun 07:00-12:00, 13:00-16:00.

## Resources

| Resource | Group | Rate | Cost per use |
| --- | --- | --- | --- |
| OPERARIO | Mano de Obra | 24.79 |  |
| OFICIAL | Mano de Obra | 19.59 |  |
| PEON | Mano de Obra | 17.71 |  |
| TOPOGRAFO | Mano de Obra | 24.79 |  |
| AGUA | Material |  | 5 |
| FIERRO CORRUGADO Ø=3/4" L= 1.33 M CON HILO PARA TUERCA M18 | Material |  | 35 |
| ALAMBRE NEGRO N°8 | Material |  | 5 |
| ALAMBRE NEGRO N°16 | Material |  | 5 |
| CLAVOS CON CABEZA DE 2 1/2" 3" 4" | Material |  | 6.5 |
| PERNOS DE ALTA RESISTENCIA ASTM 325 Ø=5/8" L=2.5" | Material |  | 3 |
| ARANDELA DE PRESION Ø=3/4" | Material |  | 0.5 |
| ARANDELA DE PRESION Ø=5/8" | Material |  | 0.5 |
| ARANDELA DE PRESION Ø=3/8" | Material |  | 0.5 |
| TUERCA M18 GRADO 8 | Material |  | 2 |
| TUERCA Ø=5/8" GRADO 8 | Material |  | 2 |
| TUERCA Ø=3/8" GRADO 8 | Material |  | 2 |
| VARILLA LISA 3/8" | Material |  | 6 |
| VARILLA LISA 3/8" ROSCADA | Material |  | 15 |
| ACERO fy=4200 Kg/cm2 | Material |  | 5 |
| PIEDRA CHANCADA DE 1/2" Y 3/4" | Material |  | 100 |
| ARENA GRUESA | Material |  | 100 |
| CEMENTO PORTLAND TIPO I | Material |  | 28.5 |
| AUTOPERFORANTE NO 8X1/2" | Material |  | 20 |
| AUTOPERFORANTE 3" | Material |  | 120 |
| WAYPE | Material |  | 12 |
| CORDEL | Material |  | 0.2 |
| ELECTRODO E7018 | Material |  | 18 |
| ELECTRODO E6011 | Material |  | 18 |
| PANELES TK5 COLOR ROJO DE 1.07x3.60m x 2 mm | Material |  | 35 |
| YESO DE 28 Kg | Material |  | 12 |
| SELLADOR ELASTIC.POLIURETANO SIKAFLEX 1A | Material |  | 40 |
| PEGAMENTO PARA PVC 1/4 GLN | Material |  | 25 |
| LIJA | Material |  | 2 |
| DISCO DE CORTE DE ACERO DE 14" (TRONSADORA) | Material |  | 22 |
| NEOPRENO E=12 MM | Material |  | 290 |
| DISCO DE CORTE DE ACERO DE 7" (AMOLADORA) | Material |  | 9.5 |
| GASOLINA 84 OCTANOS | Material |  | 18 |
| DETERGENTE | Material |  | 6.5 |
| SOGA DE 3/4" NYLON | Material |  | 4.8 |
| TRAPO INDUSTRIAL | Material |  | 7 |
| ENSAYOS NO DESTRUCTIVOS | Material |  | 1500 |
| MADERA TORNILLO | Material |  | 3.5 |
| PLATINA 1" E=3/16" | Material |  | 5.3 |
| ANGULAR 4" E=1/4" | Material |  | 55.5 |
| TUBO CIRCULAR SCHEDULE 40 Ø=8" | Material |  | 285.5 |
| DILUYENTE ESTANDAR (THINNER) | Material |  | 19 |
| PETROLEO | Material |  | 17 |
| PINTURA ESMALTE SINTETICO | Material |  | 45 |
| BASE ANTICORROSIVA | Material |  | 40 |
| PLANCHA METÁLICA E=12 MM Ø=0.40M | Material |  | 700.5 |
| PLANCHA METALICA E=6 MM Ø=0.40M | Material |  | 420.5 |
| PLANCHA METÁLICA E=3/8 PLG | Material |  | 491.5 |
| PLANCHA METÁLICA E=6 MM | Material |  | 410 |
| PLANCHA MET. ASTM A1008 LAF E=1/32" TAPAS | Material |  | 95 |
| PLANCHA METÁLICA GALVANIZADA E=1/27" | Material |  | 72 |
| TUBO LAC 100X100X3 MM | Material |  | 62.5 |
| TUBO LAC 50X50X2.5 MM | Material |  | 26.3 |
| TUBO LAC 100X50X2.5 MM | Material |  | 43.5 |
| CANAL C DE ALAS ATIESADAS 6"X2"X 3MM | Material |  | 52.2 |
| CODO PVC SAL 4"x90º | Material |  | 9 |
| TUBO PVC SAL 4" | Material |  | 11 |
| CODO PVC SAL 4"X45º | Material |  | 9 |
| HERRAMIENTAS MANUALES | Equipo | 8 |  |
| TRONZADORA C/DISCO DE CORTE Ø 14" | Equipo | 5 |  |
| SOLDADORA | Equipo | 5 |  |
| EQUIPO DE OXICORTE | Equipo | 35 |  |
| ANDAMIO METALICO | Equipo | 5 |  |
| COMPRESORA NEUMATICA 76 HP 125-175 PCM (MAQUINA SERVIDA) | Equipo | 5 |  |
| VIBRADOR DE CONCRETO Ø 1 3/4" 4 HP | Equipo | 7 |  |
| MEZCLADORA CONCRETO TROMPO 8 HP 9 P3 | Equipo | 12.5 |  |
| ESTACION TOTAL | Equipo | 100 |  |
| GRUA 5 TN | Equipo | 200 |  |

## Schedule

| ID | WBS | Task | Type | Duration | Start | Finish | Predecessors | Total slack | Free slack | Constraint | Resources | Work | Cost | Text1 | Text8 | Text2 | Text3 | Text4 | Text6 |
| --- | --- | --- | --- | --- | --- | --- | --- | --- | --- | --- | --- | --- | --- | --- | --- | --- | --- | --- | --- |
| 1 | 1 | **"CONSTRUCCION DE COBERTURA EN LA I.E.P SANTA ROSA DE LIMA - ABANCAY EN LA LOCALIDAD DE ABANCAY, DISTRITO DE ABANCAY, PROVINCIA DE ABANCAY, DEPARTAMENTO APURIMAC"** |  | 31d | 2022-03-01 | 2022-04-01 |  | 0d |  |  |  | 2384.76h | 198,636.57 |  |  |  |  |  |  |
| 2 | 1.1 | **CUBIERTA METALICA DE LOSA DEPORTIVA SECUNDARIA** |  | 31d | 2022-03-01 | 2022-04-01 |  | 0d |  |  |  | 2384.76h | 198,636.57 | 02 | 000000000000047 |  |  |  |  |
| 3 | 1.1.1 | INICIO DE ACTIVIDAES NIVEL SECUNDARIO | milestone | 0d | 2022-03-01 | 2022-03-01 |  | 24d | 0d | start no earlier than 2022-03-01 |  |  |  |  |  |  |  |  |  |
| 4 | 1.1.2 | **TRABAJOS PRELIMINARES** |  | 1d | 2022-03-01 | 2022-03-02 |  | 24d |  |  |  | 36.19h | 1,320.22 | 02.01 | 000000000000048 |  |  |  |  |
| 5 | 1.1.2.1 | TRAZO Y REPLANTEO DE ESTRUCTURAS METALICAS |  | 1d | 2022-03-01 | 2022-03-02 | 3 | 24d | 0d | start no earlier than 2022-02-17 | YESO DE 28 Kg [103.2%]; PEON [271.7%]; TOPOGRAFO [90.3%]; ESTACION TOTAL [90.3%]; CLAVOS CON CABEZA DE 2 1/2" 3" 4" [5.4%]; CORDEL [10324.6%] | 36.19h | 1,320.22 | 02.01.01 | 000000000000049 | 543.4 | 2.48 | 1347.63 | 600 |
| 6 | 1.1.3 | **OBRAS DE CONCRETO ARMADO** |  | 6d | 2022-03-02 | 2022-03-08 |  | 24d |  |  |  | 163.23h | 13,843.82 | 02.02 | 000000000000050 |  |  |  |  |
| 7 | 1.1.3.1 | **ZAPATAS** |  | 3d | 2022-03-02 | 2022-03-05 |  | 27d |  |  |  | 78.02h | 8,336.06 | 02.02.01 | 000000000000051 |  |  |  |  |
| 8 | 1.1.3.1.1 | ZAPATAS - CONCRETO F´c=210 Kg/cm2 |  | 1d | 2022-03-04 | 2022-03-05 | 9 | 27d | 3d | start no earlier than 2022-02-17 | CEMENTO PORTLAND TIPO I [10119.2%]; GASOLINA 84 OCTANOS [208%]; OPERARIO [83.2%]; OFICIAL [83.2%]; PEON [332.8%]; VIBRADOR DE CONCRETO Ø 1 3/4" 4 HP [41.6%]; MEZCLADORA CONCRETO TROMPO 8 HP 9 P3 [41.6%]; AGUA [191.4%]; PIEDRA CHANCADA DE 1/2" Y 3/4" [603.2%]; ARENA GRUESA [572%] | 46.59h | 4,937.98 | 02.02.01.01 | 000000000000052 | 10.4 | 477.03 | 4961.11 | 25 |
| 9 | 1.1.3.1.2 | ZAPATAS - ACERO f'y=4200 Kg/cm2 |  | 2d | 2022-03-02 | 2022-03-04 | 5 | 27d | 0d | start no earlier than 2022-02-17 | OPERARIO [98.2%]; OFICIAL [98.2%]; ALAMBRE NEGRO N°16 [2455.2%]; ACERO fy=4200 Kg/cm2 [51559.2%] | 31.43h | 3,398.08 | 02.02.01.02 | 000000000000053 | 491.04 | 6.99 | 3432.37 | 250 |
| 10 | 1.1.3.2 | **COLUMNAS** |  | 6d | 2022-03-02 | 2022-03-08 |  | 24d |  |  |  | 85.21h | 5,507.76 | 02.02.02 | 000000000000054 |  |  |  |  |
| 11 | 1.1.3.2.1 | COLUMNAS - CONCRETO f'c=210 Kg/cm2 |  | 1d | 2022-03-07 | 2022-03-08 | 12 | 24d | 0d | start no earlier than 2022-02-17 | CEMENTO PORTLAND TIPO I [2646.6%]; GASOLINA 84 OCTANOS [68%]; OPERARIO [15.1%]; OFICIAL [30.2%]; PEON [166.2%]; VIBRADOR DE CONCRETO Ø 1 3/4" 4 HP [15.1%]; MEZCLADORA CONCRETO TROMPO 8 HP 9 P3 [15.1%]; PIEDRA CHANCADA DE 1/2" Y 3/4" [141.4%]; ARENA GRUESA [144.2%] | 19.34h | 1,388.52 | 02.02.02.01 | 000000000000055 | 2.72 | 513.94 | 1397.92 | 18 |
| 12 | 1.1.3.2.2 | COLUMNAS - ENCOFRADO Y DESENCOFRADO |  | 3d | 2022-03-04 | 2022-03-07 | 13, 19 | 24d | 0d | start no earlier than 2022-02-17 | PETROLEO [542.8%]; OPERARIO [90.5%]; OFICIAL [90.5%]; ALAMBRE NEGRO N°8 [814.2%]; CLAVOS CON CABEZA DE 2 1/2" 3" 4" [461.4%]; MADERA TORNILLO [16175.4%] | 43.42h | 1,692.69 | 02.02.02.02 | 000000000000056 | 27.14 | 63.44 | 1721.76 | 10 |
| 13 | 1.1.3.2.3 | COLUMNAS - ACERO f'y=4200 Kg/cm2 |  | 2d | 2022-03-02 | 2022-03-04 | 5 | 24d | 0d | start no earlier than 2022-02-17 | OPERARIO [70.1%]; OFICIAL [70.1%]; ALAMBRE NEGRO N°16 [1753.2%]; ACERO fy=4200 Kg/cm2 [36818.2%] | 22.44h | 2,426.55 | 02.02.02.03 | 000000000000057 | 350.65 | 6.96 | 2440.52 | 250 |
| 14 | 1.1.3.2.4 | FIN DE ACTIVIDADES DE CONCRETO SECUNDARIA | milestone | 0d | 2022-03-08 | 2022-03-08 | 11, 8 | 24d |  |  |  |  |  |  |  |  |  |  |  |
| 15 | 1.1.4 | **LIMPIEZA DE TUBOS** |  | 1d | 2022-03-01 | 2022-03-02 |  | 0d |  |  |  | 48h | 1,440.08 | 02.03 | 000000000000058 |  |  |  |  |
| 16 | 1.1.4.1 | INICIO DE ACTIVIDADES DE ESTRUCTURAS METALICA | milestone | 0d | 2022-03-01 | 2022-03-01 |  | 0d |  | start no earlier than 2022-03-01 |  |  |  |  |  |  |  |  |  |
| 17 | 1.1.4.2 | LIMPIEZA DE TUBOS |  | 1d | 2022-03-01 | 2022-03-02 | 16 | 0d |  | start no earlier than 2022-02-17 | PEON [600%]; WAYPE [1000%]; DETERGENTE [4000%]; TRAPO INDUSTRIAL [3000%] | 48h | 1,440.08 | 02.03.01 | 000000000000059 |  | 1440.08 | 1440.08 |  |
| 18 | 1.1.5 | **FABRICACION DE ESTRUCTURAS METALICAS** |  | 16d | 2022-03-02 | 2022-03-18 |  | 0d |  |  |  | 1292.92h | 127,064.08 | 02.04 | 000000000000060 |  |  |  |  |
| 19 | 1.1.5.1 | FABRICACION DE ANCLAJE DE COLUMNAS |  | 1d | 2022-03-02 | 2022-03-03 | 17 | 20d | 1d | start no earlier than 2022-02-17 | OPERARIO [160%]; OFICIAL [80%]; PEON [80%]; SOLDADORA [80%]; EQUIPO DE OXICORTE [80%]; PLANCHA METÁLICA E=12 MM Ø=0.40M [128%]; PLANCHA METALICA E=6 MM Ø=0.40M [128%]; FIERRO CORRUGADO Ø=3/4" L= 1.33 M CON HILO PARA TUERCA M18 [4800%]; ARANDELA DE PRESION Ø=3/4" [4800%]; TUERCA M18 GRADO 8 [9600%] | 38.4h | 4,142.91 | 02.04.01 | 000000000000061 |  | 519.95 | 4159.6 | 10 |
| 20 | 1.1.5.2 | COLUMNA METÁLICA CIRCULAR TIPO 1 - L=9.00 m |  | 4d | 2022-03-02 | 2022-03-06 | 17 | 0d |  | start no earlier than 2022-02-17 | OPERARIO [200%]; OFICIAL; PEON; TRONZADORA C/DISCO DE CORTE Ø 14" [40%]; SOLDADORA [200%]; EQUIPO DE OXICORTE [40%]; ELECTRODO E7018 [1157.3%]; ELECTRODO E6011 [180%]; TUBO CIRCULAR SCHEDULE 40 Ø=8" [3780%]; NEOPRENO E=12 MM [96%]; PLANCHA METÁLICA E=3/8 PLG [179.8%]; DISCO DE CORTE DE ACERO DE 14" (TRONSADORA) [600%]; DISCO DE CORTE DE ACERO DE 7" (AMOLADORA) [1600%] | 217.6h | 16,090.89 | 02.04.02 | 000000000000062 |  | 3581.64 | 14326.56 |  |
| 21 | 1.1.5.3 | COLUMNA METÁLICA CIRCULAR TIPO 2 - L=5.50 m |  | 2d | 2022-03-06 | 2022-03-08 | 20 | 9d | 0d | start no earlier than 2022-02-17 | OPERARIO [200%]; OFICIAL; PEON; TRONZADORA C/DISCO DE CORTE Ø 14" [40%]; SOLDADORA [200%]; EQUIPO DE OXICORTE [40%]; ELECTRODO E7018 [1037.6%]; ELECTRODO E6011 [119.6%]; TUBO CIRCULAR SCHEDULE 40 Ø=8" [2400%]; NEOPRENO E=12 MM [96%]; PLANCHA METÁLICA E=3/8 PLG [179.8%]; DISCO DE CORTE DE ACERO DE 14" (TRONSADORA) [600%]; DISCO DE CORTE DE ACERO DE 7" (AMOLADORA) [1600%] | 108.8h | 10,312.51 | 02.04.03 | 000000000000063 |  | 2588.55 | 10354.2 |  |
| 22 | 1.1.5.4 | CERCHA PRINCIPAL |  | 8d | 2022-03-06 | 2022-03-14 | 20 | 0d |  | start no earlier than 2022-02-17 | OPERARIO [200%]; OFICIAL [200%]; PEON; TRONZADORA C/DISCO DE CORTE Ø 14"; SOLDADORA [200%]; EQUIPO DE OXICORTE; ELECTRODO E7018 [667.8%]; ELECTRODO E6011 [5266.2%]; TUBO LAC 100X100X3 MM [25560%]; TUBO LAC 50X50X2.5 MM [33120%]; PLANCHA METÁLICA E=3/8 PLG [289%]; PLANCHA METÁLICA E=6 MM [861%]; PERNOS DE ALTA RESISTENCIA ASTM 325 Ø=5/8" L=2.5" [6400%]; ARANDELA DE PRESION Ø=5/8" [6400%]; TUERCA Ø=5/8" GRADO 8 [6400%]; DISCO DE CORTE DE ACERO DE 14" (TRONSADORA) [600%]; DISCO DE CORTE DE ACERO DE 7" (AMOLADORA) [1600%] | 576h | 41,354.11 | 02.04.04 | 000000000000064 |  | 9112.32 | 36449.28 |  |
| 23 | 1.1.5.5 | CERCHA LATERAL TIPO 1 |  | 1d | 2022-03-08 | 2022-03-09 | 21 | 9d | 0d | start no earlier than 2022-02-17 | OPERARIO [75%]; OFICIAL [37.5%]; PEON [37.5%]; TRONZADORA C/DISCO DE CORTE Ø 14" [60%]; SOLDADORA [150%]; ELECTRODO E6011 [442%]; TUBO LAC 50X50X2.5 MM [12390%]; DISCO DE CORTE DE ACERO DE 14" (TRONSADORA) [60%]; DISCO DE CORTE DE ACERO DE 7" (AMOLADORA) [150%] | 28.8h | 3,710.21 | 02.04.05 | 000000000000065 |  | 1239.35 | 3718.05 |  |
| 24 | 1.1.5.6 | CERCHA LATERAL TIPO 2 |  | 1d | 2022-03-09 | 2022-03-10 | 23 | 9d | 0d | start no earlier than 2022-02-17 | OPERARIO [75%]; OFICIAL [37.5%]; PEON [37.5%]; TRONZADORA C/DISCO DE CORTE Ø 14" [60%]; SOLDADORA [150%]; ELECTRODO E6011 [442%]; TUBO LAC 50X50X2.5 MM [11790%]; DISCO DE CORTE DE ACERO DE 14" (TRONSADORA) [6%]; DISCO DE CORTE DE ACERO DE 7" (AMOLADORA) [150%] | 28.8h | 3,540.53 | 02.04.06 | 000000000000066 |  | 1182.79 | 3548.37 |  |
| 25 | 1.1.5.7 | CORREAS METALICAS |  | 4d | 2022-03-10 | 2022-03-14 | 24 | 9d | 0d | start no earlier than 2022-02-17 | OPERARIO [178.6%]; OFICIAL [44.7%]; PEON [89.3%]; TRONZADORA C/DISCO DE CORTE Ø 14" [71.5%]; SOLDADORA [178.6%]; ELECTRODO E6011 [1463.1%]; TUBO LAC 50X50X2.5 MM [8522%]; CANAL C DE ALAS ATIESADAS 6"X2"X 3MM [68776.4%]; DISCO DE CORTE DE ACERO DE 14" (TRONSADORA) [12.5%]; DISCO DE CORTE DE ACERO DE 7" (AMOLADORA) [12.5%] | 180.07h | 41,013.29 | 02.04.07 | 000000000000067 | 625.24 | 68.9 | 43079.04 | 100 |
| 26 | 1.1.5.8 | ARRIOSTRAMIENTO |  | 2d | 2022-03-14 | 2022-03-16 | 25 | 14d | 0d | start no earlier than 2022-02-17 | OPERARIO [81.8%]; OFICIAL [40.9%]; PEON [81.8%]; TRONZADORA C/DISCO DE CORTE Ø 14" [65.4%]; SOLDADORA [81.8%]; ELECTRODO E6011 [261.6%]; VARILLA LISA 3/8" [36051.8%]; VARILLA LISA 3/8" ROSCADA [395.7%]; ANGULAR 4" E=1/4" [147.2%]; PLANCHA METÁLICA E=6 MM [16.4%]; ARANDELA DE PRESION Ø=3/8" [5925.2%]; TUERCA Ø=3/8" GRADO 8 [5925.2%]; DISCO DE CORTE DE ACERO DE 14" (TRONSADORA) [3.3%]; DISCO DE CORTE DE ACERO DE 7" (AMOLADORA) [3.3%] | 56.24h | 3,369.15 | 02.04.08 | 000000000000068 | 327 | 13.17 | 4306.59 | 100 |
| 27 | 1.1.5.9 | CANALETA |  | 2d | 2022-03-16 | 2022-03-18 | 26 | 14d |  | start no earlier than 2022-02-17 | AUTOPERFORANTE NO 8X1/2" [202.9%]; OPERARIO [75.8%]; OFICIAL [37.9%]; PEON [37.9%]; TRONZADORA C/DISCO DE CORTE Ø 14" [60.6%]; SOLDADORA [151.6%]; PLATINA 1" E=3/16" [1790.5%]; PLANCHA METÁLICA GALVANIZADA E=1/27" [3634.9%]; SELLADOR ELASTIC.POLIURETANO SIKAFLEX 1A [202.9%]; DISCO DE CORTE DE ACERO DE 14" (TRONSADORA) [0.6%]; DISCO DE CORTE DE ACERO DE 7" (AMOLADORA) [0.6%] | 58.2h | 3,530.48 | 02.04.09 | 000000000000069 | 56.84 | 69.61 | 3956.63 | 25 |

| ID | WBS | Task | Type | Duration | Start | Finish | Predecessors | Total slack | Free slack | Constraint | Resources | Work | Cost | Text1 | Text8 | Text3 | Text4 | Text6 | Text2 |
| --- | --- | --- | --- | --- | --- | --- | --- | --- | --- | --- | --- | --- | --- | --- | --- | --- | --- | --- | --- |
| 28 | 1.1.6 | **INSTALACION Y MONTAJE** |  | 12d | 2022-03-14 | 2022-03-26 |  | 0d |  |  |  | 484.47h | 10,038.39 | 02.05 | 000000000000070 |  |  |  |  |
| 29 | 1.1.6.1 | INSTALACION DE ANCLAJE DE COLUMNAS |  | 1d | 2022-03-14 | 2022-03-15 | 22 | 0d |  | start no earlier than 2022-02-17 | OPERARIO [80%]; PEON [80%]; TOPOGRAFO [40%]; SOLDADORA [50%]; ELECTRODO E6011 [0.8%] | 20h | 371.47 | 02.05.01 | 000000000000071 | 48.64 | 389.12 | 10 |  |
| 30 | 1.1.6.2 | MONTAJE DE COLUMNA METÁLICA CIRCULAR TIPO 1 - L=9.00 m |  | 1d | 2022-03-15 | 2022-03-16 | 29 | 0d |  | start no earlier than 2022-02-17 | OPERARIO [40%]; OFICIAL [40%]; PEON [40%]; TOPOGRAFO [20%]; SOLDADORA [50%]; ANDAMIO METALICO [50%]; ESTACION TOTAL [20%]; GRUA 5 TN [37.5%]; ELECTRODO E6011 [0.4%]; SOGA DE 3/4" NYLON [800%] | 23.8h | 1,076.82 | 02.05.02 | 000000000000072 | 271 | 1084 | 10 |  |
| 31 | 1.1.6.3 | MONTAJE DE COLUMNA METÁLICA CIRCULAR TIPO 2 - L=5.50 m |  | 1d | 2022-03-15 | 2022-03-16 | 29 | 16d |  | start no earlier than 2022-02-17 | OPERARIO [40%]; OFICIAL [40%]; PEON [40%]; TOPOGRAFO [20%]; SOLDADORA [50%]; ANDAMIO METALICO [50%]; ESTACION TOTAL [20%]; GRUA 5 TN [30%]; ELECTRODO E6011 [0.4%]; SOGA DE 3/4" NYLON [800%] | 23.2h | 956.82 | 02.05.03 | 000000000000073 | 241 | 964 | 10 |  |
| 32 | 1.1.6.4 | MONTAJE DE CERCHA PRINCIPAL |  | 1d | 2022-03-16 | 2022-03-17 | 29, 30 | 0d |  | start no earlier than 2022-02-17 | OPERARIO [160%]; OFICIAL [80%]; PEON [80%]; TOPOGRAFO [40%]; SOLDADORA [80%]; ANDAMIO METALICO [80%]; GRUA 5 TN [40%]; ELECTRODO E6011 [0.4%]; SOGA DE 3/4" NYLON [1600%] | 44.8h | 1,416.23 | 02.05.04 | 000000000000074 | 358.83 | 1435.32 |  |  |
| 33 | 1.1.6.5 | MONTAJE DE CERCHA LATERAL TIPO 1 |  | 1d | 2022-03-17 | 2022-03-18 | 32 | 0d |  | start no earlier than 2022-02-17 | OPERARIO [60%]; OFICIAL [30%]; TOPOGRAFO [15%]; SOLDADORA [60%]; ANDAMIO METALICO [30%]; GRUA 5 TN [15%]; ELECTRODO E6011 [0.3%]; SOGA DE 3/4" NYLON [600%] | 16.8h | 500.61 | 02.05.05 | 000000000000075 | 168.83 | 506.49 | 10 |  |
| 34 | 1.1.6.6 | MONTAJE DE CERCHA LATERAL TIPO 2 |  | 1d | 2022-03-17 | 2022-03-18 | 32 | 14d |  | start no earlier than 2022-02-17 | OPERARIO [60%]; OFICIAL [30%]; TOPOGRAFO [15%]; SOLDADORA [60%]; ANDAMIO METALICO [30%]; GRUA 5 TN [15%]; ELECTRODO E6011 [0.3%]; SOGA DE 3/4" NYLON [600%] | 16.8h | 500.61 | 02.05.06 | 000000000000076 | 168.83 | 506.49 | 10 |  |
| 35 | 1.1.6.7 | MONTAJE DE CORREAS METALICAS |  | 4d | 2022-03-18 | 2022-03-22 | 33 | 0d |  | start no earlier than 2022-02-17 | OPERARIO [156.3%]; OFICIAL [78.2%]; PEON [156.3%]; SOLDADORA [78.2%]; ANDAMIO METALICO [78.2%]; ELECTRODO E6011 [62.5%]; SOGA DE 3/4" NYLON [625.2%] | 175.07h | 2,907.12 | 02.05.07 | 000000000000077 | 4.86 | 3038.67 | 200 | 625.24 |
| 36 | 1.1.6.8 | MONTAJE DE ARRIOSTRAMIENTO |  | 3d | 2022-03-22 | 2022-03-25 | 35 | 0d |  | start no earlier than 2022-02-17 | OPERARIO [130.8%]; OFICIAL [65.4%]; PEON [130.8%]; SOLDADORA [130.8%]; ANDAMIO METALICO [130.8%]; ELECTRODO E6011 [32.7%]; SOGA DE 3/4" NYLON [327%] | 141.26h | 1,977.15 | 02.05.08 | 000000000000078 | 4.23 | 1383.21 | 250 | 327 |
| 37 | 1.1.6.9 | MONTAJE DE CANALETA |  | 1d | 2022-03-25 | 2022-03-26 | 36 | 0d |  | start no earlier than 2022-02-17 | OPERARIO [56.8%]; OFICIAL [56.8%]; PEON [56.8%]; SOLDADORA [56.8%]; ANDAMIO METALICO [56.8%]; ELECTRODO E6011 [5.7%]; SOGA DE 3/4" NYLON [56.8%] | 22.74h | 331.56 | 02.05.09 | 000000000000079 | 6.09 | 346.16 | 100 | 56.84 |
| 38 | 1.1.7 | **PRUEBAS DE LABORATORIO** |  | 1d | 2022-03-14 | 2022-03-15 |  | 17d |  |  |  | 8h | 1,500 | 02.06 | 000000000000080 |  |  |  |  |
| 39 | 1.1.7.1 | ENSAYOS NO DESTRUCTIVOS |  | 1d | 2022-03-14 | 2022-03-15 | 22 | 17d |  | start no earlier than 2022-02-17 | ENSAYOS NO DESTRUCTIVOS | 8h | 1,500 | 02.06.01 | 000000000000081 | 1500 | 1500 |  |  |
| 40 | 1.1.8 | **PINTURAS** |  | 9d | 2022-03-14 | 2022-03-23 |  | 9d |  |  |  | 163.04h | 6,347.68 | 02.07 | 000000000000082 |  |  |  |  |
| 41 | 1.1.8.1 | PINTURA - COLUMNA METÁLICA CIRCULAR TIPO 1 - L=9.00 m |  | 1d | 2022-03-14 | 2022-03-15 | 19, 25 | 9d | 0d | start no earlier than 2022-02-17 | DILUYENTE ESTANDAR (THINNER) [120%]; PINTURA ESMALTE SINTETICO [160%]; BASE ANTICORROSIVA [200%]; OPERARIO [80%]; PEON [80%]; COMPRESORA NEUMATICA 76 HP 125-175 PCM (MAQUINA SERVIDA) [80%]; LIJA [0.4%] | 19.2h | 478.8 | 02.07.01 | 000000000000083 | 121.74 | 486.96 |  |  |
| 42 | 1.1.8.2 | PINTURA -COLUMNA METÁLICA CIRCULAR TIPO 2 - L=5.50 m |  | 1d | 2022-03-15 | 2022-03-16 | 41 | 9d | 0d | start no earlier than 2022-02-17 | DILUYENTE ESTANDAR (THINNER) [72%]; PINTURA ESMALTE SINTETICO [120%]; BASE ANTICORROSIVA [140%]; OPERARIO [80%]; PEON [80%]; COMPRESORA NEUMATICA 76 HP 125-175 PCM (MAQUINA SERVIDA) [80%]; LIJA [0.4%] | 19.2h | 427.68 | 02.07.02 | 000000000000084 | 108.96 | 435.84 |  |  |
| 43 | 1.1.8.3 | PINTURA - CERCHA PRINCIPAL |  | 4d | 2022-03-16 | 2022-03-20 | 42 | 9d | 0d | start no earlier than 2022-02-17 | DILUYENTE ESTANDAR (THINNER) [600%]; PINTURA ESMALTE SINTETICO [1040%]; BASE ANTICORROSIVA [1320%]; OPERARIO; PEON; COMPRESORA NEUMATICA 76 HP 125-175 PCM (MAQUINA SERVIDA); LIJA [0.4%] | 96h | 2,630 | 02.07.03 | 000000000000085 | 667.7 | 2670.8 |  |  |
| 44 | 1.1.8.4 | PINTURA - CERCHA LATERAL TIPO 1 |  | 1d | 2022-03-20 | 2022-03-21 | 43 | 9d | 0d | start no earlier than 2022-02-17 | DILUYENTE ESTANDAR (THINNER) [81%]; PINTURA ESMALTE SINTETICO [135%]; BASE ANTICORROSIVA [180%]; OPERARIO [15%]; PEON [15%]; COMPRESORA NEUMATICA 76 HP 125-175 PCM (MAQUINA SERVIDA) [15%]; LIJA [0.3%] | 3.6h | 205.14 | 02.07.04 | 000000000000086 | 68.89 | 206.67 | 20 |  |
| 45 | 1.1.8.5 | PINTURA - CERCHA LATERAL TIPO 2 |  | 1d | 2022-03-21 | 2022-03-22 | 44 | 9d | 0d | start no earlier than 2022-02-17 | DILUYENTE ESTANDAR (THINNER) [75%]; PINTURA ESMALTE SINTETICO [150%]; BASE ANTICORROSIVA [174%]; OPERARIO [15%]; PEON [15%]; COMPRESORA NEUMATICA 76 HP 125-175 PCM (MAQUINA SERVIDA) [15%]; LIJA [0.3%] | 3.6h | 208.35 | 02.07.05 | 000000000000087 | 69.96 | 209.88 | 20 |  |
| 46 | 1.1.8.6 | PINTURA - CORREAS METALICAS |  | 1d | 2022-03-22 | 2022-03-23 | 45 | 9d |  | start no earlier than 2022-02-17 | DILUYENTE ESTANDAR (THINNER) [1250.5%]; PINTURA ESMALTE SINTETICO [2375.9%]; BASE ANTICORROSIVA [1875.7%]; OPERARIO [89.3%]; PEON [89.3%]; COMPRESORA NEUMATICA 76 HP 125-175 PCM (MAQUINA SERVIDA) [89.3%]; LIJA [62.5%] | 21.44h | 2,397.71 | 02.07.06 | 000000000000088 | 7.19 | 4495.48 | 100 | 625.24 |
| 47 | 1.1.9 | **COBERTURA** |  | 6d | 2022-03-26 | 2022-04-01 |  | 0d |  |  |  | 185.08h | 36,525.24 | 02.08 | 000000000000089 |  |  |  |  |
| 48 | 1.1.9.1 | SUMINISTRO E INSTALACION DE COBERTURA TERMOACUSTICA e=2.0 mm |  | 6d | 2022-03-26 | 2022-04-01 | 37 | 0d |  | start no earlier than 2022-02-17 | AUTOPERFORANTE 3" [3470.3%]; OPERARIO [192.8%]; OFICIAL [96.4%]; PEON [96.4%]; PANELES TK5 COLOR ROJO DE 1.07x3.60m x 2 mm [80973.9%] | 185.08h | 36,525.24 | 02.08.01 | 000000000000090 | 57.43 | 44288.87 | 50 | 771.18 |
| 49 | 1.1.10 | **AGUAS PLUVIALES** |  | 6d | 2022-03-26 | 2022-04-01 |  | 0d |  |  |  | 3.84h | 557.06 | 02.09 | 000000000000091 |  |  |  |  |
| 50 | 1.1.10.1 | SUMINISTRO E INSTALACION DE MONTANTES DE EVACUACION PLUVIAL |  | 1d | 2022-03-26 | 2022-03-27 | 37 | 5d |  | start no earlier than 2022-02-17 | OPERARIO [16%]; OFICIAL [16%]; ANDAMIO METALICO [16%]; TUBO PVC SAL 4" [3660%]; PEGAMENTO PARA PVC 1/4 GLN [5%]; CODO PVC SAL 4"x90º [600%]; CODO PVC SAL 4"X45º [400%] | 3.84h | 557.06 | 02.09.01 | 000000000000092 | 279.96 | 559.92 | 12.5 |  |
| 51 | 1.1.10.2 | FIN DE ACTIVIDAD DE COBERTURA METALICA DEL SECUNDARIOA | milestone | 0d | 2022-04-01 | 2022-04-01 | 48, 50, 46, 39, 27 | 0d |  |  |  |  |  |  |  |  |  |  |  |
