# Cronograma

Schedule from MS Project, 2022-02-17 to 2022-03-20, costs in S.

## Calendars

- Estándar: Mon-Sun 07:00-12:00, 13:00-16:00.

## Resources

| Resource | Group | Rate | Cost per use |
| --- | --- | --- | --- |
| OPERARIO | Mano de Obra | 24.79 |  |
| OFICIAL | Mano de Obra | 19.59 |  |
| PEON | Mano de Obra | 17.71 |  |
| TOPOGRAFO | Mano de Obra | 24.79 |  |
| AGUA | Material |  | 5 |
| FIERRO CORRUGADO Ø=3/4" L= 1.33 M CON HILO PARA TUERCA M18 | Material |  | 35 |
| ALAMBRE NEGRO N°8 | Material |  | 5 |
| ALAMBRE NEGRO N°16 | Material |  | 5 |
| CLAVOS CON CABEZA DE 2 1/2" 3" 4" | Material |  | 6.5 |
| PERNOS DE ALTA RESISTENCIA ASTM 325 Ø=5/8" L=2.5" | Material |  | 3 |
| ARANDELA DE PRESION Ø=3/4" | Material |  | 0.5 |
| ARANDELA DE PRESION Ø=5/8" | Material |  | 0.5 |
| ARANDELA DE PRESION Ø=3/8" | Material |  | 0.5 |
| TUERCA M18 GRADO 8 | Material |  | 2 |
| TUERCA Ø=5/8" GRADO 8 | Material |  | 2 |
| TUERCA Ø=3/8" GRADO 8 | Material |  | 2 |
| VARILLA LISA 3/8" | Material |  | 6 |
| VARILLA LISA 3/8" ROSCADA | Material |  | 15 |
| ACERO fy=4200 Kg/cm2 | Material |  | 5 |
| PIEDRA CHANCADA DE 1/2" Y 3/4" | Material |  | 100 |
| ARENA GRUESA | Material |  | 100 |
| CEMENTO PORTLAND TIPO I | Material |  | 28.5 |
| AUTOPERFORANTE NO 8X1/2" | Material |  | 20 |
| AUTOPERFORANTE 3" | Material |  | 120 |
| WAYPE | Material |  | 12 |
| CORDEL | Material |  | 0.2 |
| ELECTRODO E7018 | Material |  | 18 |
| ELECTRODO E6011 | Material |  | 18 |
| PANELES TK5 COLOR ROJO DE 1.07x3.60m x 2 mm | Material |  | 35 |
| YESO DE 28 Kg | Material |  | 12 |
| SELLADOR ELASTIC.POLIURETANO SIKAFLEX 1A | Material |  | 40 |
| PEGAMENTO PARA PVC 1/4 GLN | Material |  | 25 |
| LIJA | Material |  | 2 |
| DISCO DE CORTE DE ACERO DE 14" (TRONSADORA) | Material |  | 22 |
| NEOPRENO E=12 MM | Material |  | 290 |
| DISCO DE CORTE DE ACERO DE 7" (AMOLADORA) | Material |  | 9.5 |
| GASOLINA 84 OCTANOS | Material |  | 18 |
| DETERGENTE | Material |  | 6.5 |
| SOGA DE 3/4" NYLON | Material |  | 4.8 |
| TRAPO INDUSTRIAL | Material |  | 7 |
| ENSAYOS NO DESTRUCTIVOS | Material |  | 1500 |
| MADERA TORNILLO | Material |  | 3.5 |
| PLATINA 1" E=3/16" | Material |  | 5.3 |
| ANGULAR 4" E=1/4" | Material |  | 55.5 |
| TUBO CIRCULAR SCHEDULE 40 Ø=8" | Material |  | 285.5 |
| DILUYENTE ESTANDAR (THINNER) | Material |  | 19 |
| PETROLEO | Material |  | 17 |
| PINTURA ESMALTE SINTETICO | Material |  | 45 |
| BASE ANTICORROSIVA | Material |  | 40 |
| PLANCHA METÁLICA E=12 MM Ø=0.40M | Material |  | 700.5 |
| PLANCHA METALICA E=6 MM Ø=0.40M | Material |  | 420.5 |
| PLANCHA METÁLICA E=3/8 PLG | Material |  | 491.5 |
| PLANCHA METÁLICA E=6 MM | Material |  | 410 |
| PLANCHA MET. ASTM A1008 LAF E=1/32" TAPAS | Material |  | 95 |
| PLANCHA METÁLICA GALVANIZADA E=1/27" | Material |  | 72 |
| TUBO LAC 100X100X3 MM | Material |  | 62.5 |
| TUBO LAC 50X50X2.5 MM | Material |  | 26.3 |
| TUBO LAC 100X50X2.5 MM | Material |  | 43.5 |
| CANAL C DE ALAS ATIESADAS 6"X2"X 3MM | Material |  | 52.2 |
| CODO PVC SAL 4"x90º | Material |  | 9 |
| TUBO PVC SAL 4" | Material |  | 11 |
| CODO PVC SAL 4"X45º | Material |  | 9 |
| HERRAMIENTAS MANUALES | Equipo | 8 |  |
| TRONZADORA C/DISCO DE CORTE Ø 14" | Equipo | 5 |  |
| SOLDADORA | Equipo | 5 |  |
| EQUIPO DE OXICORTE | Equipo | 35 |  |
| ANDAMIO METALICO | Equipo | 5 |  |
| COMPRESORA NEUMATICA 76 HP 125-175 PCM (MAQUINA SERVIDA) | Equipo | 5 |  |
| VIBRADOR DE CONCRETO Ø 1 3/4" 4 HP | Equipo | 7 |  |
| MEZCLADORA CONCRETO TROMPO 8 HP 9 P3 | Equipo | 12.5 |  |
| ESTACION TOTAL | Equipo | 100 |  |
| GRUA 5 TN | Equipo | 200 |  |

## Schedule

| ID | WBS | Task | Type | Duration | Start | Finish | Predecessors | Total slack | Free slack | Constraint | Resources | Work | Cost | Text1 | Text8 | Text2 | Text3 | Text4 | Text6 |
| --- | --- | --- | --- | --- | --- | --- | --- | --- | --- | --- | --- | --- | --- | --- | --- | --- | --- | --- | --- |
| 1 | 1 | **"CONSTRUCCION DE COBERTURA EN LA I.E.P SANTA ROSA DE LIMA - ABANCAY EN LA LOCALIDAD DE ABANCAY, DISTRITO DE ABANCAY, PROVINCIA DE ABANCAY, DEPARTAMENTO APURIMAC"** |  | 31d | 2022-02-17 | 2022-03-20 |  | 0d |  |  |  | 2639.84h | 203,022.9 |  |  |  |  |  |  |
| 2 | 1.1 | **CUBIERTA METALICA DE LOSA DEPORTIVA PRIMARIA** |  | 31d | 2022-02-17 | 2022-03-20 |  | 0d |  |  |  | 2639.84h | 203,022.9 | 01 | 000000000000001 |  |  |  |  |
| 3 | 1.1.1 | INICIO DE ACTIVIDADES PRIMARIA | milestone | 0d | 2022-02-17 | 2022-02-17 |  | 23d | 0d |  |  |  |  |  |  |  |  |  |  |
| 4 | 1.1.2 | **TRABAJOS PRELIMINARES** |  | 1d | 2022-02-17 | 2022-02-18 |  | 23d |  |  |  | 35.77h | 1,304.84 | 01.01 | 000000000000002 |  |  |  |  |
| 5 | 1.1.2.1 | TRAZO Y REPLANTEO DE ESTRUCTURAS METALICAS |  | 1d | 2022-02-17 | 2022-02-18 | 3 | 23d | 0d | start no earlier than 2022-02-17 | YESO DE 28 Kg [102%]; PEON [268.5%]; TOPOGRAFO [89.3%]; ESTACION TOTAL [89.3%]; CLAVOS CON CABEZA DE 2 1/2" 3" 4" [5.4%]; CORDEL [10204.3%] | 35.77h | 1,304.84 | 01.01.01 | 000000000000003 | 537.07 | 2.48 | 1331.93 | 600 |
| 6 | 1.1.3 | **OBRAS DE CONCRETO ARMADO** |  | 7d | 2022-02-18 | 2022-02-25 |  | 23d |  |  |  | 157.59h | 12,348.17 | 01.02 | 000000000000004 |  |  |  |  |
| 7 | 1.1.3.1 | **ZAPATAS** |  | 3d | 2022-02-18 | 2022-02-21 |  | 27d |  |  |  | 52.64h | 5,629.59 | 01.02.01 | 000000000000005 |  |  |  |  |
| 8 | 1.1.3.1.1 | ZAPATAS - CONCRETO F´c=210 Kg/cm2 |  | 1d | 2022-02-20 | 2022-02-21 | 9 | 27d | 4d | start no earlier than 2022-02-17 | CEMENTO PORTLAND TIPO I [6305%]; GASOLINA 84 OCTANOS [129.6%]; OPERARIO [51.8%]; OFICIAL [51.8%]; PEON [207.4%]; VIBRADOR DE CONCRETO Ø 1 3/4" 4 HP [25.9%]; MEZCLADORA CONCRETO TROMPO 8 HP 9 P3 [25.9%]; AGUA [119.2%]; PIEDRA CHANCADA DE 1/2" Y 3/4" [375.8%]; ARENA GRUESA [356.4%] | 29.03h | 3,076.74 | 01.02.01.01 | 000000000000006 | 6.48 | 477.03 | 3091.15 | 25 |
| 9 | 1.1.3.1.2 | ZAPATAS - ACERO f'y=4200 Kg/cm2 |  | 2d | 2022-02-18 | 2022-02-20 | 5 | 27d | 0d | start no earlier than 2022-02-17 | OPERARIO [73.8%]; OFICIAL [73.8%]; ALAMBRE NEGRO N°16 [1844.5%]; ACERO fy=4200 Kg/cm2 [38734.5%] | 23.61h | 2,552.85 | 01.02.01.02 | 000000000000007 | 368.9 | 6.99 | 2578.61 | 250 |
| 10 | 1.1.3.2 | **COLUMNAS** |  | 7d | 2022-02-18 | 2022-02-25 |  | 23d |  |  |  | 104.95h | 6,718.59 | 01.02.02 | 000000000000008 |  |  |  |  |
| 11 | 1.1.3.2.1 | COLUMNAS - CONCRETO f'c=210 Kg/cm2 |  | 1d | 2022-02-24 | 2022-02-25 | 12 | 23d | 0d | start no earlier than 2022-02-17 | CEMENTO PORTLAND TIPO I [3298.5%]; GASOLINA 84 OCTANOS [84.8%]; OPERARIO [18.8%]; OFICIAL [37.7%]; PEON [207.2%]; VIBRADOR DE CONCRETO Ø 1 3/4" 4 HP [18.8%]; MEZCLADORA CONCRETO TROMPO 8 HP 9 P3 [18.8%]; PIEDRA CHANCADA DE 1/2" Y 3/4" [176.3%]; ARENA GRUESA [179.7%] | 24.11h | 1,730.54 | 01.02.02.01 | 000000000000009 | 3.39 | 513.94 | 1742.26 | 18 |
| 12 | 1.1.3.2.2 | COLUMNAS - ENCOFRADO Y DESENCOFRADO |  | 4d | 2022-02-20 | 2022-02-24 | 13 | 23d | 0d | start no earlier than 2022-02-17 | PETROLEO [678.6%]; OPERARIO [84.8%]; OFICIAL [84.8%]; ALAMBRE NEGRO N°8 [1017.9%]; CLAVOS CON CABEZA DE 2 1/2" 3" 4" [576.8%]; MADERA TORNILLO [20222.3%] | 54.29h | 2,116.18 | 01.02.02.02 | 000000000000010 | 33.93 | 63.44 | 2152.52 | 10 |
| 13 | 1.1.3.2.3 | COLUMNAS - ACERO f'y=4200 Kg/cm2 |  | 2d | 2022-02-18 | 2022-02-20 | 5 | 23d | 0d | start no earlier than 2022-02-17 | OPERARIO [83%]; OFICIAL [83%]; ALAMBRE NEGRO N°16 [2075%]; ACERO fy=4200 Kg/cm2 [43575%] | 26.56h | 2,871.87 | 01.02.02.03 | 000000000000011 | 415 | 6.96 | 2888.4 | 250 |
| 14 | 1.1.3.2.4 | FIN DE ACTIVIDADES DE CONCRETO | milestone | 0d | 2022-02-25 | 2022-02-25 | 11, 8 | 23d |  |  |  |  |  |  |  |  |  |  |  |
| 15 | 1.1.4 | **LIMPIEZA DE TUBOS** |  | 1d | 2022-02-17 | 2022-02-18 |  | 0d |  |  |  | 48h | 1,440.08 | 01.03 | 000000000000012 |  |  |  |  |
| 16 | 1.1.4.1 | INICIO DE ACTIVIDADES DE ESTRUCTURA METALICA | milestone | 0d | 2022-02-17 | 2022-02-17 |  | 0d |  |  |  |  |  |  |  |  |  |  |  |
| 17 | 1.1.4.2 | LIMPIEZA DE TUBOS |  | 1d | 2022-02-17 | 2022-02-18 | 16 | 0d |  | start no earlier than 2022-02-17 | PEON [600%]; WAYPE [1000%]; DETERGENTE [4000%]; TRAPO INDUSTRIAL [3000%] | 48h | 1,440.08 | 01.03.01 | 000000000000013 |  | 1440.08 | 1440.08 |  |
| 18 | 1.1.5 | **FABRICACION DE ESTRUCTURAS METALICAS** |  | 17d | 2022-02-18 | 2022-03-07 |  | 0d |  |  |  | 1363.32h | 132,429.68 | 01.04 | 000000000000014 |  |  |  |  |
| 19 | 1.1.5.1 | FABRICACION DE ANCLAJE DE COLUMNAS |  | 1d | 2022-02-18 | 2022-02-19 | 17 | 16d | 3d | start no earlier than 2022-02-17 | OPERARIO [200%]; OFICIAL; PEON; SOLDADORA; EQUIPO DE OXICORTE; PLANCHA METÁLICA E=12 MM Ø=0.40M [160%]; PLANCHA METALICA E=6 MM Ø=0.40M [160%]; FIERRO CORRUGADO Ø=3/4" L= 1.33 M CON HILO PARA TUERCA M18 [6000%]; ARANDELA DE PRESION Ø=3/4" [7000%]; TUERCA M18 GRADO 8 [12000%] | 48h | 5,183.64 | 01.04.01 | 000000000000015 | 10 | 520.45 | 5204.5 | 10 |
| 20 | 1.1.5.2 | COLUMNA METÁLICA CIRCULAR TIPO 1 - L=9.00 m |  | 3d | 2022-02-22 | 2022-02-25 | 17, 19, 21 | 13d | 0d | start no earlier than 2022-02-17 | OPERARIO [166.7%]; OFICIAL [83.3%]; PEON [83.3%]; TRONZADORA C/DISCO DE CORTE Ø 14" [33.3%]; SOLDADORA [166.7%]; EQUIPO DE OXICORTE [33.3%]; ELECTRODO E7018 [1446.6%]; ELECTRODO E6011 [225%]; TUBO CIRCULAR SCHEDULE 40 Ø=8" [4500%]; NEOPRENO E=12 MM [120%]; PLANCHA METÁLICA E=3/8 PLG [224.8%]; DISCO DE CORTE DE ACERO DE 14" (TRONSADORA) [500%]; DISCO DE CORTE DE ACERO DE 7" (AMOLADORA) [1500%] | 136h | 17,111.13 | 01.04.02 | 000000000000016 |  | 3432.66 | 17163.3 |  |
| 21 | 1.1.5.3 | COLUMNA METÁLICA CIRCULAR TIPO 2 - L=5.50 m |  | 4d | 2022-02-18 | 2022-02-22 | 17 | 0d |  | start no earlier than 2022-02-17 | OPERARIO [166.7%]; OFICIAL [83.3%]; PEON [83.3%]; TRONZADORA C/DISCO DE CORTE Ø 14" [33.3%]; SOLDADORA [166.7%]; EQUIPO DE OXICORTE [33.3%]; ELECTRODO E7018 [1297%]; ELECTRODO E6011 [149.6%]; TUBO CIRCULAR SCHEDULE 40 Ø=8" [3000%]; NEOPRENO E=12 MM [120%]; PLANCHA METÁLICA E=3/8 PLG [224.8%]; DISCO DE CORTE DE ACERO DE 14" (TRONSADORA) [500%]; DISCO DE CORTE DE ACERO DE 7" (AMOLADORA) [1500%] | 181.33h | 13,540.67 | 01.04.03 | 000000000000017 |  | 2568.05 | 12840.25 |  |
| 22 | 1.1.5.4 | CERCHA PRINCIPAL |  | 8d | 2022-02-22 | 2022-03-02 | 21 | 0d |  | start no earlier than 2022-02-17 | OPERARIO [200%]; OFICIAL [200%]; PEON; TRONZADORA C/DISCO DE CORTE Ø 14"; SOLDADORA [200%]; EQUIPO DE OXICORTE; ELECTRODO E7018 [834.8%]; ELECTRODO E6011 [6091.8%]; TUBO LAC 100X100X3 MM [29595%]; TUBO LAC 50X50X2.5 MM [33295%]; PLANCHA METÁLICA E=3/8 PLG [361.2%]; PLANCHA METÁLICA E=6 MM [971.2%]; PERNOS DE ALTA RESISTENCIA ASTM 325 Ø=5/8" L=2.5" [8500%]; ARANDELA DE PRESION Ø=5/8" [8000%]; TUERCA Ø=5/8" GRADO 8 [8000%]; DISCO DE CORTE DE ACERO DE 14" (TRONSADORA) [510%]; DISCO DE CORTE DE ACERO DE 7" (AMOLADORA) [1500%] | 576h | 44,981.44 | 01.04.04 | 000000000000018 |  | 8270.79 | 41353.95 |  |
| 23 | 1.1.5.5 | CERCHA LATERAL TIPO 1 |  | 1d | 2022-02-25 | 2022-02-26 | 20 | 13d | 0d | start no earlier than 2022-02-17 | OPERARIO; OFICIAL [50%]; PEON [50%]; TRONZADORA C/DISCO DE CORTE Ø 14" [80%]; SOLDADORA [200%]; ELECTRODO E6011 [392.8%]; TUBO LAC 50X50X2.5 MM [13400%]; DISCO DE CORTE DE ACERO DE 14" (TRONSADORA) [20%]; DISCO DE CORTE DE ACERO DE 7" (AMOLADORA) [200%] | 38.4h | 4,077.83 | 01.04.05 | 000000000000019 |  | 1022.07 | 4088.28 |  |
| 24 | 1.1.5.6 | CERCHA LATERAL TIPO 2 |  | 1d | 2022-02-26 | 2022-02-27 | 23 | 21d |  | start no earlier than 2022-02-17 | OPERARIO; OFICIAL [50%]; PEON [50%]; TRONZADORA C/DISCO DE CORTE Ø 14" [80%]; SOLDADORA [200%]; ELECTRODO E6011 [392.8%]; TUBO LAC 50X50X2.5 MM [12936%]; DISCO DE CORTE DE ACERO DE 14" (TRONSADORA) [20%]; DISCO DE CORTE DE ACERO DE 7" (AMOLADORA) [200%] | 38.4h | 3,955.8 | 01.04.06 | 000000000000020 |  | 991.56 | 3966.24 |  |
| 25 | 1.1.5.7 | CORREAS METALICAS |  | 4d | 2022-02-26 | 2022-03-02 | 23 | 13d | 0d | start no earlier than 2022-02-17 | OPERARIO [198.9%]; OFICIAL [49.7%]; PEON [99.5%]; TRONZADORA C/DISCO DE CORTE Ø 14" [79.6%]; SOLDADORA [198.9%]; ELECTRODO E6011 [1104.1%]; TUBO LAC 100X50X2.5 MM [72215.2%]; PLANCHA MET. ASTM A1008 LAF E=1/32" TAPAS [23.9%]; DISCO DE CORTE DE ACERO DE 14" (TRONSADORA) [11.9%]; DISCO DE CORTE DE ACERO DE 7" (AMOLADORA) [11.9%] | 200.53h | 34,538.07 | 01.04.07 | 000000000000021 | 596.82 | 60.49 | 36101.64 | 100 |
| 26 | 1.1.5.8 | ARRIOSTRAMIENTO |  | 3d | 2022-03-02 | 2022-03-05 | 25 | 13d | 0d | start no earlier than 2022-02-17 | OPERARIO [84.6%]; OFICIAL [42.3%]; PEON [84.6%]; TRONZADORA C/DISCO DE CORTE Ø 14" [67.7%]; SOLDADORA [84.6%]; ELECTRODO E6011 [406.1%]; VARILLA LISA 3/8" [60404.4%]; VARILLA LISA 3/8" ROSCADA [756.3%]; ANGULAR 4" E=1/4" [309.6%]; PLANCHA METÁLICA E=6 MM [25.4%]; ARANDELA DE PRESION Ø=3/8" [9197.7%]; TUERCA Ø=3/8" GRADO 8 [9197.7%]; DISCO DE CORTE DE ACERO DE 14" (TRONSADORA) [5.1%]; DISCO DE CORTE DE ACERO DE 7" (AMOLADORA) [5.1%] | 87.31h | 5,562.79 | 01.04.08 | 000000000000022 | 507.6 | 13.82 | 7015.03 | 100 |
| 27 | 1.1.5.9 | CANALETA |  | 2d | 2022-03-05 | 2022-03-07 | 26 | 13d |  | start no earlier than 2022-02-17 | AUTOPERFORANTE NO 8X1/2" [199.9%]; OPERARIO [74.7%]; OFICIAL [37.3%]; PEON [37.3%]; TRONZADORA C/DISCO DE CORTE Ø 14" [59.7%]; SOLDADORA [149.3%]; PLATINA 1" E=3/16" [1764%]; PLANCHA METÁLICA GALVANIZADA E=1/27" [3581.2%]; SELLADOR ELASTIC.POLIURETANO SIKAFLEX 1A [199.9%]; DISCO DE CORTE DE ACERO DE 14" (TRONSADORA) [0.6%]; DISCO DE CORTE DE ACERO DE 7" (AMOLADORA) [0.6%] | 57.34h | 3,478.3 | 01.04.09 | 000000000000023 | 56 | 69.61 | 3898.16 | 25 |

| ID | WBS | Task | Type | Duration | Start | Finish | Predecessors | Total slack | Free slack | Constraint | Resources | Work | Cost | Text1 | Text8 | Text2 | Text3 | Text4 | Text6 |
| --- | --- | --- | --- | --- | --- | --- | --- | --- | --- | --- | --- | --- | --- | --- | --- | --- | --- | --- | --- |
| 28 | 1.1.6 | **INSTALACION Y MONTAJE** |  | 18d | 2022-02-24 | 2022-03-14 |  | 6d |  |  |  | 631.65h | 13,094.25 | 01.05 | 000000000000024 |  |  |  |  |
| 29 | 1.1.6.1 | INSTALACION DE ANCLAJE DE COLUMNAS |  | 1d | 2022-02-24 | 2022-02-25 | 12 | 23d |  | start no earlier than 2022-02-17 | OPERARIO; PEON; TOPOGRAFO [50%]; SOLDADORA [62.5%]; ELECTRODO E6011 [1%] | 25h | 464.34 | 01.05.01 | 000000000000025 | 10 | 48.64 | 486.4 | 10 |
| 30 | 1.1.6.2 | MONTAJE DE COLUMNA METÁLICA CIRCULAR TIPO 1 - L=9.00 m |  | 1d | 2022-03-02 | 2022-03-03 | 22 | 17d |  | start no earlier than 2022-02-17 | OPERARIO [50%]; OFICIAL [50%]; PEON [50%]; TOPOGRAFO [25%]; SOLDADORA [62.5%]; ANDAMIO METALICO [62.5%]; ESTACION TOTAL [25%]; GRUA 5 TN [46.9%]; ELECTRODO E6011 [0.5%]; SOGA DE 3/4" NYLON [1000%] | 29.75h | 1,346.03 | 01.05.02 | 000000000000026 |  | 271 | 1355 | 10 |
| 31 | 1.1.6.3 | MONTAJE DE COLUMNA METÁLICA CIRCULAR TIPO 2 - L=5.50 m |  | 1d | 2022-03-02 | 2022-03-03 | 22 | 0d |  | start no earlier than 2022-02-17 | OPERARIO [50%]; OFICIAL [50%]; PEON [50%]; TOPOGRAFO [25%]; SOLDADORA [62.5%]; ANDAMIO METALICO [62.5%]; ESTACION TOTAL [25%]; GRUA 5 TN [37.5%]; ELECTRODO E6011 [0.5%]; SOGA DE 3/4" NYLON [1000%] | 29h | 1,196.03 | 01.05.03 | 000000000000027 |  | 241 | 1205 | 10 |
| 32 | 1.1.6.4 | MONTAJE DE CERCHA PRINCIPAL |  | 1d | 2022-03-03 | 2022-03-04 | 31 | 16d |  | start no earlier than 2022-02-17 | OPERARIO [200%]; OFICIAL; PEON; TOPOGRAFO [50%]; SOLDADORA; ANDAMIO METALICO; GRUA 5 TN [50%]; ELECTRODO E6011 [0.5%]; SOGA DE 3/4" NYLON [2000%] | 56h | 1,770.29 | 01.05.04 | 000000000000028 |  | 358.83 | 1794.15 |  |
| 33 | 1.1.6.5 | MONTAJE DE CERCHA LATERAL TIPO 1 |  | 1d | 2022-03-03 | 2022-03-04 | 31 | 0d |  | start no earlier than 2022-02-17 | OPERARIO [80%]; OFICIAL [40%]; TOPOGRAFO [20%]; SOLDADORA [80%]; ANDAMIO METALICO [40%]; GRUA 5 TN [20%]; ELECTRODO E6011 [0.4%]; SOGA DE 3/4" NYLON [800%] | 22.4h | 667.48 | 01.05.05 | 000000000000029 |  | 168.83 | 675.32 | 10 |
| 34 | 1.1.6.6 | MONTAJE DE CERCHA LATERAL TIPO 2 |  | 1d | 2022-03-04 | 2022-03-05 | 33 | 0d |  | start no earlier than 2022-02-17 | OPERARIO [80%]; OFICIAL [40%]; TOPOGRAFO [20%]; SOLDADORA [80%]; ANDAMIO METALICO [40%]; GRUA 5 TN [20%]; ELECTRODO E6011 [0.4%]; SOGA DE 3/4" NYLON [800%] | 22.4h | 667.48 | 01.05.06 | 000000000000030 |  | 168.83 | 675.32 | 10 |
| 35 | 1.1.6.7 | MONTAJE DE CORREAS METALICAS |  | 5d | 2022-03-05 | 2022-03-10 | 34 | 0d |  | start no earlier than 2022-02-17 | OPERARIO [198.9%]; OFICIAL [99.5%]; PEON [198.9%]; SOLDADORA [99.5%]; ANDAMIO METALICO [99.5%]; ELECTRODO E6011 [59.7%]; SOGA DE 3/4" NYLON [596.8%] | 278.52h | 4,598.7 | 01.05.07 | 000000000000031 | 596.82 | 4.86 | 2900.55 | 200 |
| 36 | 1.1.6.8 | MONTAJE DE ARRIOSTRAMIENTO |  | 3d | 2022-03-10 | 2022-03-13 | 35 | 0d |  | start no earlier than 2022-02-17 | OPERARIO [135.4%]; OFICIAL [67.7%]; PEON [135.4%]; SOLDADORA [135.4%]; ANDAMIO METALICO [135.4%]; ELECTRODO E6011 [50.8%]; SOGA DE 3/4" NYLON [507.6%] | 146.19h | 2,057.24 | 01.05.08 | 000000000000032 | 507.6 | 4.23 | 2147.15 | 250 |
| 37 | 1.1.6.9 | MONTAJE DE CANALETA |  | 1d | 2022-03-13 | 2022-03-14 | 36 | 0d |  | start no earlier than 2022-02-17 | OPERARIO [56%]; OFICIAL [56%]; PEON [56%]; SOLDADORA [56%]; ANDAMIO METALICO [56%]; ELECTRODO E6011 [5.6%]; SOGA DE 3/4" NYLON [56%] | 22.4h | 326.66 | 01.05.09 | 000000000000033 | 56 | 6.09 | 341.04 | 100 |
| 38 | 1.1.7 | **PRUEBAS DE LABORATORIO** |  | 1d | 2022-03-02 | 2022-03-03 |  | 17d |  |  |  | 8h | 1,500 | 01.06 | 000000000000034 |  |  |  |  |
| 39 | 1.1.7.1 | ENSAYOS NO DESTRUCTIVOS |  | 1d | 2022-03-02 | 2022-03-03 | 22 | 17d |  | start no earlier than 2022-02-17 | ENSAYOS NO DESTRUCTIVOS | 8h | 1,500 | 01.06.01 | 000000000000035 |  | 1500 | 1500 |  |
| 40 | 1.1.8 | **PINTURAS** |  | 9d | 2022-03-02 | 2022-03-11 |  | 9d |  |  |  | 201.35h | 6,216.06 | 01.07 | 000000000000036 |  |  |  |  |
| 41 | 1.1.8.1 | PINTURA - COLUMNA METÁLICA CIRCULAR TIPO 1 - L=9.00 m |  | 1d | 2022-03-02 | 2022-03-03 | 22 | 9d | 0d | start no earlier than 2022-02-17 | DILUYENTE ESTANDAR (THINNER) [150%]; PINTURA ESMALTE SINTETICO [200%]; BASE ANTICORROSIVA [250%]; OPERARIO; PEON; COMPRESORA NEUMATICA 76 HP 125-175 PCM (MAQUINA SERVIDA); LIJA [250%] | 24h | 603.5 | 01.07.01 | 000000000000037 |  | 122.74 | 613.7 |  |
| 42 | 1.1.8.2 | PINTURA -COLUMNA METÁLICA CIRCULAR TIPO 2 - L=5.50 m |  | 1d | 2022-03-03 | 2022-03-04 | 41 | 16d |  | start no earlier than 2022-02-17 | DILUYENTE ESTANDAR (THINNER) [90%]; PINTURA ESMALTE SINTETICO [150%]; BASE ANTICORROSIVA [175%]; OPERARIO; PEON; COMPRESORA NEUMATICA 76 HP 125-175 PCM (MAQUINA SERVIDA); LIJA [250%] | 24h | 539.6 | 01.07.02 | 000000000000038 |  | 109.96 | 549.8 |  |
| 43 | 1.1.8.3 | PINTURA - CERCHA PRINCIPAL |  | 4d | 2022-03-03 | 2022-03-07 | 41 | 9d | 0d | start no earlier than 2022-02-17 | DILUYENTE ESTANDAR (THINNER) [637.9%]; PINTURA ESMALTE SINTETICO [1116.4%]; BASE ANTICORROSIVA [1435.3%]; OPERARIO; PEON; COMPRESORA NEUMATICA 76 HP 125-175 PCM (MAQUINA SERVIDA); LIJA [500%] | 96h | 2,727.68 | 01.07.03 | 000000000000039 |  | 631.73 | 3158.65 |  |
| 44 | 1.1.8.4 | PINTURA - CERCHA LATERAL TIPO 1 |  | 1d | 2022-03-07 | 2022-03-08 | 43 | 9d | 0d | start no earlier than 2022-02-17 | DILUYENTE ESTANDAR (THINNER) [81.7%]; PINTURA ESMALTE SINTETICO [142.9%]; BASE ANTICORROSIVA [183.8%]; OPERARIO [20%]; PEON [20%]; COMPRESORA NEUMATICA 76 HP 125-175 PCM (MAQUINA SERVIDA) [20%]; LIJA [200%] | 4.8h | 233.34 | 01.07.04 | 000000000000040 |  | 58.85 | 235.4 | 20 |
| 45 | 1.1.8.5 | PINTURA - CERCHA LATERAL TIPO 2 |  | 1d | 2022-03-08 | 2022-03-09 | 44 | 9d | 0d | start no earlier than 2022-02-17 | DILUYENTE ESTANDAR (THINNER) [78.8%]; PINTURA ESMALTE SINTETICO [138%]; BASE ANTICORROSIVA [177.4%]; OPERARIO [20%]; PEON [20%]; COMPRESORA NEUMATICA 76 HP 125-175 PCM (MAQUINA SERVIDA) [20%]; LIJA [200%] | 4.8h | 228.04 | 01.07.05 | 000000000000041 |  | 57.52 | 230.08 | 20 |
| 46 | 1.1.8.6 | PINTURA - CORREAS METALICAS |  | 2d | 2022-03-09 | 2022-03-11 | 45 | 9d |  | start no earlier than 2022-02-17 | DILUYENTE ESTANDAR (THINNER) [602.8%]; PINTURA ESMALTE SINTETICO [1050.4%]; BASE ANTICORROSIVA [1348.8%]; OPERARIO [99.5%]; PEON [99.5%]; COMPRESORA NEUMATICA 76 HP 125-175 PCM (MAQUINA SERVIDA) [99.5%]; LIJA [59.7%] | 47.75h | 1,883.9 | 01.07.06 | 000000000000042 | 596.82 | 3.87 | 2309.69 | 200 |
| 47 | 1.1.9 | **COBERTURA** |  | 6d | 2022-03-14 | 2022-03-20 |  | 0d |  |  |  | 182.16h | 33,949.71 | 01.08 | 000000000000043 |  |  |  |  |
| 48 | 1.1.9.1 | SUMINISTRO E INSTALACION DE COBERTURA TERMOACUSTICA e=2.0 mm |  | 6d | 2022-03-14 | 2022-03-20 | 37 | 0d |  | start no earlier than 2022-02-17 | AUTOPERFORANTE 3" [3202.1%]; OPERARIO [189.8%]; OFICIAL [94.9%]; PEON [94.9%]; PANELES TK5 COLOR ROJO DE 1.07x3.60m x 2 mm [74715.9%] | 182.16h | 33,949.71 | 01.08.01 | 000000000000044 | 711.58 | 57.43 | 40866.04 | 50 |
| 49 | 1.1.10 | **AGUAS PLUVIALES** |  | 6d | 2022-03-14 | 2022-03-20 |  | 0d |  |  |  | 12h | 740.12 | 01.09 | 000000000000045 |  |  |  |  |
| 50 | 1.1.10.1 | SUMINISTRO E INSTALACION DE MONTANTES DE EVACUACION PLUVIAL |  | 1d | 2022-03-14 | 2022-03-15 | 37 | 5d |  | start no earlier than 2022-02-17 | OPERARIO [50%]; OFICIAL [50%]; ANDAMIO METALICO [50%]; TUBO PVC SAL 4" [3660%]; PEGAMENTO PARA PVC 1/4 GLN [200%]; CODO PVC SAL 4"x90º [600%]; CODO PVC SAL 4"X45º [400%] | 12h | 740.12 | 01.09.01 | 000000000000046 |  | 374.5 | 749 |  |
| 51 | 1.1.10.2 | FIN DE ACTIVIDADES DE CUBIERTA METALICA DE LOSA DE PRIMARIA | milestone | 0d | 2022-03-20 | 2022-03-20 | 48, 50, 46, 27, 29, 39 | 0d |  |  |  |  |  |  |  |  |  |  |  |
