# PROGRAMACION GANTT FINAL FINAL

Schedule from MS Project, 2022-02-19 to 2022-09-08, costs in S.

## Calendars

- Estándar: Mon-Sat 09:00-13:00, 15:00-19:00; Sun off.

## Schedule

| ID | WBS | Task | Type | Duration | Start | Finish | Predecessors | Total slack | Free slack | Cost | Text2 | Text1 |
| --- | --- | --- | --- | --- | --- | --- | --- | --- | --- | --- | --- | --- |
| 1 | 1 | **"MEJORAMIENTO DEL SERVICIO EDUCATIVO EN LA IEP N 54002 SANTA ROSA E IES SANTA ROSA DEL DISTRITO DE ABANCAY, PROVINCIA DE ABANCAY -** |  | 173d | 2022-02-19 | 2022-09-08 |  | 0d |  | 2,317,345.1 | 202 días |  |
| 2 | 1.1 | Inicio de Obra | milestone | 0d | 2022-02-19 | 2022-02-19 |  | 150d |  |  | 0 días |  |
| 3 | 1.2 | **ADICIONAL PARTIDAS NUEVAS** |  | 173d | 2022-02-19 | 2022-09-08 |  | 0d |  | 2,317,345.1 | 202 días |  |
| 4 | 1.2.1 | **OBRAS PROVISIONALES, TRABAJOS PRELIMINARES, SEGURIDAD Y SALUD** |  | 61d | 2022-02-19 | 2022-04-30 |  | 112d |  | 286,666.14 | 71 días | 01 |
| 5 | 1.2.1.1 | **SEGURIDAD Y SALUD** |  | 29d | 2022-02-19 | 2022-03-24 |  | 112d |  | 195,380.54 | 34 días | 01.01 |
| 6 | 1.2.1.1.1 | EQUIPOS DE PROTECCIÓN INDIVIDUAL COMPLEMENTARIOS |  | 29d | 2022-02-19 | 2022-03-24 |  | 89d | 0d | 195,380.54 | 34 días | 01.01.01 |
| 7 | 1.2.1.2 | **OBRAS DE TRABAJOS PRELIMINARES** |  | 61d | 2022-02-19 | 2022-04-30 |  | 112d |  | 83,956.19 | 71 días | 01.02 |
| 8 | 1.2.1.2.1 | LIMPIEZA DE JUNTAS DE PORCELANATO PARA FRAGUA |  | 8d | 2022-03-14 | 2022-03-22 | 11 | 123d |  | 15,677.1 | 9 días | 01.02.01 |
| 9 | 1.2.1.2.2 | DESCASCARAMIENTO DE TARRAJEO EXISTENTE |  | 6d | 2022-02-19 | 2022-02-25 | 6SS | 123d | 0d | 9,297.17 | 7 días | 01.02.02 |
| 10 | 1.2.1.2.3 | DEMOLICION DE CONTRAPISO EXISTENTE E=5 cm |  | 5d | 2022-02-26 | 2022-03-03 | 9 | 123d | 0d | 16,206.54 | 6 días | 01.02.03 |
| 11 | 1.2.1.2.4 | ELIMINACION DE DESMONTE PROVENIENTE DE DEMOLICION |  | 8d | 2022-03-04 | 2022-03-12 | 10 | 123d | 0d | 9,068.14 | 9 días | 01.02.04 |
| 12 | 1.2.1.2.5 | LIJADO DE MURO EN PINTURA EXISTENTE |  | 20d | 2022-02-19 | 2022-03-14 | 6SS | 130d |  | 4,303.72 | 24 días | 01.02.05 |
| 13 | 1.2.1.2.6 | MONTANJE Y DESMONTAJE DE ANDAMIO PARA PINTURA EN EXTERIOR |  | 61d | 2022-02-19 | 2022-04-30 | 6SS | 89d |  | 29,403.52 | 71 días | 01.02.06 |
| 14 | 1.2.1.3 | **TRASLADO INTERNO EN OBRA** |  | 7d | 2022-03-01 | 2022-03-08 |  | 158d |  | 7,329.41 | 8 días | 01.03 |
| 15 | 1.2.1.3.1 | ACARREO DE MEZCLA DE CONCRETO |  | 7d | 2022-03-01 | 2022-03-08 | 27 | 135d |  | 7,329.41 | 8 días | 01.03.01 |
| 16 | 1.2.2 | **ARQUITECTURA** |  | 42d | 2022-02-19 | 2022-04-08 |  | 112d | 0d | 629,630.98 | 49 días | 02 |
| 17 | 1.2.2.1 | **MUROS Y TABIQUES** |  | 6d | 2022-02-19 | 2022-02-25 |  | 112d |  | 100,850.83 | 7 días | 02.01 |
| 18 | 1.2.2.1.1 | MURO DE ALUMINIO COMPUESTO E=15cm |  | 6d | 2022-02-19 | 2022-02-25 | 6SS | 89d | 0d | 100,850.83 | 7 días | 02.01.01 |
| 19 | 1.2.2.2 | **REVOQUES ENLUCIDOS Y MOLDURAS** |  | 7d | 2022-02-19 | 2022-02-26 |  | 166d |  | 28,211.09 | 8 días | 02.02 |
| 20 | 1.2.2.2.1 | TARRAJEO EN COLUMNAS CIRCULARES |  | 6d | 2022-02-19 | 2022-02-25 | 18SS | 143d | 0d | 9,065.34 | 7 días | 02.02.01 |
| 21 | 1.2.2.2.2 | SOLAQUEO EN VIGAS DE LOSA NERVADA |  | 7d | 2022-02-19 | 2022-02-26 | 20SS | 143d |  | 19,145.75 | 8 días | 02.02.02 |
| 22 | 1.2.2.3 | **PISOS Y PAVIMENTOS** |  | 6d | 2022-02-26 | 2022-03-04 |  | 112d | 0d | 25,848.23 | 7 días | 02.03 |
| 23 | 1.2.2.3.1 | **PISOS** |  | 4d | 2022-03-01 | 2022-03-04 |  | 112d | 0d | 18,351.27 | 4 días | 02.03.01 |
| 24 | 1.2.2.3.1.1 | PISO DE CEMENTO PULIDO COLOREADO |  | 2d | 2022-03-01 | 2022-03-02 | 27 | 89d | 0d | 8,645.73 | 2 días | 02.03.01.01 |
| 25 | 1.2.2.3.1.2 | REVESTIMIENTO DE PEDELTAL CON TERRAZO PULIDO |  | 2d | 2022-03-03 | 2022-03-04 | 24 | 89d |  | 9,705.54 | 2 días | 02.03.01.02 |

| ID | WBS | Task | Duration | Start | Finish | Predecessors | Total slack | Free slack | Cost | Text1 | Text2 |
| --- | --- | --- | --- | --- | --- | --- | --- | --- | --- | --- | --- |
| 26 | 1.2.2.3.2 | **SARDINELES** | 5d | 2022-02-26 | 2022-03-03 |  | 112d |  | 7,496.96 | 02.03.02 | 6 días |
| 27 | 1.2.2.3.2.1 | SARDINEL DE CONCRETO CON ACABADO FROTACHADO Y PINTADO DE 0.10X1.00M | 2d | 2022-02-26 | 2022-02-28 | 18 | 89d | 0d | 3,231.13 | 02.03.02.01 | 3 días |
| 28 | 1.2.2.3.2.2 | SARDINEL DE CONCRETO CON ACABADO FROTACHADO DE 0.10X0.60M | 2d | 2022-03-01 | 2022-03-02 | 27 | 90d | 0d | 3,492.57 | 02.03.02.02 | 2 días |
| 29 | 1.2.2.3.2.3 | SARDINEL DE CONCRETO CON ACABADO FROTACHADO DE 0.10X0.80M | 1d | 2022-03-03 | 2022-03-03 | 28 | 90d |  | 773.26 | 02.03.02.03 | 1 día |
| 30 | 1.2.2.4 | **ZOCALOS Y CONTRAZOCALOS** | 7d | 2022-02-26 | 2022-03-05 |  | 139d |  | 3,671.04 | 02.04 | 8 días |
| 31 | 1.2.2.4.1 | **CONTRAZOCALOS** | 7d | 2022-02-26 | 2022-03-05 |  | 139d |  | 3,671.04 | 02.04.01 | 8 días |
| 32 | 1.2.2.4.1.1 | CONTRAZOCALO VINILICO SPC DE 8cm | 2d | 2022-02-26 | 2022-02-28 | 18 | 116d | 0d | 2,357.27 | 02.04.01.01 | 3 días |
| 33 | 1.2.2.4.1.2 | CONTRAZOCALO SANITARIO DE CEMENTO PULIDO C/MORTERO 1:5 DE 2CM, H=10CM | 5d | 2022-03-01 | 2022-03-05 | 32 | 116d | 0d | 1,313.77 | 02.04.01.02 | 5 días |
| 34 | 1.2.2.5 | **COBERTURA** | 3d | 2022-03-07 | 2022-03-09 |  | 139d |  | 54,267.73 | 02.05 | 3 días |
| 35 | 1.2.2.5.1 | COBERTURA C/LADRILLO PASTELERO | 2d | 2022-03-07 | 2022-03-08 | 18, 33 | 116d | 0d | 5,656.34 | 02.05.01 | 2 días |
| 36 | 1.2.2.5.2 | COBERTURA DE POLICARBONATO SOLIDO Y TUBO DE ACERO LAC | 1d | 2022-03-09 | 2022-03-09 | 35 | 116d | 0d | 48,611.39 | 02.05.02 | 1 día |
| 37 | 1.2.2.6 | **CARPINTERIA METALICA Y HERRERIA** | 11d | 2022-03-10 | 2022-03-22 |  | 139d | 0d | 50,599.66 | 02.06 | 13 días |
| 38 | 1.2.2.6.1 | **CARPINTERIA DE FIERRO** | 11d | 2022-03-10 | 2022-03-22 |  | 139d |  | 50,599.66 | 02.06.01 | 13 días |
| 39 | 1.2.2.6.1.1 | SUMINISTRO E INSTALACION DE REJA DE ACERO GALVANIZADO DE 3" | 4d | 2022-03-10 | 2022-03-14 | 36 | 116d | 0d | 22,129.92 | 02.06.01.01 | 5 días |
| 40 | 1.2.2.6.1.2 | PUERTA METALICA | 4d | 2022-03-15 | 2022-03-18 | 39 | 116d | 0d | 22,249.57 | 02.06.01.02 | 4 días |
| 41 | 1.2.2.6.1.3 | PUERTA CORTAFUEGO (INCL. INSTALACION Y ACCESORIOS) | 1d | 2022-03-19 | 2022-03-19 | 40 | 116d | 0d | 5,000 | 02.06.01.03 | 1 día |
| 42 | 1.2.2.6.1.4 | VENTANA DE REJA METALICA | 2d | 2022-03-21 | 2022-03-22 | 41 | 116d |  | 1,220.17 | 02.06.01.04 | 2 días |
| 43 | 1.2.2.7 | **CERRAJERIA** | 4d | 2022-03-09 | 2022-03-12 |  | 154d |  | 21,913.78 | 02.07 | 4 días |
| 44 | 1.2.2.7.1 | FRENO HIDRAULICO DE PISO PARA MAMPARAS | 1d | 2022-03-09 | 2022-03-09 | 35 | 131d | 0d | 7,527.78 | 02.07.01 | 1 día |
| 45 | 1.2.2.7.2 | FRENO HIDRAULICO AEREO PARA PUERTAS DE MADERA | 3d | 2022-03-10 | 2022-03-12 | 44 | 131d |  | 14,386 | 02.07.02 | 3 días |
| 46 | 1.2.2.8 | **JUNTAS** | 7d | 2022-03-23 | 2022-03-30 |  | 139d |  | 33,576.73 | 02.08 | 8 días |
| 47 | 1.2.2.8.1 | SELLADO DE JUNTAS CON POLIURETANO | 7d | 2022-03-23 | 2022-03-30 | 37 | 116d |  | 33,576.73 | 02.08.01 | 8 días |
| 48 | 1.2.2.9 | **PINTURAS** | 30d | 2022-03-05 | 2022-04-08 |  | 131d |  | 196,911.94 | 02.09 | 35 días |
| 49 | 1.2.2.9.1 | EMPASTADO EN MUROS INTERIORES | 15d | 2022-03-05 | 2022-03-22 | 23 | 108d | 0d | 53,082.54 | 02.09.01 | 18 días |
| 50 | 1.2.2.9.2 | EMPASTADO EN MUROS EXTERIORES | 9d | 2022-03-09 | 2022-03-18 | 49FS-12d | 108d | 0d | 15,038.16 | 02.09.02 | 10 días |
| 51 | 1.2.2.9.3 | EMPASTADO DE SUPERF. COLUMNAS INCL. ARISTAS | 15d | 2022-03-14 | 2022-03-30 | 50FS-5d | 108d | 0d | 49,029.66 | 02.09.03 | 17 días |
| 52 | 1.2.2.9.4 | EMPASTADO DE SUPERF. VIGAS INCL. ARISTAS | 8d | 2022-03-17 | 2022-03-25 | 51FS-12d | 108d | 0d | 21,235.33 | 02.09.04 | 9 días |
| 53 | 1.2.2.9.5 | EMPASTADO EN VESTIDURA DE DERRAMES | 5d | 2022-03-22 | 2022-03-26 | 52FS-4d | 108d | 0d | 8,855.09 | 02.09.05 | 5 días |
| 54 | 1.2.2.9.6 | EMPASTADO EN CIELORRASOS | 16d | 2022-03-22 | 2022-04-08 | 53SS | 108d |  | 49,671.16 | 02.09.06 | 18 días |

| ID | WBS | Task | Duration | Start | Finish | Predecessors | Total slack | Free slack | Cost | Text1 | Text2 |
| --- | --- | --- | --- | --- | --- | --- | --- | --- | --- | --- | --- |
| 55 | 1.2.2.10 | **OTROS** | 25d | 2022-03-01 | 2022-03-29 |  | 140d |  | 113,779.95 | 02.10 | 29 días |
| 56 | 1.2.2.10.1 | PERFIL DE ALUMINIO CURVO EN ZOCALOS CONTRAZOCALOS Y MESAS | 11d | 2022-03-01 | 2022-03-12 | 32 | 117d | 0d | 67,130.73 | 02.10.01 | 12 días |
| 57 | 1.2.2.10.2 | CANTONERA DE ALUMINIO PARA GRADAS | 3d | 2022-03-14 | 2022-03-16 | 56 | 117d | 0d | 7,115.36 | 02.10.02 | 3 días |
| 58 | 1.2.2.10.3 | ESCUDO INSTITUCIONAL DE ALUMINIO. | 1d | 2022-03-17 | 2022-03-17 | 57 | 117d | 0d | 3,000 | 02.10.03 | 1 día |
| 59 | 1.2.2.10.4 | PINTURA SATINADA PARA MURAL | 6d | 2022-03-18 | 2022-03-24 | 58 | 117d | 0d | 20,033.86 | 02.10.04 | 7 días |
| 60 | 1.2.2.10.5 | CAMPANA H=0.60M | 1d | 2022-03-25 | 2022-03-25 | 59 | 117d | 0d | 5,500 | 02.10.05 | 1 día |
| 61 | 1.2.2.10.6 | CRUZ DE ALUMINIO TEXTURIZADO EN INTERIOR Y EXTERIOR 1.80X3.00M | 2d | 2022-03-26 | 2022-03-28 | 60 | 117d | 0d | 6,000 | 02.10.06 | 3 días |
| 62 | 1.2.2.10.7 | ESTATUA DE SANTA ROSA H=2.20 | 1d | 2022-03-29 | 2022-03-29 | 61 | 117d |  | 5,000 | 02.10.07 | 1 día |
| 63 | 1.2.3 | **INSTALACIONES SANITARIAS** | 49d | 2022-03-05 | 2022-04-30 |  | 112d |  | 458,877.43 | 03 | 57 días |
| 64 | 1.2.3.1 | **APARATOS SANITARIOS Y ACCESORIOS** | 2d | 2022-03-07 | 2022-03-08 |  | 158d |  | 18,380.04 | 03.01 | 2 días |
| 65 | 1.2.3.1.1 | **SUMINISTRO DE ACCESORIOS SANITARIOS** | 2d | 2022-03-07 | 2022-03-08 |  | 158d |  | 18,380.04 | 03.01.01 | 2 días |
| 66 | 1.2.3.1.1.1 | MODULO DE BEBEDERO DE AGUA | 2d | 2022-03-07 | 2022-03-08 | 69 | 135d |  | 18,380.04 | 03.01.01.01 | 2 días |
| 67 | 1.2.3.2 | **SISTEMA DE AGUA FRIA REPOSICION** | 16d | 2022-03-05 | 2022-03-23 |  | 112d |  | 6,957.1 | 03.02 | 19 días |
| 68 | 1.2.3.2.1 | **TRABAJOS PRELIMINARES** | 2d | 2022-03-05 | 2022-03-07 |  | 112d |  | 210.21 | 03.02.01 | 3 días |
| 69 | 1.2.3.2.1.1 | LIMPIEZA DE TERRENO MANUAL | 1d | 2022-03-05 | 2022-03-05 | 22 | 89d | 0d | 104.91 | 03.02.01.01 | 1 día |
| 70 | 1.2.3.2.1.2 | TRAZO Y REPLANTEO PRELIMINAR.. | 1d | 2022-03-07 | 2022-03-07 | 69 | 122d | 0d | 105.3 | 03.02.01.02 | 1 día |
| 71 | 1.2.3.2.2 | **REMOCIONES** | 1d | 2022-03-07 | 2022-03-07 |  | 158d |  | 506.87 | 03.02.02 | 1 día |
| 72 | 1.2.3.2.2.1 | DEMOLICIÓN DE PISO DE CONCRETO | 1d | 2022-03-07 | 2022-03-07 | 69 | 135d | 0d | 506.87 | 03.02.02.01 | 1 día |
| 73 | 1.2.3.2.3 | **ELIMINACION DE MATERIAL PROVENIENTE DE DEMOLICION** | 1d | 2022-03-08 | 2022-03-08 |  | 158d |  | 166.77 | 03.02.03 | 1 día |
| 74 | 1.2.3.2.3.1 | ELIMINACION DE DESMONTE PROVENIENTE DE DEMOLICIONES C/EQUIPO | 1d | 2022-03-08 | 2022-03-08 | 72 | 135d |  | 166.77 | 03.02.03.01 | 1 día |
| 75 | 1.2.3.2.4 | **MOVIMIENTO DE TIERRAS** | 14d | 2022-03-08 | 2022-03-23 |  | 145d |  | 3,364.07 | 03.02.04 | 16 días |
| 76 | 1.2.3.2.4.1 | EXCAVACIÓN MANUAL EN TERRENO NORMAL PARA TUBERIAS | 3d | 2022-03-08 | 2022-03-10 | 70 | 122d | 0d | 1,050.84 | 03.02.04.01 | 3 días |
| 77 | 1.2.3.2.4.2 | RELLENO Y COMPACTADO CON MATERIAL SELECCIONADO PARA INSTALACION DE TUBERIA | 3d | 2022-03-16 | 2022-03-18 | 83 | 122d | 0d | 892.17 | 03.02.04.02 | 3 días |
| 78 | 1.2.3.2.4.3 | REFINE Y NIVELACION DE ZANJA EN TERRENO NORMAL PARA TUBERIAS | 2d | 2022-03-11 | 2022-03-12 | 76 | 122d | 0d | 210.87 | 03.02.04.03 | 2 días |
| 79 | 1.2.3.2.4.4 | ACARREO MANUAL DE TUBERÍAS(D=60m) | 1d | 2022-03-14 | 2022-03-14 | 78 | 122d | 0d | 14.91 | 03.02.04.04 | 1 día |
| 80 | 1.2.3.2.4.5 | ACARREO MANUAL INTERNO DE MATERIAL EXCEDENTE PROVENIENTE DE EXCAVACIONES | 3d | 2022-03-19 | 2022-03-22 | 77 | 122d | 0d | 394.53 | 03.02.04.05 | 4 días |
| 81 | 1.2.3.2.4.6 | ELIMINACIÓN DE MATERIAL EXCEDENTE | 1d | 2022-03-23 | 2022-03-23 | 80 | 122d |  | 800.75 | 03.02.04.06 | 1 día |

| ID | WBS | Task | Duration | Start | Finish | Predecessors | Total slack | Free slack | Cost | Text1 | Text2 |
| --- | --- | --- | --- | --- | --- | --- | --- | --- | --- | --- | --- |
| 82 | 1.2.3.2.5 | **RED DE DISTRIBUCION** | 1d | 2022-03-15 | 2022-03-15 |  | 145d |  | 2,170 | 03.02.05 | 1 día |
| 83 | 1.2.3.2.5.1 | SUMINISTRO E INSTALACION DE TUBERIA PVC SAP C-10 Ø 1" | 1d | 2022-03-15 | 2022-03-15 | 79 | 122d | 0d | 2,170 | 03.02.05.01 | 1 día |
| 84 | 1.2.3.2.6 | **ACCESORIOS DE REDES DE AGUA** | 1d | 2022-03-16 | 2022-03-16 | 83 | 151d |  | 539.18 | 03.02.06 | 1 día |
| 85 | 1.2.3.2.6.1 | CODO DE PVC Ø 1" x 90° SP | 1d | 2022-03-16 | 2022-03-16 |  | 128d |  | 311.55 | 03.02.06.01 | 1 día |
| 86 | 1.2.3.2.6.2 | UNIÓN PVC SAP Ø 1" | 1d | 2022-03-16 | 2022-03-16 |  | 128d |  | 227.63 | 03.02.06.02 | 1 día |
| 87 | 1.2.3.3 | **SISTEMA DE DRENAJE PLUVIAL** | 48d | 2022-03-07 | 2022-04-30 |  | 112d |  | 279,147.31 | 03.03 | 55 días |
| 88 | 1.2.3.3.1 | **TRABAJOS PRELIMINARES** | 2d | 2022-03-07 | 2022-03-08 |  | 112d |  | 2,275.55 | 03.03.01 | 2 días |
| 89 | 1.2.3.3.1.1 | LIMPIEZA DE TERRENO MANUAL | 1d | 2022-03-07 | 2022-03-07 | 69 | 89d | 0d | 1,135.66 | 03.03.01.01 | 1 día |
| 90 | 1.2.3.3.1.2 | TRAZO Y REPLANTEO PRELIMINAR.. | 1d | 2022-03-08 | 2022-03-08 | 89 | 89d | 0d | 1,139.89 | 03.03.01.02 | 1 día |
| 91 | 1.2.3.3.2 | **REMOCIONES** | 4d | 2022-03-08 | 2022-03-11 |  | 155d |  | 1,527.84 | 03.03.02 | 4 días |
| 92 | 1.2.3.3.2.1 | DEMOLICIÒN DE CANAL EXISTENTE | 2d | 2022-03-08 | 2022-03-09 | 89 | 132d | 0d | 324.72 | 03.03.02.01 | 2 días |
| 93 | 1.2.3.3.2.2 | DEMOLICIÓN DE PISO DE CONCRETO | 2d | 2022-03-10 | 2022-03-11 | 92 | 132d |  | 1,203.12 | 03.03.02.02 | 2 días |
| 94 | 1.2.3.3.3 | **REPOSICIONES** | 2d | 2022-04-26 | 2022-04-27 |  | 115d |  | 6,506.28 | 03.03.03 | 2 días |
| 95 | 1.2.3.3.3.1 | REPOSICIÓN DE PISO DE CONCRETO ACABADO FROTACHADO | 1d | 2022-04-26 | 2022-04-26 | 136 | 92d | 0d | 5,043.6 | 03.03.03.01 | 1 día |
| 96 | 1.2.3.3.3.2 | REPOSICIÓN DE PISO CON PORCELANATO 60X60 CM | 1d | 2022-04-27 | 2022-04-27 | 95 | 92d |  | 1,462.68 | 03.03.03.02 | 1 día |
| 97 | 1.2.3.3.4 | **ELIMINACIÒN DE MATERIAL PROVENIENTE DE DEMOLICIÒN** | 1d | 2022-03-10 | 2022-03-10 |  | 156d |  | 921.21 | 03.03.04 | 1 día |
| 98 | 1.2.3.3.4.1 | ELIMINACION DE DESMONTE PROVENIENTE DE DEMOLICIONES C/EQUIPO | 1d | 2022-03-10 | 2022-03-10 | 92 | 133d |  | 921.21 | 03.03.04.01 | 1 día |
| 99 | 1.2.3.3.5 | **MOVIMIENTO DE TIERRAS** | 46d | 2022-03-09 | 2022-04-30 |  | 112d |  | 66,950.07 | 03.03.05 | 53 días |
| 100 | 1.2.3.3.5.1 | EXCAVACIÓN MANUAL EN TERRENO SEMIRROCOSO PARA CANALES | 4d | 2022-03-09 | 2022-03-12 | 90 | 89d | 0d | 4,521.95 | 03.03.05.01 | 4 días |
| 101 | 1.2.3.3.5.2 | EXCAVACIÓN MANUAL EN TERRENO SEMIRROCOSO PARA CAJAS DE INSPECCIÓN | 5d | 2022-03-14 | 2022-03-18 | 100 | 126d |  | 1,870.11 | 03.03.05.02 | 5 días |
| 102 | 1.2.3.3.5.3 | EXCAVACION CON MAQUINARIA EN TERRENO NORMAL >4M | 3d | 2022-03-14 | 2022-03-16 | 100 | 128d |  | 3,810.24 | 03.03.05.03 | 3 días |
| 103 | 1.2.3.3.5.4 | COMPACTADO DE SUBRASANTE DE CAJA Y CANALES | 3d | 2022-03-30 | 2022-04-01 | 106 | 89d | 0d | 2,728.45 | 03.03.05.04 | 3 días |
| 104 | 1.2.3.3.5.5 | RELLENO Y COMPACTADO CON MATERIAL SELECCIONADO PARA INSTALACION DE RED COLECTORA | 5d | 2022-04-19 | 2022-04-23 | 135 | 89d | 0d | 10,065.45 | 03.03.05.05 | 5 días |
| 105 | 1.2.3.3.5.6 | REFINE Y NIVELACION DE ZANJA EN TERRENO NORMAL PARA TUBERÍAS | 5d | 2022-03-14 | 2022-03-18 | 100 | 89d | 0d | 5,058.52 | 03.03.05.06 | 5 días |
| 106 | 1.2.3.3.5.7 | REFINE Y NIVELACION DE ZANJA EN TERRENO NORMAL PARA CANALES | 12d | 2022-03-16 | 2022-03-29 | 105FS-3d | 89d | 0d | 20,833.57 | 03.03.05.07 | 14 días |
| 107 | 1.2.3.3.5.8 | ACARREO MANUAL DE TUBERÍAS(D=60m) | 9d | 2022-04-02 | 2022-04-12 | 103 | 105d |  | 9,440.3 | 03.03.05.08 | 11 días |
| 108 | 1.2.3.3.5.9 | ACARREO DE MEZCLA DE CONCRETO PARA CAJAS Y CANALES | 4d | 2022-04-02 | 2022-04-06 | 112SS | 110d |  | 1,376.76 | 03.03.05.09 | 5 días |
| 109 | 1.2.3.3.5.10 | ACARREO MANUAL INTERNO DE MATERIAL EXCEDENTE PROVENIENTE DE EXCAVACIONES | 7d | 2022-04-22 | 2022-04-29 | 104FS-2d | 89d | 0d | 2,779.05 | 03.03.05.10 | 8 días |
| 110 | 1.2.3.3.5.11 | ELIMINACIÓN DE MATERIAL EXCEDENTE | 1d | 2022-04-30 | 2022-04-30 | 109 | 89d |  | 4,465.67 | 03.03.05.11 | 1 día |

| ID | WBS | Task | Duration | Start | Finish | Predecessors | Total slack | Free slack | Cost | Text1 | Text2 |
| --- | --- | --- | --- | --- | --- | --- | --- | --- | --- | --- | --- |
| 111 | 1.2.3.3.6 | **CONCRETO SIMPLE** | 3d | 2022-04-02 | 2022-04-05 |  | 112d |  | 4,447.73 | 03.03.06 | 4 días |
| 112 | 1.2.3.3.6.1 | SOLADO EN CANAL DE CONCRETO EN PISO f'c= 100 kg/cm2 E=10CM | 2d | 2022-04-02 | 2022-04-04 | 103 | 89d | 0d | 3,282.5 | 03.03.06.01 | 3 días |
| 113 | 1.2.3.3.6.2 | SOLADO PARA CAJAS DE INSPECCIÒN f'c= 100 kg/cm2 E=10CM | 1d | 2022-04-05 | 2022-04-05 | 112 | 103d | 0d | 1,165.23 | 03.03.06.02 | 1 día |
| 114 | 1.2.3.3.7 | **RED DE RECOLECCIÓN** | 18d | 2022-04-05 | 2022-04-25 |  | 112d |  | 175,376.63 | 03.03.07 | 21 días |
| 115 | 1.2.3.3.7.1 | CANAL DE CONCRETO ARMADO EN PISO A=30 CM H=VARIABLE, E=15cm | 4d | 2022-04-05 | 2022-04-08 | 112 | 89d | 0d | 10,667.27 | 03.03.07.01 | 4 días |
| 116 | 1.2.3.3.7.2 | CANAL DE CONCRETO ARMADO EN PISO A=34CM H=VARIABLE, E=15cm | 4d | 2022-04-09 | 2022-04-13 | 115 | 89d | 0d | 4,834.62 | 03.03.07.02 | 5 días |
| 117 | 1.2.3.3.7.3 | REJILLA METALICA TPO IV A=50cm | 2d | 2022-04-14 | 2022-04-15 | 116 | 97d | 0d | 6,164.42 | 03.03.07.03 | 2 días |
| 118 | 1.2.3.3.7.4 | TAPA DE CONCRETO 70x70x5cm f'c=175kg/cm2 | 1d | 2022-04-09 | 2022-04-09 | 130 | 106d | 0d | 580.69 | 03.03.07.04 | 1 día |
| 119 | 1.2.3.3.7.5 | TAPA DE CONCRETO 100x50x5cm f'c=175kg/cm2 | 1d | 2022-04-11 | 2022-04-11 | 118 | 106d |  | 474.11 | 03.03.07.05 | 1 día |
| 120 | 1.2.3.3.7.6 | TAPA DE REJILLA 30X30cm | 1d | 2022-04-16 | 2022-04-16 | 117 | 97d | 0d | 14,314.8 | 03.03.07.06 | 1 día |
| 121 | 1.2.3.3.7.7 | TAPA DE REJILLA 70X50cm | 1d | 2022-04-18 | 2022-04-18 | 120 | 97d | 0d | 1,085.34 | 03.03.07.07 | 1 día |
| 122 | 1.2.3.3.7.8 | TAPA DE REJILLA 70X70cm | 1d | 2022-04-19 | 2022-04-19 | 121 | 97d | 0d | 420.53 | 03.03.07.08 | 1 día |
| 123 | 1.2.3.3.7.9 | TAPA DE REJILLA 70X110cm | 1d | 2022-04-20 | 2022-04-20 | 122 | 97d | 0d | 666.18 | 03.03.07.09 | 1 día |
| 124 | 1.2.3.3.7.10 | TAPA DE REJILLA 140X570cm | 1d | 2022-04-21 | 2022-04-21 | 123 | 97d |  | 3,111.66 | 03.03.07.10 | 1 día |
| 125 | 1.2.3.3.7.11 | TUBERÍA PVC SAP C-10 Ø DE 3" MONTANTE | 2d | 2022-04-09 | 2022-04-11 | 115 | 102d | 0d | 12,036.68 | 03.03.07.11 | 3 días |
| 126 | 1.2.3.3.7.12 | RED COLECTORA TUBERÍA PVC UF Ø DE 4" | 1d | 2022-04-12 | 2022-04-12 | 125 | 102d | 0d | 6,750.56 | 03.03.07.12 | 1 día |
| 127 | 1.2.3.3.7.13 | RED COLECTORA TUBERÍA PVC UF Ø DE 6" | 1d | 2022-04-13 | 2022-04-13 | 126 | 102d | 0d | 11,515.59 | 03.03.07.13 | 1 día |
| 128 | 1.2.3.3.7.14 | RED COLECTORA TUBERÍA PVC UF Ø DE 16" | 2d | 2022-04-14 | 2022-04-15 | 127 | 102d |  | 60,810 | 03.03.07.14 | 2 días |
| 129 | 1.2.3.3.7.15 | CAJAS DE INSPECCIÓN TIPO II A=0.20M L=0.20M | 1d | 2022-04-06 | 2022-04-06 | 113 | 103d | 0d | 778.35 | 03.03.07.15 | 1 día |
| 130 | 1.2.3.3.7.16 | CAJAS DE INSPECCIÓN TIPO II A=0.60M L=0.40M H=VARIABLE | 2d | 2022-04-07 | 2022-04-08 | 129 | 103d | 0d | 5,160.76 | 03.03.07.16 | 2 días |
| 131 | 1.2.3.3.7.17 | CAJAS DE INSPECCIÓN TIPO II A=0.60M L=0.60M H=VARIABLE | 2d | 2022-04-09 | 2022-04-11 | 130 | 103d | 0d | 7,675.44 | 03.03.07.17 | 3 días |
| 132 | 1.2.3.3.7.18 | CAJAS DE INSPECCIÓN TIPO II A=0.60M L=0.90M H=VARIABLE | 1d | 2022-04-12 | 2022-04-12 | 131 | 103d | 0d | 5,310.55 | 03.03.07.18 | 1 día |
| 133 | 1.2.3.3.7.19 | CAJAS DE INSPECCIÓN TIPO II A=0.60M L=1.20M H=VARIABLE | 1d | 2022-04-13 | 2022-04-13 | 132 | 103d | 0d | 770.04 | 03.03.07.19 | 1 día |
| 134 | 1.2.3.3.7.20 | CAJAS DE INSPECCIÓN TIPO VIIA DESARENADOR A=1.30 L=5.50M H=VARIABLE | 1d | 2022-04-14 | 2022-04-14 | 133 | 103d |  | 9,052.7 | 03.03.07.20 | 1 día |
| 135 | 1.2.3.3.7.21 | TARRAJEO EN SECCION DE CAJAS INCL. ARISTAS | 4d | 2022-04-14 | 2022-04-18 | 116 | 89d | 0d | 4,218.02 | 03.03.07.21 | 5 días |
| 136 | 1.2.3.3.7.22 | TARRAJEO EN SECCION DE CANALES INCL. ARISTAS | 6d | 2022-04-19 | 2022-04-25 | 135 | 92d | 0d | 8,978.32 | 03.03.07.22 | 7 días |

| ID | WBS | Task | Duration | Start | Finish | Predecessors | Total slack | Free slack | Cost | Text1 | Text2 |
| --- | --- | --- | --- | --- | --- | --- | --- | --- | --- | --- | --- |
| 137 | 1.2.3.3.8 | **ACCESORIOS** | 2d | 2022-04-12 | 2022-04-13 | 125 | 127d |  | 7,218.14 | 03.03.08 | 2 días |
| 138 | 1.2.3.3.8.1 | CODO PVC SAP C-10 Ø 3" x 45° | 2d | 2022-04-12 | 2022-04-13 |  | 104d |  | 3,386.4 | 03.03.08.01 | 2 días |
| 139 | 1.2.3.3.8.2 | CODO PVC SAP C-10 Ø 4" x 45° | 1d | 2022-04-12 | 2022-04-12 |  | 105d |  | 1,370.85 | 03.03.08.02 | 1 día |
| 140 | 1.2.3.3.8.3 | CODO PVC SAP C-10 Ø 3" x 90° | 1d | 2022-04-12 | 2022-04-12 |  | 105d |  | 43.1 | 03.03.08.03 | 1 día |
| 141 | 1.2.3.3.8.4 | CODO PVC UF S-25 Ø 4" x 45° | 1d | 2022-04-12 | 2022-04-12 |  | 105d |  | 169.75 | 03.03.08.04 | 1 día |
| 142 | 1.2.3.3.8.5 | CODO PVC UF-S-25 Ø 6" x 45° | 1d | 2022-04-12 | 2022-04-12 |  | 105d |  | 260.26 | 03.03.08.05 | 1 día |
| 143 | 1.2.3.3.8.6 | CODO PVC UF-S-25 Ø 8" x 45° | 1d | 2022-04-12 | 2022-04-12 |  | 105d |  | 390.2 | 03.03.08.06 | 1 día |
| 144 | 1.2.3.3.8.7 | CODO PVC UF-S-25 Ø 10" x 45° | 1d | 2022-04-12 | 2022-04-12 |  | 105d |  | 106.07 | 03.03.08.07 | 1 día |
| 145 | 1.2.3.3.8.8 | CODO DE PVC UF S-25 Ø 6" x 90° | 1d | 2022-04-12 | 2022-04-12 |  | 105d |  | 72.56 | 03.03.08.08 | 1 día |
| 146 | 1.2.3.3.8.9 | CODO PVC UF-S-25 Ø 10" x 90° | 1d | 2022-04-12 | 2022-04-12 |  | 105d |  | 177.55 | 03.03.08.09 | 1 día |
| 147 | 1.2.3.3.8.10 | YEE DE PVC SAP C-10 Ø 3" | 1d | 2022-04-12 | 2022-04-12 |  | 105d |  | 120.16 | 03.03.08.10 | 1 día |
| 148 | 1.2.3.3.8.11 | YEE DE PVC UF S-25 Ø 4" | 1d | 2022-04-12 | 2022-04-12 |  | 105d |  | 150.2 | 03.03.08.11 | 1 día |
| 149 | 1.2.3.3.8.12 | YEE DE PVC UF S-25Ø 6" | 1d | 2022-04-12 | 2022-04-12 |  | 105d |  | 434.52 | 03.03.08.12 | 1 día |
| 150 | 1.2.3.3.8.13 | REDUCCION DE PVC UF S-25 Ø 4" A 3" | 1d | 2022-04-12 | 2022-04-12 |  | 105d |  | 165.2 | 03.03.08.13 | 1 día |
| 151 | 1.2.3.3.8.14 | REDUCCION DE PVC UF S-25 Ø 6" A 3" | 1d | 2022-04-12 | 2022-04-12 |  | 105d |  | 200.2 | 03.03.08.14 | 1 día |
| 152 | 1.2.3.3.8.15 | REDUCCION DE PVC UF S-25 Ø 6" A 4" | 1d | 2022-04-12 | 2022-04-12 |  | 105d |  | 171.12 | 03.03.08.15 | 1 día |
| 153 | 1.2.3.3.9 | **POZO DE PERCOLACION** | 2d | 2022-04-26 | 2022-04-27 |  | 115d |  | 13,923.86 | 03.03.09 | 2 días |
| 154 | 1.2.3.3.9.1 | POZO DE PERCOLACION | 2d | 2022-04-26 | 2022-04-27 | 136 | 92d |  | 13,923.86 | 03.03.09.01 | 2 días |
| 155 | 1.2.3.4 | **SISTEMA DE DESAGUE Y VENTILACION** | 46d | 2022-03-08 | 2022-04-29 |  | 113d |  | 154,392.98 | 03.04 | 53 días |
| 156 | 1.2.3.4.1 | **TRABAJOS PRELIMINARES** | 2d | 2022-03-08 | 2022-03-09 |  | 113d |  | 2,309.94 | 03.04.01 | 2 días |
| 157 | 1.2.3.4.1.1 | LIMPIEZA DE TERRENO MANUAL | 1d | 2022-03-08 | 2022-03-08 | 89 | 90d | 0d | 1,152.83 | 03.04.01.01 | 1 día |
| 158 | 1.2.3.4.1.2 | TRAZO Y REPLANTEO PRELIMINAR | 1d | 2022-03-09 | 2022-03-09 | 157 | 90d | 0d | 1,157.11 | 03.04.01.02 | 1 día |
| 159 | 1.2.3.4.2 | **MOVIMIENTO DE TIERRAS** | 45d | 2022-03-09 | 2022-04-29 |  | 113d |  | 126,304.79 | 03.04.02 | 52 días |
| 160 | 1.2.3.4.2.1 | EXCAVACIÓN MANUAL EN TERRENO NORMAL PARA TUBERIA H<1m | 10d | 2022-03-10 | 2022-03-21 | 158 | 90d | 0d | 13,883.2 | 03.04.02.01 | 12 días |
| 161 | 1.2.3.4.2.2 | EXCAVACIÓN MANUAL EN TERRENO NORMAL PARA TUBERIA H>1m | 16d | 2022-03-16 | 2022-04-02 | 160FS-5d | 90d | 0d | 25,853.03 | 03.04.02.02 | 18 días |
| 162 | 1.2.3.4.2.3 | REFINE, NIVELACION Y CONFORMACION DE FONDOS DE ZANJA | 11d | 2022-03-26 | 2022-04-07 | 161FS-7d | 90d | 0d | 24,829.75 | 03.04.02.03 | 13 días |
| 163 | 1.2.3.4.2.4 | CAMA DE APOYO CON MATERIAL PROPIO ZARANDEADO PARA TUBERIA | 10d | 2022-04-02 | 2022-04-13 | 162FS-5d | 90d | 0d | 1,814.58 | 03.04.02.04 | 12 días |
| 164 | 1.2.3.4.2.5 | ACARREO DE TUBERIA PVC UF DE 4" - 6" | 4d | 2022-04-14 | 2022-04-18 | 163 | 100d |  | 758.82 | 03.04.02.05 | 5 días |
| 165 | 1.2.3.4.2.6 | TUBERIA PVC UF S-25 DE Ø 4" | 1d | 2022-04-14 | 2022-04-14 | 163 | 90d | 0d | 26,083.31 | 03.04.02.06 | 1 día |
| 166 | 1.2.3.4.2.7 | CODO PVC UF-S-25 Ø 6" x 45° | 1d | 2022-04-14 | 2022-04-14 | 165SS | 103d |  | 185.9 | 03.04.02.07 | 1 día |
| 167 | 1.2.3.4.2.8 | CODO PVC UF-S-25 Ø 6" x 90° | 1d | 2022-04-14 | 2022-04-14 | 165SS | 103d |  | 96.66 | 03.04.02.08 | 1 día |
| 168 | 1.2.3.4.2.9 | RELLENO Y COMPACTADO CON MATERIAL PROPIO SELECCIONADO | 7d | 2022-04-15 | 2022-04-22 | 165 | 90d | 0d | 13,555.35 | 03.04.02.09 | 8 días |
| 169 | 1.2.3.4.2.10 | RELLENO Y COMPACTADO CON MATERIAL PROPIO SIN TRATAR | 7d | 2022-04-21 | 2022-04-28 | 168FS-2d | 90d | 0d | 17,573.17 | 03.04.02.10 | 8 días |
| 170 | 1.2.3.4.2.11 | DEMOLICION DE VEREDA DE CONCRETO | 2d | 2022-03-09 | 2022-03-10 | 157 | 129d | 0d | 380.96 | 03.04.02.11 | 2 días |
| 171 | 1.2.3.4.2.12 | ELIMINACIÓN DE MATERIAL EXCEDENTE | 1d | 2022-04-29 | 2022-04-29 | 169 | 90d |  | 286.36 | 03.04.02.12 | 1 día |
| 172 | 1.2.3.4.2.13 | ELIMINACION DE MATERIAL PROVENIENTE DE DEMOLICION DE VEREDA | 4d | 2022-03-11 | 2022-03-15 | 170 | 129d |  | 1,003.7 | 03.04.02.13 | 5 días |

| ID | WBS | Task | Duration | Start | Finish | Predecessors | Total slack | Free slack | Cost | Text1 | Text2 |
| --- | --- | --- | --- | --- | --- | --- | --- | --- | --- | --- | --- |
| 173 | 1.2.3.4.3 | **CAMARAS DE INSPECCIÓN** | 11d | 2022-03-10 | 2022-03-22 |  | 146d |  | 9,955.85 | 03.04.03 | 13 días |
| 174 | 1.2.3.4.3.1 | SOLADO f´c=100 Kg/cm2 E=10 CM | 1d | 2022-03-12 | 2022-03-12 | 175 | 123d | 0d | 1,411.38 | 03.04.03.01 | 1 día |
| 175 | 1.2.3.4.3.2 | ACARREO DE MEZCLA DE CONCRETO | 2d | 2022-03-10 | 2022-03-11 | 158 | 123d | 0d | 858.87 | 03.04.03.02 | 2 días |
| 176 | 1.2.3.4.3.3 | ENCOFRADO Y DESENCOFRADO EN CAJAS DE REGISTRO | 5d | 2022-03-14 | 2022-03-18 | 174 | 123d | 0d | 4,643.33 | 03.04.03.03 | 5 días |
| 177 | 1.2.3.4.3.4 | ACABADO PULIDO | 3d | 2022-03-19 | 2022-03-22 | 176 | 123d |  | 3,042.27 | 03.04.03.04 | 4 días |
| 178 | 1.2.3.4.4 | **ESTRUCTURAS** | 6d | 2022-03-14 | 2022-03-19 |  | 148d |  | 15,822.4 | 03.04.04 | 6 días |
| 179 | 1.2.3.4.4.1 | COLUMNETAS DE CONCRETO f'c=175 Kg/cm2 PARA MONTANTES.. | 6d | 2022-03-14 | 2022-03-19 | 174 | 125d |  | 15,822.4 | 03.04.04.01 | 6 días |
| 180 | 1.2.4 | **INSTALACIONES ELECTRICAS** | 173d | 2022-02-19 | 2022-09-08 | 16SS | 0d |  | 432,553.99 | 04 | 202 días |
| 181 | 1.2.4.1 | **ALIMENTADORES** | 28d | 2022-02-19 | 2022-03-23 |  | 141d | 0d | 74,548.89 | 04.01 | 33 días |
| 182 | 1.2.4.1.1 | **INTERRUPTORES TERMOMAGNETICOS** | 7d | 2022-02-19 | 2022-02-26 |  | 141d |  | 1,067.5 | 04.01.01 | 8 días |
| 183 | 1.2.4.1.1.1 | INTERRUPTOR TERMOMAGNETICO DE 2x25 A, 220V | 3d | 2022-02-19 | 2022-02-22 |  | 118d | 0d | 1,067.5 | 04.01.01.01 | 4 días |
| 184 | 1.2.4.1.1.2 | INTERRUPTOR TERMOMAGNETICO DE 3x25 A, 220V | 2d | 2022-02-23 | 2022-02-24 | 183 | 139d | 0d |  | 04.01.01.02 | 2 días |
| 185 | 1.2.4.1.1.3 | INTERRUPTOR TERMOMAGNETICO DE 3x400 A, 220V | 2d | 2022-02-25 | 2022-02-26 | 184 | 139d |  |  | 04.01.01.03 | 2 días |
| 186 | 1.2.4.1.2 | **DUCTOS Y TUBERIAS** | 10d | 2022-02-23 | 2022-03-05 |  | 141d | 0d | 10,124.17 | 04.01.02 | 11 días |
| 187 | 1.2.4.1.2.1 | TENDIDO DE TUBERIA PVC SAP 1 1/2" | 5d | 2022-02-23 | 2022-02-28 | 183 | 118d | 0d | 4,860.36 | 04.01.02.01 | 6 días |
| 188 | 1.2.4.1.2.2 | CURVA PVC SAP 1 1/2" | 3d | 2022-03-01 | 2022-03-03 | 187 | 120d |  | 828.8 | 04.01.02.02 | 3 días |
| 189 | 1.2.4.1.2.3 | CONECTOR PVC SAP 1 1/2" | 2d | 2022-03-01 | 2022-03-02 | 187 | 121d |  | 392 | 04.01.02.03 | 2 días |
| 190 | 1.2.4.1.2.4 | TENDIDO DE TUBERIA PVC SAP 2" | 3d | 2022-03-01 | 2022-03-03 | 187 | 118d | 0d | 3,198.55 | 04.01.02.04 | 3 días |
| 191 | 1.2.4.1.2.5 | CURVA PVC SAP 2" | 1d | 2022-03-04 | 2022-03-04 | 190 | 119d |  | 90 | 04.01.02.05 | 1 día |
| 192 | 1.2.4.1.2.6 | CONECTOR PVC SAP 2" | 2d | 2022-03-04 | 2022-03-05 | 190 | 118d |  | 754.46 | 04.01.02.06 | 2 días |
| 193 | 1.2.4.1.3 | **CONDUCTORES Y CABLES** | 15d | 2022-03-07 | 2022-03-23 |  | 141d |  | 63,357.22 | 04.01.03 | 17 días |
| 194 | 1.2.4.1.3.1 | TENDIDO DE CABLE N2XOH DE 3X10mm2 | 3d | 2022-03-07 | 2022-03-09 | 186 | 118d | 0d | 10,888.4 | 04.01.03.01 | 3 días |
| 195 | 1.2.4.1.3.2 | TENDIDO DE CABLE N2XOH DE 3x16mm² | 2d | 2022-03-07 | 2022-03-08 | 194SS | 118d | 0d | 6,933.84 | 04.01.03.02 | 2 días |
| 196 | 1.2.4.1.3.3 | TENDIDO DE CABLE N2XOH DE 3X25mm2 | 1d | 2022-03-09 | 2022-03-09 | 195 | 118d | 0d | 4,014.08 | 04.01.03.03 | 1 día |
| 197 | 1.2.4.1.3.4 | TENDIDO DE CABLE N2XOH DE 3X35mm2 | 3d | 2022-03-09 | 2022-03-11 | 196SS | 118d | 0d | 20,910 | 04.01.03.04 | 3 días |
| 198 | 1.2.4.1.3.5 | TENDIDO DE CABLE N2XOH DE 3X70mm2 | 1d | 2022-03-12 | 2022-03-12 | 197 | 118d | 0d | 14,673.6 | 04.01.03.05 | 1 día |
| 199 | 1.2.4.1.3.6 | TENDIDO DE CABLE N2XOH DE 3X95mm2 | 1d | 2022-03-12 | 2022-03-12 | 198SS | 118d | 0d | 3,129.6 | 04.01.03.06 | 1 día |
| 200 | 1.2.4.1.3.7 | CABLE DE COBRE DESNUDO DE 50MM2 | 1d | 2022-03-14 | 2022-03-14 | 199 | 118d | 0d | 2,807.7 | 04.01.03.07 | 1 día |
| 201 | 1.2.4.1.3.8 | TENDIDO DE CABLE N2XOH DE 3X4mm2 | 3d | 2022-03-15 | 2022-03-17 | 200 | 118d | 0d |  | 04.01.03.08 | 3 días |
| 202 | 1.2.4.1.3.9 | TENDIDO DE CABLE N2XOH DE 3X6mm2 | 3d | 2022-03-18 | 2022-03-21 | 201 | 118d | 0d |  | 04.01.03.09 | 4 días |
| 203 | 1.2.4.1.3.10 | CABLE DE COBRE DESNUDO DE 3X25mm2 | 2d | 2022-03-22 | 2022-03-23 | 202 | 118d |  |  | 04.01.03.10 | 2 días |

| ID | WBS | Task | Duration | Start | Finish | Predecessors | Total slack | Free slack | Constraint | Cost | Text1 | Text2 |
| --- | --- | --- | --- | --- | --- | --- | --- | --- | --- | --- | --- | --- |
| 204 | 1.2.4.2 | **ALUMBRADO** | 170d | 2022-02-23 | 2022-09-08 |  | 0d |  |  | 358,005.1 | 04.02 | 198 días |
| 205 | 1.2.4.2.1 | **DUCTOS Y TUBERIAS** | 6d | 2022-02-23 | 2022-03-01 |  | 164d |  |  | 13,156.78 | 04.02.01 | 7 días |
| 206 | 1.2.4.2.1.1 | CURVA METALICO EMT 19mm | 1d | 2022-03-01 | 2022-03-01 | 207 | 141d |  |  | 539.44 | 04.02.01.01 | 1 día |
| 207 | 1.2.4.2.1.2 | CONECTOR RECTO METALICO EMT 19 mm | 5d | 2022-02-23 | 2022-02-28 | 183 | 141d | 0d |  | 11,379.48 | 04.02.01.02 | 6 días |
| 208 | 1.2.4.2.1.3 | COPLE METALICO EMT 19 mm | 1d | 2022-03-01 | 2022-03-01 | 207 | 141d |  |  | 647.78 | 04.02.01.03 | 1 día |
| 209 | 1.2.4.2.1.4 | TENDIDO DE TUBERIA EMT 1 1/2" | 1d | 2022-03-01 | 2022-03-01 | 207 | 141d |  |  | 590.08 | 04.02.01.04 | 1 día |
| 210 | 1.2.4.2.2 | **ARTEFACTOS DE ILUMINACION** | 145d | 2022-03-24 | 2022-09-08 |  | 0d |  |  | 344,848.32 | 04.02.02 | 169 días |
| 211 | 1.2.4.2.2.1 | **PARA TECHO** | 48d | 2022-07-04 | 2022-08-27 |  | 10d |  |  | 330,802.6 | 04.02.02.01 | 55 días |
| 212 | 1.2.4.2.2.1.1 | LUMINARIA PANEL LED RECTANGULAR 1200X300mm | 9d | 2022-07-04 | 2022-07-13 |  | 10d | 0d | start no earlier than 2022-07-04 | 103,127.3 | 04.02.02.01.01 | 10 días |
| 213 | 1.2.4.2.2.1.2 | TUBO LED T5/T8 10W CON CARCASA, ACCESORIOS DE CONEXIÓN Y FIJACION | 3d | 2022-07-04 | 2022-07-06 | 212SS | 10d | 0d |  | 4,442.31 | 04.02.02.01.02 | 3 días |
| 214 | 1.2.4.2.2.1.3 | TUBO LED T5/T8 18W CON CARCASA, ACCESORIOS DE CONEXIÓN Y FIJACION | 5d | 2022-07-07 | 2022-07-12 | 213 | 10d | 0d |  | 7,624.26 | 04.02.02.01.03 | 6 días |
| 215 | 1.2.4.2.2.1.4 | LUMINARIA PANEL LED PARA ADOSAR CIRCULAR DE 40 W | 3d | 2022-07-07 | 2022-07-09 | 214SS | 10d | 0d |  | 5,128.2 | 04.02.02.01.04 | 3 días |
| 216 | 1.2.4.2.2.1.5 | LUMINARIA PANEL LED PARA ADOSAR CIRCULAR DE 24 W | 5d | 2022-07-11 | 2022-07-15 | 215 | 10d | 0d |  | 12,589.92 | 04.02.02.01.05 | 5 días |
| 217 | 1.2.4.2.2.1.6 | LUMINARIA PANEL LED PARA ADOSAR CIRCULAR DE 18 W | 8d | 2022-07-11 | 2022-07-19 | 216SS | 10d | 0d |  | 33,056.25 | 04.02.02.01.06 | 9 días |
| 218 | 1.2.4.2.2.1.7 | LUMINARIA PANEL LED PARA ADOSAR CIRCULAR DE 12 W | 2d | 2022-07-20 | 2022-07-21 | 217 | 10d | 0d |  | 889.8 | 04.02.02.01.07 | 2 días |
| 219 | 1.2.4.2.2.1.8 | LUMINARIA TIPO DICROICO DE 10W | 5d | 2022-07-20 | 2022-07-25 | 218SS | 10d | 0d |  | 9,677.3 | 04.02.02.01.08 | 6 días |
| 220 | 1.2.4.2.2.1.9 | FAROLA LED ORNAMENTAL 60W 6500K,IP65 | 4d | 2022-07-26 | 2022-07-29 | 219 | 10d | 0d |  | 32,985.2 | 04.02.02.01.09 | 4 días |
| 221 | 1.2.4.2.2.1.10 | DOWNLUGTH LED PARA ADOSAR Y/O EMPOTRAR 20W | 2d | 2022-07-26 | 2022-07-27 | 220SS | 10d | 0d |  | 2,086.24 | 04.02.02.01.10 | 2 días |
| 222 | 1.2.4.2.2.1.11 | REFLECTOR LED 50W | 3d | 2022-07-28 | 2022-07-30 | 221 | 10d | 0d |  | 4,534.88 | 04.02.02.01.11 | 3 días |
| 223 | 1.2.4.2.2.1.12 | MARCO PARA PANEL LED DE 30X120CM | 7d | 2022-07-28 | 2022-08-04 | 222SS | 10d | 0d |  | 30,717.2 | 04.02.02.01.12 | 8 días |
| 224 | 1.2.4.2.2.1.13 | APLIQUE LED 20W IP 65 | 1d | 2022-08-05 | 2022-08-05 | 223 | 10d | 0d |  | 1,255.95 | 04.02.02.01.13 | 1 día |
| 225 | 1.2.4.2.2.1.14 | LUZ DE EMERGENCIA TIPO LED | 4d | 2022-08-06 | 2022-08-10 | 224 | 10d | 0d |  | 50,172 | 04.02.02.01.14 | 5 días |
| 226 | 1.2.4.2.2.1.15 | LUMINARIA REFLECTOR LED DE 200W | 3d | 2022-08-11 | 2022-08-13 | 225 | 10d | 0d |  | 26,534.8 | 04.02.02.01.15 | 3 días |
| 227 | 1.2.4.2.2.1.16 | REFLECTOR LED DE 10W INTERPERIE | 1d | 2022-08-15 | 2022-08-15 | 226 | 10d | 0d |  | 585.2 | 04.02.02.01.16 | 1 día |
| 228 | 1.2.4.2.2.1.17 | APLIQUE DUAL DE MURO DUAL LED 2X11 W | 2d | 2022-08-16 | 2022-08-17 | 227 | 10d | 0d |  | 3,755.8 | 04.02.02.01.17 | 2 días |
| 229 | 1.2.4.2.2.1.18 | LUZ GUIA LED 2W PARA EMPOTRAR | 2d | 2022-08-18 | 2022-08-19 | 228 | 10d | 0d |  | 1,639.99 | 04.02.02.01.18 | 2 días |
| 230 | 1.2.4.2.2.1.19 | LUMINARIA PANEL LED PARA ADOSAR CIRCULAR DE 36 W | 4d | 2022-08-20 | 2022-08-24 | 229 | 10d | 0d |  |  | 04.02.02.01.19 | 5 días |
| 231 | 1.2.4.2.2.1.20 | LUMINARIA PANEL LED PARA ADOSAR CIRCULAR DE 30 W | 3d | 2022-08-25 | 2022-08-27 | 230 | 10d |  |  |  | 04.02.02.01.20 | 3 días |
| 232 | 1.2.4.2.2.1.21 | ARTEFACTO LED LAMPARA DE RESPALDO DE EMERGENCIA PARA GABINETE | 2d | 2022-08-11 | 2022-08-12 | 225 | 16d |  |  |  | 04.02.02.01.21 | 2 días |

| ID | WBS | Task | Duration | Start | Finish | Predecessors | Total slack | Free slack | Constraint | Cost | Text1 | Text2 |
| --- | --- | --- | --- | --- | --- | --- | --- | --- | --- | --- | --- | --- |
| 233 | 1.2.4.2.2.2 | **INTERRUPTORES** | 4d | 2022-03-24 | 2022-03-28 | 181 | 141d |  |  | 2,420.72 | 04.02.02.02 | 5 días |
| 234 | 1.2.4.2.2.2.1 | SALIDA PARA INTERRUPTOR CONMUTADO SIMPLE, INCLUYE INSTALACION | 2d | 2022-03-24 | 2022-03-25 |  | 118d | 0d |  | 1,163.2 | 04.02.02.02.01 | 2 días |
| 235 | 1.2.4.2.2.2.2 | SALIDA PARA INTERRUPTOR CONMUTADO DOBLE, INCLUYE INSTALACION | 2d | 2022-03-26 | 2022-03-28 | 234 | 118d |  |  | 1,257.52 | 04.02.02.02.02 | 3 días |
| 236 | 1.2.4.2.2.3 | **PRUEBAS ELECTRICAS** | 10d | 2022-08-29 | 2022-09-08 |  | 0d |  |  | 11,625 | 04.02.02.03 | 11 días |
| 237 | 1.2.4.2.2.3.1 | MEDICION DE LUMINOCIDAD | 2d | 2022-08-29 | 2022-08-30 |  | 0d |  | start no earlier than 2022-08-29 | 1,800 | 04.02.02.03.01 | 2 días |
| 238 | 1.2.4.2.2.3.2 | MEDICION DE CONTINUIDAD | 3d | 2022-08-31 | 2022-09-02 | 237 | 0d |  |  | 1,875 | 04.02.02.03.02 | 3 días |
| 239 | 1.2.4.2.2.3.3 | MEDION DE RESISTENCIA DE PUESTA A TIERRA | 2d | 2022-09-03 | 2022-09-05 | 238 | 0d |  |  | 1,575 | 04.02.02.03.03 | 3 días |
| 240 | 1.2.4.2.2.3.4 | MEDICION DE AISLAMIENTO | 3d | 2022-09-06 | 2022-09-08 | 239 | 0d |  |  | 6,375 | 04.02.02.03.04 | 3 días |
| 241 | 1.2.4.3 | **SISTEMA DE UTILIZACION EN MEDIA TENSION** | 55d | 2022-06-10 | 2022-08-12 |  |  |  |  |  | 04.03 | 64 días |
| 242 | 1.2.4.3.1 | **SISTEMA DE UTILIZACION DE USO EXCLUSIVO EN MEDIA TENSION 13.2KV TRIFASICO** | 55d | 2022-06-10 | 2022-08-12 |  | 23d |  |  |  | 04.03.01 | 64 días |
| 243 | 1.2.4.3.1.1 | SIMINISTRO DE MEDIA TENSION | 50d | 2022-06-10 | 2022-08-06 |  | 16d | 0d |  |  | 04.03.01.01 | 58 días |
| 244 | 1.2.4.3.1.2 | MONTAJE ELECTROMECANICO DE MEDIA TENSION | 5d | 2022-08-08 | 2022-08-12 | 243 | 16d |  |  |  | 04.03.01.02 | 5 días |
| 245 | 1.2.5 | **INSTALACIONES ESPECIALES** | 50d | 2022-02-19 | 2022-04-18 | 16SS | 123d |  |  | 509,616.56 | 05 | 59 días |
| 246 | 1.2.5.1 | **ACOMETIDAS Y BACKBONES** | 12d | 2022-02-19 | 2022-03-04 |  | 123d |  |  | 93,298.71 | 05.01 | 14 días |
| 247 | 1.2.5.1.1 | **RACK DE COMUNICACIONES** | 12d | 2022-02-19 | 2022-03-04 |  | 123d |  |  | 93,298.71 | 05.01.01 | 14 días |
| 248 | 1.2.5.1.1.1 | GABINETE DE PISO PARA COMUNICACIONES 42UR | 4d | 2022-02-19 | 2022-02-23 |  | 100d | 0d |  | 18,491.7 | 05.01.01.01 | 5 días |
| 249 | 1.2.5.1.1.2 | GABINETE DE PISO PARA COMUNICACIONES 12UR | 5d | 2022-02-24 | 2022-03-01 | 248 | 124d | 0d |  | 56,562.15 | 05.01.01.02 | 6 días |
| 250 | 1.2.5.1.1.3 | GABINETE DE PARED PARA COMUNICACIONES 12UR | 3d | 2022-03-02 | 2022-03-04 | 249 | 124d | 0d |  | 18,244.86 | 05.01.01.03 | 3 días |
| 251 | 1.2.5.2 | **EQUIPOS Y ACCESORIOS** | 22d | 2022-02-24 | 2022-03-21 |  | 123d |  |  | 220,173.95 | 05.02 | 26 días |
| 252 | 1.2.5.2.1 | SWITCH CORE DE 24 PUERTOS RJ45 10/100/1000Mbps | 1d | 2022-03-05 | 2022-03-05 | 250 | 124d | 0d |  | 15,201.62 | 05.02.01 | 1 día |
| 253 | 1.2.5.2.2 | SWITCH POE DE 24 PUERTOS RJ45 10/100/1000Mbps | 2d | 2022-03-07 | 2022-03-08 | 252 | 124d | 0d |  | 57,514.2 | 05.02.02 | 2 días |
| 254 | 1.2.5.2.3 | CENTRAL TELEFÓNICA IP HÍBRIDA | 1d | 2022-03-09 | 2022-03-09 | 253 | 124d | 0d |  | 5,810.81 | 05.02.03 | 1 día |
| 255 | 1.2.5.2.4 | CENTRAL DE DETECCIÓN Y ALARMA CONTRAINCENDIO | 1d | 2022-03-10 | 2022-03-10 | 254 | 124d | 0d |  | 11,624.04 | 05.02.04 | 1 día |
| 256 | 1.2.5.2.5 | ROUTER CLOUD CORE | 1d | 2022-03-11 | 2022-03-11 | 255 | 124d | 0d |  | 7,262.02 | 05.02.05 | 1 día |

| ID | WBS | Task | Duration | Start | Finish | Predecessors | Total slack | Free slack | Cost | Text1 | Text2 |
| --- | --- | --- | --- | --- | --- | --- | --- | --- | --- | --- | --- |
| 257 | 1.2.5.2.6 | **CONFIGURACION DE EQUIPOS** | 22d | 2022-02-24 | 2022-03-21 |  | 123d |  | 122,761.26 | 05.02.06 | 26 días |
| 258 | 1.2.5.2.6.1 | CONFIGURACION DE SISTEMA DE DETECCION DE HUMO | 5d | 2022-03-12 | 2022-03-17 | 256 | 124d | 0d | 6,601.1 | 05.02.06.01 | 6 días |
| 259 | 1.2.5.2.6.2 | CONFIGURACION DE TELEFONO IP | 2d | 2022-03-18 | 2022-03-19 | 258 | 124d | 0d | 869.76 | 05.02.06.02 | 2 días |
| 260 | 1.2.5.2.6.3 | CONFIGURACION DE SISTEMA DE CENTRAL TELEFONICA | 1d | 2022-03-21 | 2022-03-21 | 259 | 124d |  | 271.85 | 05.02.06.03 | 1 día |
| 261 | 1.2.5.2.6.4 | **CONDUCTORES DE COMUNICACIONES** | 22d | 2022-02-24 | 2022-03-21 |  | 123d |  | 115,018.55 | 05.02.06.04 | 26 días |
| 262 | 1.2.5.2.6.4.1 | TENDIDO DE CABLE FPL ANTIFLAMA 2X16AWG LSZH | 11d | 2022-02-24 | 2022-03-08 | 248 | 100d | 0d | 49,821.75 | 05.02.06.04.01 | 13 días |
| 263 | 1.2.5.2.6.4.2 | TENDIDO DE CABLE FTP CAT 6A | 11d | 2022-03-09 | 2022-03-21 | 262 | 100d | 0d | 65,196.8 | 05.02.06.04.02 | 13 días |
| 264 | 1.2.5.3 | **RED DE VOZ, VIDEO Y DATOS** | 50d | 2022-02-19 | 2022-04-18 |  | 123d |  | 196,143.9 | 05.03 | 59 días |
| 265 | 1.2.5.3.1 | **PATCH PANEL** | 3d | 2022-03-22 | 2022-03-24 |  | 123d |  | 5,111.37 | 05.03.01 | 3 días |
| 266 | 1.2.5.3.1.1 | PATCH PANEL 24 PUERTOS CAT6 | 3d | 2022-03-22 | 2022-03-24 | 263 | 100d | 0d | 5,111.37 | 05.03.01.01 | 3 días |
| 267 | 1.2.5.3.2 | **EQUIPOS Y ACCESORIOS** | 21d | 2022-03-25 | 2022-04-18 |  | 123d |  | 185,653.53 | 05.03.02 | 25 días |
| 268 | 1.2.5.3.2.1 | ACCESS POINT WI-FI 4 POE OMNIDIRECCIONALES | 5d | 2022-03-25 | 2022-03-30 | 266 | 100d | 0d | 80,898 | 05.03.02.01 | 6 días |
| 269 | 1.2.5.3.2.2 | CÁMARAS IP DOMO PoE IP67 IK10 | 5d | 2022-03-31 | 2022-04-05 | 268 | 100d | 0d | 32,001.48 | 05.03.02.02 | 6 días |
| 270 | 1.2.5.3.2.3 | CÁMARAS IP PTZ DOMO PoE IP67 IK10 | 5d | 2022-03-31 | 2022-04-05 | 269SS | 100d | 0d | 16,608.1 | 05.03.02.03 | 6 días |
| 271 | 1.2.5.3.2.4 | CÁMARAS IP WIFI IP67 IK10 | 1d | 2022-04-06 | 2022-04-06 | 270 | 100d | 0d | 2,304.05 | 05.03.02.04 | 1 día |
| 272 | 1.2.5.3.2.5 | CÁMARAS INTERIOR IP WIFI IP67 IK10 | 4d | 2022-04-06 | 2022-04-09 | 271SS | 100d | 0d | 15,246.66 | 05.03.02.05 | 4 días |
| 273 | 1.2.5.3.2.6 | GRABADOR NVR POE | 1d | 2022-04-11 | 2022-04-11 | 272 | 100d | 0d | 6,543.78 | 05.03.02.06 | 1 día |
| 274 | 1.2.5.3.2.7 | TELÉFONO IP POE DE ESCRITORIO | 6d | 2022-04-12 | 2022-04-18 | 273 | 100d | 0d | 22,644.3 | 05.03.02.07 | 7 días |
| 275 | 1.2.5.3.2.8 | TELÉFONO IP POE DE SMART | 2d | 2022-04-12 | 2022-04-13 | 274SS | 104d |  | 9,407.16 | 05.03.02.08 | 2 días |
| 276 | 1.2.5.3.3 | **OBRAS PROVICIONALES** | 5d | 2022-02-19 | 2022-02-24 |  | 168d |  | 5,379 | 05.03.03 | 6 días |
| 277 | 1.2.5.3.3.1 | ARMADO DE ANDAMIO PARA INSTALACIONES | 5d | 2022-02-19 | 2022-02-24 | 248SS | 145d |  | 5,379 | 05.03.03.01 | 6 días |
