# PROGRAMACION GANTT FINAL

Schedule from MS Project, 2018-12-03 to 2019-03-10, costs in S.

## Calendars

- Estándar: Mon-Sun 07:00-12:00.

## Resources

| Resource | Group | Rate | Cost per use |
| --- | --- | --- | --- |
| OPERADOR DE EQUIPO LIVIANO | Mano de Obra | 19.59 |  |
| OPERADOR DE EQUIPO PESADO | Mano de Obra | 24.79 |  |
| TOPOGRAFO | Mano de Obra | 24.79 |  |
| OPERARIO | Mano de Obra | 24.79 |  |
| OFICIAL | Mano de Obra | 19.59 |  |
| PEON | Mano de Obra | 17.71 |  |
| PINTURA ESMALTE | Material |  | 45 |
| ALAMBRE NEGRO RECOCIDO # 8 | Material |  | 6.6 |
| ALAMBRE NEGRO RECOCIDO N°16 | Material |  | 6.5 |
| CLAVOS CON CABEZA DE 2 1/2" 3" 4" | Material |  | 6.7 |
| PERNO AUTORROSCANTE DE 1/16" X 3" | Material |  | 3.29 |
| VARILLA DE ACERO 1/2" X 6 MTS. | Material |  | 25 |
| ACERO CORRUGADO FÝ=4200KG/CM2 GRADO 60 | Material |  | 5.4 |
| ARENA FINA | Material |  | 80 |
| PIEDRA CHANCADA DE 1/2" | Material |  | 65 |
| AGUA | Material |  | 5 |
| ARENA GRUESA | Material |  | 65 |
| GRAVA 3/4 - 1/2 PULGADA | Material |  | 60 |
| CABLE N2XOH 10 MM2. | Material |  | 9 |
| BEBEDEROS | Material |  | 1500 |
| GABINETE DE COMUNICACIONES DE 12 RU | Material |  | 1400 |
| GABINETE DE PARED PARA COMUNICACIONES DE 12 RU | Material |  | 670 |
| CABLE DE COBRE TEMPLE BLANDO 50MM2 | Material |  | 30 |
| TUBERIA EMT CONDUIT DE 1 1/2" | Material |  | 25 |
| UNION EMT CONDUIT DE 1 1/2" | Material |  | 11 |
| ABRASADERA PESADA 2 OREJAS DE 1 1/2" | Material |  | 2.5 |
| REFLECTOR LED DE 50W | Material |  | 225.07 |
| REFLECTOR LED DE 10W INTERPERIE | Material |  | 45.43 |
| LUMINARIA PANEL LED PARA ADOSAR CIRCULAR DE 40 W | Material |  | 155.43 |
| TUBO LED T5/T8 10W CON CARCASA ACCESORIOS DE CONEXIÓN Y FIJACION | Material |  | 136.81 |
| TUBO LED T5/T8 18W CON CARCASA ACCESORIOS DE CONEXIÓN Y FIJACION | Material |  | 153.81 |
| LUMINARIA PANEL LED PARA ADOSAR CIRCULAR DE 24 W | Material |  | 84.69 |
| LUMINARIA PANEL LED PARA ADOSAR CIRCULAR DE 18 W | Material |  | 60.43 |
| LUMINARIA PANEL LED PARA ADOSAR CIRCULAR DE 12 W | Material |  | 46.43 |
| LUMINARIA TIPO DICROICO DE 10W | Material |  | 40.43 |
| LUMINARIA REFLECTOR LED DE 200W | Material |  | 1292.08 |
| INTERRUPTOR TERMOMAGNETIC DE 2x25Ax220V | Material |  | 89.72 |
| CAJA GALV. RECTANGULAR PESADA DE 4"x2"x2 1/4" | Material |  | 6.56 |
| LUMINARIA PANEL LED RECTANGULAR 1200X300 mm DE 34W | Material |  | 223.81 |
| APLIQUE LED 20W IP 65 | Material |  | 104.53 |
| LUZ DE EMERGENCIA TIPO LED | Material |  | 394.76 |
| LUZ GUIA LED 2W | Material |  | 69.56 |
| APLIQUE DUAL DE MURO DUAL LED 2X11 W | Material |  | 160.07 |
| INTERRUPTOR DE TRES VIAS 1 GOLPE | Material |  | 18 |
| INTERRUPTOR DE TRES VIAS 2 GOLPES | Material |  | 17 |
| VINILICO SPC DE 8CM | Material |  | 30 |
| LADRILLO PASTELERO 24X 24X3 CM | Material |  | 3 |
| LADRILLO KK TIPO IV 24x13x09cm | Material |  | 1.6 |
| CABLE N2XOH 25 mm2 | Material |  | 17.98 |
| CABLE N2XOH 35 mm2 | Material |  | 24.8 |
| CABLE N2XOH 70 mm2 | Material |  | 46.34 |
| CABLE N2XOH 95 mm2 | Material |  | 63.5 |
| CURVA METALICA D TIPO EMT DE 19MM | Material |  | 4.33 |
| ABRAZADERA METALICA DE 19MM | Material |  | 0.8 |
| COPLE METALICO TIPO EMT 19mm | Material |  | 12 |
| CABLE N2XOH 16 mm2 | Material |  | 12 |
| FAROLA LED ORNAMENTAL 60W 6500K IP65 | Material |  | 797.72 |
| DOWNLUGTH LED PARA ADOSAR Y/O EMPOTRAR 20W | Material |  | 95 |
| CEMENTO PORTLAND TIPO I | Material |  | 25.77 |
| PORCELANATO DE 60 X 60 CM CELIMA | Material |  | 56.42 |
| TORNILLO DE FIERRO AUTOPERFORANTE 1 IN X 6 IN X 5 IN PUNTA BROCA | Material |  | 67.01 |
| TORNILLO DE FIERRO AUTOPERFORANTE 1/4 IN X 5 IN | Material |  | 0.07 |
| OCRE | Material |  | 11.5 |
| CORDEL | Material |  | 0.12 |
| CAL (BOLSA x 20 kg) | Material |  | 13.87 |
| PEGAMENTO EN POLVO EXTRAFUERTE P/CERAMICOS Y PORCELANATOS (BOLSA 25Kg) | Material |  | 38.04 |
| ADHESIVO Y SELLADOR DE JUNTAS 600 ML | Material |  | 35.67 |
| CABLE FPL ANTIFLAMA 2X16AWG LSZH | Material |  | 2.07 |
| CENTRAL DE ALARMA CONTRA INCENDIOS | Material |  | 5750 |
| CENTRAL TELEFONICA | Material |  | 5750 |
| PEGAMENTO PARA TUBERIA PVC | Material |  | 183.16 |
| SOLDADURA CELLOCORD 6011 | Material |  | 19.83 |
| FRAGUA | Material |  | 7.98 |
| GABINETE COMUNICACIONES DE 42 RU | Material |  | 4800 |
| FRENO HIDRAULICO | Material |  | 680 |
| FRENO HIDRAULICO AEREO | Material |  | 200 |
| LIJA DE MADERA | Material |  | 3 |
| SWITCH DE 24 PUERTOS RJ45 10/100/1000Mbps | Material |  | 7540 |
| PATCH PANEL DE 24 PUERTOS CAT6 | Material |  | 120 |
| UPS RACKEABLE 19" 1500VA | Material |  | 2150 |
| CÁMARAS IP DOMO PoE IP67 IK10 | Material |  | 440 |
| TELÉFONO IP DE ESCRITORIO | Material |  | 694 |
| BARBIQUEJO DE NAILON | Material |  | 3.5 |
| GUANTES DE HILO | Material |  | 9.03 |
| GUANTES DE JEBE | Material |  | 10.37 |
| GUANTES DE BADANA | Material |  | 9.38 |
| TRAJE TYVEK | Material |  | 12 |
| PONCHO DE AGUA | Material |  | 20.63 |
| PANTALON DE TRABAJO DRILL | Material |  | 31.33 |
| POLO MANGA LARGA | Material |  | 19.77 |
| CORTAVIENTO | Material |  | 7.83 |
| CAMISA DRILL | Material |  | 30.47 |
| MANDIL DE CUERO | Material |  | 39.93 |
| BOTAS DE JEBE PUNTA ACERO | Material |  | 56.67 |
| ESCARPINES DE CUERO | Material |  | 18.9 |
| UPS RACKEABLE 19" 3000VA | Material |  | 4200 |
| SWITCH POE BORDE DE 24 PUERTOS RJ45 10/100/1000Mbps | Material |  | 2814.9 |
| ROUTER CLOUD | Material |  | 7200 |
| CÁMARAS IP PTZ PoE IP67 IK10 | Material |  | 1600 |
| CÁMARAS IP WIFI IP67 IK10 | Material |  | 400 |
| CINTA ADHESIVA DOBLE CONTACTO 2 IN X 5M | Material |  | 46.92 |
| TELÉFONO IP POE DE SMART | Material |  | 1498 |
| HORMIGON | Material |  | 60 |
| LIJA PARA MADERA | Material |  | 1 |
| NVR DE 32 CANALES | Material |  | 6500 |
| ACCES POINT INDOOR | Material |  | 1550 |
| POWER RACK | Material |  | 160 |
| MADERA TORNILLO | Material |  | 6.01 |
| MADERA PARA ANDAMIO | Material |  | 2.6 |
| MADERA TORNILLO INC.CORTE P/ENCOFRADO | Material |  | 6.01 |
| MARCO PARA PANEL LED DE 30X120CM | Material |  | 39.9 |
| ANGULAR DE 2 1/2"x2 1/2" e=2mm | Material |  | 27.06 |
| ANGULAR DE 2"x2" e=4mm | Material |  | 23.86 |
| ANGULAR T DE 2"x2" e=3mm | Material |  | 17.5 |
| ANGULAR T DE 1"x1" e=3mm | Material |  | 12.3 |
| REGLA DE ALUMINIO L=5.85m | Material |  | 140 |
| TUBO RECTANGULAR DE ALUMINIO 2"X1 1/2" X 1.5MM | Material |  | 221.01 |
| PLANCHA DE ALUMINIO COMPUESTO DE 4MM DE 1.50X5.00M | Material |  | 898.07 |
| PERFIL DE ALUMINIO 9.5mm x 25/64 in x 2.40m | Material |  | 9.3 |
| PERFIL UNIVERSAL DE ALUMINIO PARA POLICARBONATOSOLIDO | Material |  | 100 |
| PERFIL DE ALUMINIO CURVO | Material |  | 24 |
| DILUYENTE ESTANDAR (THINNER) | Material |  | 37.37 |
| BASE ANTICORROSIVA | Material |  | 37.47 |
| PINTURA DE TRAFICO | Material |  | 53.67 |
| SELLADOR | Material |  | 69.17 |
| PASTA FINA MURAL | Material |  | 38.52 |
| PINTURA SATINADO | Material |  | 98 |
| TERRAZO PREMEZCLADO | Material |  | 308.33 |
| TUBO LAC DE 10X10 CM E=4.5MM | Material |  | 473.33 |
| TUBO LAC DE 10X15CM E=4.5MM | Material |  | 815 |
| POLICARBONATO DE 6 MM | Material |  | 1750 |
| TUBO DE FIERRO NEGRO LAC DE 2 "x 2 MM. | Material |  | 46.52 |
| TUBO DE FIERRO NEGRO LAC DE 1 1/2 "x 2 MM. | Material |  | 8.51 |
| CONECTOR PVC DE Ø 20mm | Material |  | 0.35 |
| CODO PVC CLASE 10 SP DE 1" x 90° | Material |  | 5.73 |
| UNIÓN DE PVC SAP Ø 1" | Material |  | 2.47 |
| UNIÓN DE PVC SAP Ø 2" | Material |  | 3.7 |
| CODO PVC CLASE 10 SP DE 3" x 90° | Material |  | 9 |
| REDUCCIÓN DE PVC UF S-25 Ø 4" A 3" | Material |  | 18 |
| REDUCCIÓN DE PVC UF S-25 Ø 6" A 3" | Material |  | 25 |
| REDUCCIÓN DE PVC UF S-25 Ø 6" A 4" | Material |  | 42 |
| TUBO PVC SAP C-10 Ø 3" | Material |  | 96.8 |
| TUBERIA PVC SAP C-10 Ø 1" | Material |  | 29 |
| TUBO DE PVC PARA INSTALACIONES ELECTRICAS SAP 2" | Material |  | 3.19 |
| TUBO PVC UF Ø 6" | Material |  | 140.07 |
| TUBO PVC UF Ø 4" | Material |  | 103.67 |
| TUBO PVC UF Ø 16" | Material |  | 455.6 |
| TUBERIA PVC UF S-25 Ø 4" DESAGUE | Material |  | 103.67 |
| CURVA DE PVC PARA INSTALACIONES ELECTRICAS SAP 2" | Material |  | 2.31 |
| CODO PVC SAL 4"x45º | Material |  | 11.5 |
| YEE PVC SAP C-10 Ø 3" | Material |  | 15 |
| CODO PVC CLASE 10 SP Ø 3" x 45° | Material |  | 15.67 |
| CODO PVC UF S-25 4''x45° | Material |  | 21.4 |
| CODO PVC UF S-25 8''x45° | Material |  | 85 |
| CODO PVC UF S-25 10''x45° | Material |  | 93.52 |
| CODO PVC UF S-25 10''x90° | Material |  | 165 |
| YEE PVC UF S-25 Ø 4'' | Material |  | 25 |
| YEE PVC UF S-25 Ø 6'' | Material |  | 35 |
| TUBO PVC SAP (LUZ) (E/C) 1 1/2" X 3 M. | Material |  | 2.5 |
| CURVA PVC SAP LUZ 1 1/2" | Material |  | 2.2 |
| CONEXION A CAJA PVC SAP 1 1/2" | Material |  | 1.8 |
| CONECTOR RECTO METALICO EMT 19 MM | Material |  | 9.3 |
| GUANTES DE HILO NYLON | Material |  | 10.63 |
| CABLE DE RED CAT 6A | Material |  | 2.7 |
| TEMPLE 25KG | Material |  | 42 |
| CODO PVC UF S-25 6"X45º | Material |  | 25 |
| CODO PVC UF S-25 6"X90º | Material |  | 23 |
| TUBERIA DE ACERO GALVANIZADO DE 3" | Material |  | 35 |
| WINCHE ELECTRICO 3.6 HP DE DOS BALDES | Equipo | 21.25 |  |
| MEZCLADORA DE CONCRETO DE 11 P3-18 HP | Equipo | 8 |  |
| CAMION VOLQUETE 6x4 330 HP 15 M3. | Equipo | 180 |  |
| ANDAMIO METAL TABLAS-ALQUILER | Equipo | 22 |  |
| SOLDADORA | Equipo | 30 |  |
| LIMPIADOR A VAPOR H20 MOP X5 | Equipo | 15 |  |
| TALADRO ROTOMARTILLO | Equipo | 10 |  |
| CARGADOR S/LLANTAS 125 HP 2.5 YD3. | Equipo | 159.72 |  |
| RETROEXCAVADORA 62 HP 1 YD3 | Equipo | 27.79 |  |
| VIBRADOR DE CONCRETO Ø 1 3/4" 4 HP | Equipo | 6.88 |  |
| MEZCLADORA CONCRETO TROMPO 8 HP 9 P3 | Equipo | 8 |  |
| APIZONADOR 5.5HP | Equipo | 10 |  |
| ZARANDA MANUAL | Equipo | 5 |  |
| ESTACION TOTAL | Equipo | 25 |  |
| APLICADOR PARA ADHESIVO | Equipo | 31.9 |  |
| NIVEL TOPOGRAFICO | Equipo | 14.75 |  |
| CAMPANA H=0.60M | Subcontrato |  | 5500 |
| CRUZ DE ALUMINIO TEXTURIZADO EN INTERIOR Y EXTERIOR 1.80X3.00M | Subcontrato |  | 3000 |
| ESTATUA DE SANTA ROSA H=2.20 | Subcontrato |  | 5000 |
| PUERTA CORTA FUEGO (INCL. INSTALACION Y ACCESORIOS) | Subcontrato |  | 5000 |
| ESCUDO INSTITUCIONAL DE ALUMINIO | Subcontrato |  | 3000 |
| MEDICION DE MULINOCIDAD | Subcontrato |  | 45 |
| MEDICION DE CONTINUIDAD | Subcontrato |  | 25 |
| MEDICION DE RESISTENCIA DE PUESTA A TIERRA | Subcontrato |  | 105 |
| MEDICION SE AISLAMIENTO | Subcontrato |  | 85 |

## Schedule

| ID | WBS | Task | Type | Duration | Start | Finish | Predecessors | Total slack | Free slack | Cost | Text2 | Text1 |
| --- | --- | --- | --- | --- | --- | --- | --- | --- | --- | --- | --- | --- |
| 1 | 1 | **"MEJORAMIENTO DEL SERVICIO EDUCATIVO EN LA IEP N 54002 SANTA ROSA E IES SANTA ROSA DEL DISTRITO DE ABANCAY, PROVINCIA DE ABANCAY -** |  | 61d? | 2018-12-03 | 2019-03-10 |  | 0d |  | 2,324,101.1 | 98 días |  |
| 2 | 1.1 | Inicio de Obra | milestone | 0d | 2018-12-03 | 2018-12-03 |  | 61d |  |  | 0 días |  |
| 3 | 1.2 | **ADICIONAL PARTIDAS NUEVAS** |  | 61d | 2018-12-03 | 2019-03-10 |  | 0d |  | 2,324,101.1 | 98 días |  |
| 4 | 1.2.1 | **OBRAS PROVISIONALES, TRABAJOS PRELIMINARES, SEGURIDAD Y SALUD** |  | 61d | 2018-12-03 | 2019-03-10 |  | 0d |  | 286,666.14 | 98 días | 01 |
| 5 | 1.2.1.1 | **SEGURIDAD Y SALUD** |  | 29d | 2018-12-03 | 2019-01-18 |  | 0d |  | 195,380.54 | 47 días | 01.01 |
| 6 | 1.2.1.1.1 | EQUIPOS DE PROTECCIÓN INDIVIDUAL COMPLEMENTARIOS |  | 29d | 2018-12-03 | 2019-01-18 |  | 0d |  | 195,380.54 | 47 días | 01.01.01 |
| 7 | 1.2.1.2 | **OBRAS DE TRABAJOS PRELIMINARES** |  | 61d | 2018-12-03 | 2019-03-10 |  | 0d |  | 83,956.19 | 98 días | 01.02 |
| 8 | 1.2.1.2.1 | LIMPIEZA DE JUNTAS DE PORCELANATO PARA FRAGUA |  | 8d | 2019-01-02 | 2019-01-15 | 11 | 34d |  | 15,677.1 | 14 días | 01.02.01 |
| 9 | 1.2.1.2.2 | DESCASCARAMIENTO DE TARRAJEO EXISTENTE |  | 6d | 2018-12-03 | 2018-12-12 | 6SS | 34d | 0d | 9,297.17 | 10 días | 01.02.02 |
| 10 | 1.2.1.2.3 | DEMOLICION DE CONTRAPISO EXISTENTE E=5 cm |  | 5d | 2018-12-13 | 2018-12-20 | 9 | 34d | 0d | 16,206.54 | 8 días | 01.02.03 |
| 11 | 1.2.1.2.4 | ELIMINACION DE DESMONTE PROVENIENTE DE DEMOLICION |  | 8d | 2018-12-21 | 2019-01-02 | 10 | 34d | 0d | 9,068.14 | 13 días | 01.02.04 |
| 12 | 1.2.1.2.5 | LIJADO DE MURO EN PINTURA EXISTENTE |  | 20d | 2018-12-03 | 2019-01-04 | 6SS | 41d |  | 4,303.72 | 33 días | 01.02.05 |
| 13 | 1.2.1.2.6 | MONTANJE Y DESMONTAJE DE ANDAMIO PARA PINTURA EN EXTERIOR |  | 61d | 2018-12-03 | 2019-03-10 | 6SS | 0d |  | 29,403.52 | 98 días | 01.02.06 |
| 14 | 1.2.1.3 | **TRASLADO INTERNO EN OBRA** |  | 7d | 2018-12-16 | 2018-12-27 |  | 46d |  | 7,329.41 | 12 días | 01.03 |
| 15 | 1.2.1.3.1 | ACARREO DE MEZCLA DE CONCRETO |  | 7d | 2018-12-16 | 2018-12-27 | 27 | 46d |  | 7,329.41 | 12 días | 01.03.01 |
| 16 | 1.2.2 | **ARQUITECTURA** |  | 42d | 2018-12-03 | 2019-02-08 |  | 0d |  | 629,630.98 | 68 días | 02 |
| 17 | 1.2.2.1 | **MUROS Y TABIQUES** |  | 6d | 2018-12-03 | 2018-12-12 |  | 0d |  | 100,850.83 | 10 días | 02.01 |
| 18 | 1.2.2.1.1 | MURO DE ALUMINIO COMPUESTO E=15cm |  | 6d | 2018-12-03 | 2018-12-12 | 6SS | 0d |  | 100,850.83 | 10 días | 02.01.01 |
| 19 | 1.2.2.2 | **REVOQUES ENLUCIDOS Y MOLDURAS** |  | 7d | 2018-12-03 | 2018-12-14 |  | 54d |  | 28,211.09 | 12 días | 02.02 |
| 20 | 1.2.2.2.1 | TARRAJEO EN COLUMNAS CIRCULARES |  | 6d | 2018-12-03 | 2018-12-12 | 18SS | 54d | 0d | 9,065.34 | 10 días | 02.02.01 |
| 21 | 1.2.2.2.2 | SOLAQUEO EN VIGAS DE LOSA NERVADA |  | 7d | 2018-12-03 | 2018-12-14 | 20SS | 54d |  | 19,145.75 | 12 días | 02.02.02 |
| 22 | 1.2.2.3 | **PISOS Y PAVIMENTOS** |  | 6d | 2018-12-13 | 2018-12-22 |  | 0d |  | 25,848.23 | 10 días | 02.03 |
| 23 | 1.2.2.3.1 | **PISOS** |  | 4d | 2018-12-16 | 2018-12-22 |  | 0d |  | 18,351.27 | 7 días | 02.03.01 |
| 24 | 1.2.2.3.1.1 | PISO DE CEMENTO PULIDO COLOREADO |  | 2d | 2018-12-16 | 2018-12-19 | 27 | 0d |  | 8,645.73 | 4 días | 02.03.01.01 |
| 25 | 1.2.2.3.1.2 | REVESTIMIENTO DE PEDELTAL CON TERRAZO PULIDO |  | 2d | 2018-12-19 | 2018-12-22 | 24 | 0d |  | 9,705.54 | 4 días | 02.03.01.02 |

| ID | WBS | Task | Duration | Start | Finish | Predecessors | Total slack | Free slack | Cost | Text1 | Text2 |
| --- | --- | --- | --- | --- | --- | --- | --- | --- | --- | --- | --- |
| 26 | 1.2.2.3.2 | **SARDINELES** | 5d | 2018-12-13 | 2018-12-20 |  | 0d |  | 7,496.96 | 02.03.02 | 8 días |
| 27 | 1.2.2.3.2.1 | SARDINEL DE CONCRETO CON ACABADO FROTACHADO Y PINTADO DE 0.10X1.00M | 2d | 2018-12-13 | 2018-12-16 | 18 | 0d |  | 3,231.13 | 02.03.02.01 | 4 días |
| 28 | 1.2.2.3.2.2 | SARDINEL DE CONCRETO CON ACABADO FROTACHADO DE 0.10X0.60M | 2d | 2018-12-16 | 2018-12-19 | 27 | 1d | 0d | 3,492.57 | 02.03.02.02 | 4 días |
| 29 | 1.2.2.3.2.3 | SARDINEL DE CONCRETO CON ACABADO FROTACHADO DE 0.10X0.80M | 1d | 2018-12-19 | 2018-12-20 | 28 | 1d |  | 773.26 | 02.03.02.03 | 2 días |
| 30 | 1.2.2.4 | **ZOCALOS Y CONTRAZOCALOS** | 7d | 2018-12-13 | 2018-12-24 |  | 27d |  | 3,671.04 | 02.04 | 12 días |
| 31 | 1.2.2.4.1 | **CONTRAZOCALOS** | 7d | 2018-12-13 | 2018-12-24 |  | 27d |  | 3,671.04 | 02.04.01 | 12 días |
| 32 | 1.2.2.4.1.1 | CONTRAZOCALO VINILICO SPC DE 8cm | 2d | 2018-12-13 | 2018-12-16 | 18 | 27d | 0d | 2,357.27 | 02.04.01.01 | 4 días |
| 33 | 1.2.2.4.1.2 | CONTRAZOCALO SANITARIO DE CEMENTO PULIDO C/MORTERO 1:5 DE 2CM, H=10CM | 5d | 2018-12-16 | 2018-12-24 | 32 | 27d | 0d | 1,313.77 | 02.04.01.02 | 9 días |
| 34 | 1.2.2.5 | **COBERTURA** | 3d | 2018-12-24 | 2018-12-28 |  | 27d |  | 54,267.73 | 02.05 | 5 días |
| 35 | 1.2.2.5.1 | COBERTURA C/LADRILLO PASTELERO | 2d | 2018-12-24 | 2018-12-27 | 18, 33 | 27d | 0d | 5,656.34 | 02.05.01 | 4 días |
| 36 | 1.2.2.5.2 | COBERTURA DE POLICARBONATO SOLIDO Y TUBO DE ACERO LAC | 1d | 2018-12-27 | 2018-12-28 | 35 | 27d | 0d | 48,611.39 | 02.05.02 | 2 días |
| 37 | 1.2.2.6 | **CARPINTERIA METALICA Y HERRERIA** | 11d | 2018-12-29 | 2019-01-15 |  | 27d | 0d | 50,599.66 | 02.06 | 18 días |
| 38 | 1.2.2.6.1 | **CARPINTERIA DE FIERRO** | 11d | 2018-12-29 | 2019-01-15 |  | 27d |  | 50,599.66 | 02.06.01 | 18 días |
| 39 | 1.2.2.6.1.1 | SUMINISTRO E INSTALACION DE REJA DE ACERO GALVANIZADO DE 3" | 4d | 2018-12-29 | 2019-01-04 | 36 | 27d | 0d | 22,129.92 | 02.06.01.01 | 7 días |
| 40 | 1.2.2.6.1.2 | PUERTA METALICA | 4d | 2019-01-04 | 2019-01-10 | 39 | 27d | 0d | 22,249.57 | 02.06.01.02 | 7 días |
| 41 | 1.2.2.6.1.3 | PUERTA CORTAFUEGO (INCL. INSTALACION Y ACCESORIOS) | 1d | 2019-01-10 | 2019-01-12 | 40 | 27d | 0d | 5,000 | 02.06.01.03 | 3 días |
| 42 | 1.2.2.6.1.4 | VENTANA DE REJA METALICA | 2d | 2019-01-12 | 2019-01-15 | 41 | 27d |  | 1,220.17 | 02.06.01.04 | 4 días |
| 43 | 1.2.2.7 | **CERRAJERIA** | 4d | 2018-12-27 | 2019-01-02 |  | 42d |  | 21,913.78 | 02.07 | 7 días |
| 44 | 1.2.2.7.1 | FRENO HIDRAULICO DE PISO PARA MAMPARAS | 1d | 2018-12-27 | 2018-12-28 | 35 | 42d | 0d | 7,527.78 | 02.07.01 | 2 días |
| 45 | 1.2.2.7.2 | FRENO HIDRAULICO AEREO PARA PUERTAS DE MADERA | 3d | 2018-12-29 | 2019-01-02 | 44 | 42d |  | 14,386 | 02.07.02 | 5 días |
| 46 | 1.2.2.8 | **JUNTAS** | 7d | 2019-01-15 | 2019-01-26 |  | 27d |  | 33,576.73 | 02.08 | 12 días |
| 47 | 1.2.2.8.1 | SELLADO DE JUNTAS CON POLIURETANO | 7d | 2019-01-15 | 2019-01-26 | 37 | 27d |  | 33,576.73 | 02.08.01 | 12 días |
| 48 | 1.2.2.9 | **PINTURAS** | 30d | 2018-12-22 | 2019-02-08 |  | 19d |  | 196,911.94 | 02.09 | 49 días |
| 49 | 1.2.2.9.1 | EMPASTADO EN MUROS INTERIORES | 15d | 2018-12-22 | 2019-01-15 | 23 | 19d | 0d | 53,082.54 | 02.09.01 | 25 días |
| 50 | 1.2.2.9.2 | EMPASTADO EN MUROS EXTERIORES | 9d | 2018-12-27 | 2019-01-10 | 49FS-12d | 19d | 0d | 15,038.16 | 02.09.02 | 15 días |
| 51 | 1.2.2.9.3 | EMPASTADO DE SUPERF. COLUMNAS INCL. ARISTAS | 15d | 2019-01-02 | 2019-01-26 | 50FS-5d | 19d | 0d | 49,029.66 | 02.09.03 | 25 días |
| 52 | 1.2.2.9.4 | EMPASTADO DE SUPERF. VIGAS INCL. ARISTAS | 8d | 2019-01-07 | 2019-01-20 | 51FS-12d | 19d | 0d | 21,235.33 | 02.09.04 | 14 días |
| 53 | 1.2.2.9.5 | EMPASTADO EN VESTIDURA DE DERRAMES | 5d | 2019-01-14 | 2019-01-21 | 52FS-4d | 19d | 0d | 8,855.09 | 02.09.05 | 8 días |
| 54 | 1.2.2.9.6 | EMPASTADO EN CIELORRASOS | 16d | 2019-01-14 | 2019-02-08 | 53SS | 19d |  | 49,671.16 | 02.09.06 | 26 días |

| ID | WBS | Task | Duration | Start | Finish | Predecessors | Total slack | Free slack | Cost | Text1 | Text2 |
| --- | --- | --- | --- | --- | --- | --- | --- | --- | --- | --- | --- |
| 55 | 1.2.2.10 | **OTROS** | 25d | 2018-12-16 | 2019-01-25 |  | 28d |  | 113,779.95 | 02.10 | 41 días |
| 56 | 1.2.2.10.1 | PERFIL DE ALUMINIO CURVO EN ZOCALOS CONTRAZOCALOS Y MESAS | 11d | 2018-12-16 | 2019-01-02 | 32 | 28d | 0d | 67,130.73 | 02.10.01 | 18 días |
| 57 | 1.2.2.10.2 | CANTONERA DE ALUMINIO PARA GRADAS | 3d | 2019-01-02 | 2019-01-07 | 56 | 28d | 0d | 7,115.36 | 02.10.02 | 6 días |
| 58 | 1.2.2.10.3 | ESCUDO INSTITUCIONAL DE ALUMINIO. | 1d | 2019-01-07 | 2019-01-09 | 57 | 28d | 0d | 3,000 | 02.10.03 | 3 días |
| 59 | 1.2.2.10.4 | PINTURA SATINADA PARA MURAL | 6d | 2019-01-09 | 2019-01-18 | 58 | 28d | 0d | 20,033.86 | 02.10.04 | 10 días |
| 60 | 1.2.2.10.5 | CAMPANA H=0.60M | 1d | 2019-01-18 | 2019-01-20 | 59 | 28d | 0d | 5,500 | 02.10.05 | 3 días |
| 61 | 1.2.2.10.6 | CRUZ DE ALUMINIO TEXTURIZADO EN INTERIOR Y EXTERIOR 1.80X3.00M | 2d | 2019-01-20 | 2019-01-23 | 60 | 28d | 0d | 6,000 | 02.10.06 | 4 días |
| 62 | 1.2.2.10.7 | ESTATUA DE SANTA ROSA H=2.20 | 1d | 2019-01-23 | 2019-01-25 | 61 | 28d |  | 5,000 | 02.10.07 | 3 días |
| 63 | 1.2.3 | **INSTALACIONES SANITARIAS** | 49d | 2018-12-22 | 2019-03-10 |  | 0d |  | 458,877.43 | 03 | 79 días |
| 64 | 1.2.3.1 | **APARATOS SANITARIOS Y ACCESORIOS** | 2d | 2018-12-24 | 2018-12-27 |  | 46d |  | 18,380.04 | 03.01 | 4 días |
| 65 | 1.2.3.1.1 | **SUMINISTRO DE ACCESORIOS SANITARIOS** | 2d | 2018-12-24 | 2018-12-27 |  | 46d |  | 18,380.04 | 03.01.01 | 4 días |
| 66 | 1.2.3.1.1.1 | MODULO DE BEBEDERO DE AGUA | 2d | 2018-12-24 | 2018-12-27 | 69 | 46d |  | 18,380.04 | 03.01.01.01 | 4 días |
| 67 | 1.2.3.2 | **SISTEMA DE AGUA FRIA REPOSICION** | 16d | 2018-12-22 | 2019-01-17 |  | 0d |  | 6,957.1 | 03.02 | 27 días |
| 68 | 1.2.3.2.1 | **TRABAJOS PRELIMINARES** | 2d | 2018-12-22 | 2018-12-25 |  | 0d |  | 210.21 | 03.02.01 | 4 días |
| 69 | 1.2.3.2.1.1 | LIMPIEZA DE TERRENO MANUAL | 1d | 2018-12-22 | 2018-12-24 | 22 | 0d |  | 104.91 | 03.02.01.01 | 3 días |
| 70 | 1.2.3.2.1.2 | TRAZO Y REPLANTEO PRELIMINAR.. | 1d | 2018-12-24 | 2018-12-25 | 69 | 33d | 0d | 105.3 | 03.02.01.02 | 2 días |
| 71 | 1.2.3.2.2 | **REMOCIONES** | 1d | 2018-12-24 | 2018-12-25 |  | 46d |  | 506.87 | 03.02.02 | 2 días |
| 72 | 1.2.3.2.2.1 | DEMOLICIÓN DE PISO DE CONCRETO | 1d | 2018-12-24 | 2018-12-25 | 69 | 46d | 0d | 506.87 | 03.02.02.01 | 2 días |
| 73 | 1.2.3.2.3 | **ELIMINACION DE MATERIAL PROVENIENTE DE DEMOLICION** | 1d | 2018-12-25 | 2018-12-27 |  | 46d |  | 166.77 | 03.02.03 | 3 días |
| 74 | 1.2.3.2.3.1 | ELIMINACION DE DESMONTE PROVENIENTE DE DEMOLICIONES C/EQUIPO | 1d | 2018-12-25 | 2018-12-27 | 72 | 46d |  | 166.77 | 03.02.03.01 | 3 días |
| 75 | 1.2.3.2.4 | **MOVIMIENTO DE TIERRAS** | 14d | 2018-12-25 | 2019-01-17 |  | 33d |  | 3,364.07 | 03.02.04 | 24 días |
| 76 | 1.2.3.2.4.1 | EXCAVACIÓN MANUAL EN TERRENO NORMAL PARA TUBERIAS | 3d | 2018-12-25 | 2018-12-30 | 70 | 33d | 0d | 1,050.84 | 03.02.04.01 | 6 días |
| 77 | 1.2.3.2.4.2 | RELLENO Y COMPACTADO CON MATERIAL SELECCIONADO PARA INSTALACION DE TUBERIA | 3d | 2019-01-06 | 2019-01-10 | 83 | 33d | 0d | 892.17 | 03.02.04.02 | 5 días |
| 78 | 1.2.3.2.4.3 | REFINE Y NIVELACION DE ZANJA EN TERRENO NORMAL PARA TUBERIAS | 2d | 2018-12-30 | 2019-01-02 | 76 | 33d | 0d | 210.87 | 03.02.04.03 | 4 días |
| 79 | 1.2.3.2.4.4 | ACARREO MANUAL DE TUBERÍAS(D=60m) | 1d | 2019-01-02 | 2019-01-04 | 78 | 33d | 0d | 14.91 | 03.02.04.04 | 3 días |
| 80 | 1.2.3.2.4.5 | ACARREO MANUAL INTERNO DE MATERIAL EXCEDENTE PROVENIENTE DE EXCAVACIONES | 3d | 2019-01-10 | 2019-01-15 | 77 | 33d | 0d | 394.53 | 03.02.04.05 | 6 días |
| 81 | 1.2.3.2.4.6 | ELIMINACIÓN DE MATERIAL EXCEDENTE | 1d | 2019-01-15 | 2019-01-17 | 80 | 33d |  | 800.75 | 03.02.04.06 | 3 días |

| ID | WBS | Task | Duration | Start | Finish | Predecessors | Total slack | Free slack | Cost | Text1 | Text2 |
| --- | --- | --- | --- | --- | --- | --- | --- | --- | --- | --- | --- |
| 82 | 1.2.3.2.5 | **RED DE DISTRIBUCION** | 1d | 2019-01-04 | 2019-01-05 |  | 33d |  | 2,170 | 03.02.05 | 2 días |
| 83 | 1.2.3.2.5.1 | SUMINISTRO E INSTALACION DE TUBERIA PVC SAP C-10 Ø 1" | 1d | 2019-01-04 | 2019-01-05 | 79 | 33d | 0d | 2,170 | 03.02.05.01 | 2 días |
| 84 | 1.2.3.2.6 | **ACCESORIOS DE REDES DE AGUA** | 1d | 2019-01-06 | 2019-01-07 | 83 | 39d |  | 539.18 | 03.02.06 | 2 días |
| 85 | 1.2.3.2.6.1 | CODO DE PVC Ø 1" x 90° SP | 1d | 2019-01-06 | 2019-01-07 |  | 39d |  | 311.55 | 03.02.06.01 | 2 días |
| 86 | 1.2.3.2.6.2 | UNIÓN PVC SAP Ø 1" | 1d | 2019-01-06 | 2019-01-07 |  | 39d |  | 227.63 | 03.02.06.02 | 2 días |
| 87 | 1.2.3.3 | **SISTEMA DE DRENAJE PLUVIAL** | 48d | 2018-12-24 | 2019-03-10 |  | 0d |  | 279,147.31 | 03.03 | 77 días |
| 88 | 1.2.3.3.1 | **TRABAJOS PRELIMINARES** | 2d | 2018-12-24 | 2018-12-27 |  | 0d |  | 2,275.55 | 03.03.01 | 4 días |
| 89 | 1.2.3.3.1.1 | LIMPIEZA DE TERRENO MANUAL | 1d | 2018-12-24 | 2018-12-25 | 69 | 0d |  | 1,135.66 | 03.03.01.01 | 2 días |
| 90 | 1.2.3.3.1.2 | TRAZO Y REPLANTEO PRELIMINAR.. | 1d | 2018-12-25 | 2018-12-27 | 89 | 0d |  | 1,139.89 | 03.03.01.02 | 3 días |
| 91 | 1.2.3.3.2 | **REMOCIONES** | 4d | 2018-12-25 | 2019-01-01 |  | 43d |  | 1,527.84 | 03.03.02 | 8 días |
| 92 | 1.2.3.3.2.1 | DEMOLICIÒN DE CANAL EXISTENTE | 2d | 2018-12-25 | 2018-12-28 | 89 | 43d | 0d | 324.72 | 03.03.02.01 | 4 días |
| 93 | 1.2.3.3.2.2 | DEMOLICIÓN DE PISO DE CONCRETO | 2d | 2018-12-29 | 2019-01-01 | 92 | 43d |  | 1,203.12 | 03.03.02.02 | 4 días |
| 94 | 1.2.3.3.3 | **REPOSICIONES** | 2d | 2019-03-03 | 2019-03-06 |  | 3d |  | 6,506.28 | 03.03.03 | 4 días |
| 95 | 1.2.3.3.3.1 | REPOSICIÓN DE PISO DE CONCRETO ACABADO FROTACHADO | 1d | 2019-03-03 | 2019-03-04 | 136 | 3d | 0d | 5,043.6 | 03.03.03.01 | 2 días |
| 96 | 1.2.3.3.3.2 | REPOSICIÓN DE PISO CON PORCELANATO 60X60 CM | 1d | 2019-03-04 | 2019-03-06 | 95 | 3d |  | 1,462.68 | 03.03.03.02 | 3 días |
| 97 | 1.2.3.3.4 | **ELIMINACIÒN DE MATERIAL PROVENIENTE DE DEMOLICIÒN** | 1d | 2018-12-29 | 2018-12-30 |  | 44d |  | 921.21 | 03.03.04 | 2 días |
| 98 | 1.2.3.3.4.1 | ELIMINACION DE DESMONTE PROVENIENTE DE DEMOLICIONES C/EQUIPO | 1d | 2018-12-29 | 2018-12-30 | 92 | 44d |  | 921.21 | 03.03.04.01 | 2 días |
| 99 | 1.2.3.3.5 | **MOVIMIENTO DE TIERRAS** | 46d | 2018-12-27 | 2019-03-10 |  | 0d |  | 66,950.07 | 03.03.05 | 74 días |
| 100 | 1.2.3.3.5.1 | EXCAVACIÓN MANUAL EN TERRENO SEMIRROCOSO PARA CANALES | 4d | 2018-12-27 | 2019-01-02 | 90 | 0d |  | 4,521.95 | 03.03.05.01 | 7 días |
| 101 | 1.2.3.3.5.2 | EXCAVACIÓN MANUAL EN TERRENO SEMIRROCOSO PARA CAJAS DE INSPECCIÓN | 5d | 2019-01-02 | 2019-01-10 | 100 | 37d |  | 1,870.11 | 03.03.05.02 | 9 días |
| 102 | 1.2.3.3.5.3 | EXCAVACION CON MAQUINARIA EN TERRENO NORMAL >4M | 3d | 2019-01-02 | 2019-01-07 | 100 | 39d |  | 3,810.24 | 03.03.05.03 | 6 días |
| 103 | 1.2.3.3.5.4 | COMPACTADO DE SUBRASANTE DE CAJA Y CANALES | 3d | 2019-01-25 | 2019-01-29 | 106 | 0d |  | 2,728.45 | 03.03.05.04 | 5 días |
| 104 | 1.2.3.3.5.5 | RELLENO Y COMPACTADO CON MATERIAL SELECCIONADO PARA INSTALACION DE RED COLECTORA | 5d | 2019-02-21 | 2019-03-01 | 135 | 0d |  | 10,065.45 | 03.03.05.05 | 9 días |
| 105 | 1.2.3.3.5.6 | REFINE Y NIVELACION DE ZANJA EN TERRENO NORMAL PARA TUBERÍAS | 5d | 2019-01-02 | 2019-01-10 | 100 | 0d |  | 5,058.52 | 03.03.05.06 | 9 días |
| 106 | 1.2.3.3.5.7 | REFINE Y NIVELACION DE ZANJA EN TERRENO NORMAL PARA CANALES | 12d | 2019-01-06 | 2019-01-25 | 105FS-3d | 0d |  | 20,833.57 | 03.03.05.07 | 20 días |
| 107 | 1.2.3.3.5.8 | ACARREO MANUAL DE TUBERÍAS(D=60m) | 9d | 2019-01-30 | 2019-02-13 | 103 | 16d |  | 9,440.3 | 03.03.05.08 | 15 días |
| 108 | 1.2.3.3.5.9 | ACARREO DE MEZCLA DE CONCRETO PARA CAJAS Y CANALES | 4d | 2019-01-30 | 2019-02-05 | 112SS | 21d |  | 1,376.76 | 03.03.05.09 | 7 días |
| 109 | 1.2.3.3.5.10 | ACARREO MANUAL INTERNO DE MATERIAL EXCEDENTE PROVENIENTE DE EXCAVACIONES | 7d | 2019-02-26 | 2019-03-09 | 104FS-2d | 0d |  | 2,779.05 | 03.03.05.10 | 12 días |
| 110 | 1.2.3.3.5.11 | ELIMINACIÓN DE MATERIAL EXCEDENTE | 1d | 2019-03-09 | 2019-03-10 | 109 | 0d |  | 4,465.67 | 03.03.05.11 | 2 días |

| ID | WBS | Task | Duration | Start | Finish | Predecessors | Total slack | Free slack | Cost | Text1 | Text2 |
| --- | --- | --- | --- | --- | --- | --- | --- | --- | --- | --- | --- |
| 111 | 1.2.3.3.6 | **CONCRETO SIMPLE** | 3d | 2019-01-30 | 2019-02-03 |  | 0d |  | 4,447.73 | 03.03.06 | 5 días |
| 112 | 1.2.3.3.6.1 | SOLADO EN CANAL DE CONCRETO EN PISO f'c= 100 kg/cm2 E=10CM | 2d | 2019-01-30 | 2019-02-02 | 103 | 0d |  | 3,282.5 | 03.03.06.01 | 4 días |
| 113 | 1.2.3.3.6.2 | SOLADO PARA CAJAS DE INSPECCIÒN f'c= 100 kg/cm2 E=10CM | 1d | 2019-02-02 | 2019-02-03 | 112 | 14d | 0d | 1,165.23 | 03.03.06.02 | 2 días |
| 114 | 1.2.3.3.7 | **RED DE RECOLECCIÓN** | 18d | 2019-02-02 | 2019-03-02 |  | 0d |  | 175,376.63 | 03.03.07 | 29 días |
| 115 | 1.2.3.3.7.1 | CANAL DE CONCRETO ARMADO EN PISO A=30 CM H=VARIABLE, E=15cm | 4d | 2019-02-02 | 2019-02-08 | 112 | 0d |  | 10,667.27 | 03.03.07.01 | 7 días |
| 116 | 1.2.3.3.7.2 | CANAL DE CONCRETO ARMADO EN PISO A=34CM H=VARIABLE, E=15cm | 4d | 2019-02-08 | 2019-02-14 | 115 | 0d |  | 4,834.62 | 03.03.07.02 | 7 días |
| 117 | 1.2.3.3.7.3 | REJILLA METALICA TPO IV A=50cm | 2d | 2019-02-15 | 2019-02-18 | 116 | 8d | 0d | 6,164.42 | 03.03.07.03 | 4 días |
| 118 | 1.2.3.3.7.4 | TAPA DE CONCRETO 70x70x5cm f'c=175kg/cm2 | 1d | 2019-02-08 | 2019-02-10 | 130 | 17d | 0d | 580.69 | 03.03.07.04 | 3 días |
| 119 | 1.2.3.3.7.5 | TAPA DE CONCRETO 100x50x5cm f'c=175kg/cm2 | 1d | 2019-02-10 | 2019-02-11 | 118 | 17d |  | 474.11 | 03.03.07.05 | 2 días |
| 120 | 1.2.3.3.7.6 | TAPA DE REJILLA 30X30cm | 1d | 2019-02-18 | 2019-02-19 | 117 | 8d | 0d | 14,314.8 | 03.03.07.06 | 2 días |
| 121 | 1.2.3.3.7.7 | TAPA DE REJILLA 70X50cm | 1d | 2019-02-19 | 2019-02-21 | 120 | 8d | 0d | 1,085.34 | 03.03.07.07 | 3 días |
| 122 | 1.2.3.3.7.8 | TAPA DE REJILLA 70X70cm | 1d | 2019-02-21 | 2019-02-22 | 121 | 8d | 0d | 420.53 | 03.03.07.08 | 2 días |
| 123 | 1.2.3.3.7.9 | TAPA DE REJILLA 70X110cm | 1d | 2019-02-23 | 2019-02-24 | 122 | 8d | 0d | 666.18 | 03.03.07.09 | 2 días |
| 124 | 1.2.3.3.7.10 | TAPA DE REJILLA 140X570cm | 1d | 2019-02-24 | 2019-02-26 | 123 | 8d |  | 3,111.66 | 03.03.07.10 | 3 días |
| 125 | 1.2.3.3.7.11 | TUBERÍA PVC SAP C-10 Ø DE 3" MONTANTE | 2d | 2019-02-08 | 2019-02-11 | 115 | 13d | 0d | 12,036.68 | 03.03.07.11 | 4 días |
| 126 | 1.2.3.3.7.12 | RED COLECTORA TUBERÍA PVC UF Ø DE 4" | 1d | 2019-02-11 | 2019-02-13 | 125 | 13d | 0d | 6,750.56 | 03.03.07.12 | 3 días |
| 127 | 1.2.3.3.7.13 | RED COLECTORA TUBERÍA PVC UF Ø DE 6" | 1d | 2019-02-13 | 2019-02-14 | 126 | 13d | 0d | 11,515.59 | 03.03.07.13 | 2 días |
| 128 | 1.2.3.3.7.14 | RED COLECTORA TUBERÍA PVC UF Ø DE 16" | 2d | 2019-02-15 | 2019-02-18 | 127 | 13d |  | 60,810 | 03.03.07.14 | 4 días |
| 129 | 1.2.3.3.7.15 | CAJAS DE INSPECCIÓN TIPO II A=0.20M L=0.20M | 1d | 2019-02-03 | 2019-02-05 | 113 | 14d | 0d | 778.35 | 03.03.07.15 | 3 días |
| 130 | 1.2.3.3.7.16 | CAJAS DE INSPECCIÓN TIPO II A=0.60M L=0.40M H=VARIABLE | 2d | 2019-02-05 | 2019-02-08 | 129 | 14d | 0d | 5,160.76 | 03.03.07.16 | 4 días |
| 131 | 1.2.3.3.7.17 | CAJAS DE INSPECCIÓN TIPO II A=0.60M L=0.60M H=VARIABLE | 2d | 2019-02-08 | 2019-02-11 | 130 | 14d | 0d | 7,675.44 | 03.03.07.17 | 4 días |
| 132 | 1.2.3.3.7.18 | CAJAS DE INSPECCIÓN TIPO II A=0.60M L=0.90M H=VARIABLE | 1d | 2019-02-11 | 2019-02-13 | 131 | 14d | 0d | 5,310.55 | 03.03.07.18 | 3 días |
| 133 | 1.2.3.3.7.19 | CAJAS DE INSPECCIÓN TIPO II A=0.60M L=1.20M H=VARIABLE | 1d | 2019-02-13 | 2019-02-14 | 132 | 14d | 0d | 770.04 | 03.03.07.19 | 2 días |
| 134 | 1.2.3.3.7.20 | CAJAS DE INSPECCIÓN TIPO VIIA DESARENADOR A=1.30 L=5.50M H=VARIABLE | 1d | 2019-02-15 | 2019-02-16 | 133 | 14d |  | 9,052.7 | 03.03.07.20 | 2 días |
| 135 | 1.2.3.3.7.21 | TARRAJEO EN SECCION DE CAJAS INCL. ARISTAS | 4d | 2019-02-15 | 2019-02-21 | 116 | 0d |  | 4,218.02 | 03.03.07.21 | 7 días |
| 136 | 1.2.3.3.7.22 | TARRAJEO EN SECCION DE CANALES INCL. ARISTAS | 6d | 2019-02-21 | 2019-03-02 | 135 | 3d | 0d | 8,978.32 | 03.03.07.22 | 10 días |

| ID | WBS | Task | Duration | Start | Finish | Predecessors | Total slack | Free slack | Cost | Text1 | Text2 |
| --- | --- | --- | --- | --- | --- | --- | --- | --- | --- | --- | --- |
| 137 | 1.2.3.3.8 | **ACCESORIOS** | 2d | 2019-02-11 | 2019-02-14 | 125 | 15d |  | 7,218.14 | 03.03.08 | 4 días |
| 138 | 1.2.3.3.8.1 | CODO PVC SAP C-10 Ø 3" x 45° | 2d | 2019-02-11 | 2019-02-14 |  | 15d |  | 3,386.4 | 03.03.08.01 | 4 días |
| 139 | 1.2.3.3.8.2 | CODO PVC SAP C-10 Ø 4" x 45° | 1d | 2019-02-11 | 2019-02-13 |  | 16d |  | 1,370.85 | 03.03.08.02 | 3 días |
| 140 | 1.2.3.3.8.3 | CODO PVC SAP C-10 Ø 3" x 90° | 1d | 2019-02-11 | 2019-02-13 |  | 16d |  | 43.1 | 03.03.08.03 | 3 días |
| 141 | 1.2.3.3.8.4 | CODO PVC UF S-25 Ø 4" x 45° | 1d | 2019-02-11 | 2019-02-13 |  | 16d |  | 169.75 | 03.03.08.04 | 3 días |
| 142 | 1.2.3.3.8.5 | CODO PVC UF-S-25 Ø 6" x 45° | 1d | 2019-02-11 | 2019-02-13 |  | 16d |  | 260.26 | 03.03.08.05 | 3 días |
| 143 | 1.2.3.3.8.6 | CODO PVC UF-S-25 Ø 8" x 45° | 1d | 2019-02-11 | 2019-02-13 |  | 16d |  | 390.2 | 03.03.08.06 | 3 días |
| 144 | 1.2.3.3.8.7 | CODO PVC UF-S-25 Ø 10" x 45° | 1d | 2019-02-11 | 2019-02-13 |  | 16d |  | 106.07 | 03.03.08.07 | 3 días |
| 145 | 1.2.3.3.8.8 | CODO DE PVC UF S-25 Ø 6" x 90° | 1d | 2019-02-11 | 2019-02-13 |  | 16d |  | 72.56 | 03.03.08.08 | 3 días |
| 146 | 1.2.3.3.8.9 | CODO PVC UF-S-25 Ø 10" x 90° | 1d | 2019-02-11 | 2019-02-13 |  | 16d |  | 177.55 | 03.03.08.09 | 3 días |
| 147 | 1.2.3.3.8.10 | YEE DE PVC SAP C-10 Ø 3" | 1d | 2019-02-11 | 2019-02-13 |  | 16d |  | 120.16 | 03.03.08.10 | 3 días |
| 148 | 1.2.3.3.8.11 | YEE DE PVC UF S-25 Ø 4" | 1d | 2019-02-11 | 2019-02-13 |  | 16d |  | 150.2 | 03.03.08.11 | 3 días |
| 149 | 1.2.3.3.8.12 | YEE DE PVC UF S-25Ø 6" | 1d | 2019-02-11 | 2019-02-13 |  | 16d |  | 434.52 | 03.03.08.12 | 3 días |
| 150 | 1.2.3.3.8.13 | REDUCCION DE PVC UF S-25 Ø 4" A 3" | 1d | 2019-02-11 | 2019-02-13 |  | 16d |  | 165.2 | 03.03.08.13 | 3 días |
| 151 | 1.2.3.3.8.14 | REDUCCION DE PVC UF S-25 Ø 6" A 3" | 1d | 2019-02-11 | 2019-02-13 |  | 16d |  | 200.2 | 03.03.08.14 | 3 días |
| 152 | 1.2.3.3.8.15 | REDUCCION DE PVC UF S-25 Ø 6" A 4" | 1d | 2019-02-11 | 2019-02-13 |  | 16d |  | 171.12 | 03.03.08.15 | 3 días |
| 153 | 1.2.3.3.9 | **POZO DE PERCOLACION** | 2d | 2019-03-03 | 2019-03-06 |  | 3d |  | 13,923.86 | 03.03.09 | 4 días |
| 154 | 1.2.3.3.9.1 | POZO DE PERCOLACION | 2d | 2019-03-03 | 2019-03-06 | 136 | 3d |  | 13,923.86 | 03.03.09.01 | 4 días |
| 155 | 1.2.3.4 | **SISTEMA DE DESAGUE Y VENTILACION** | 46d | 2018-12-25 | 2019-03-09 |  | 1d |  | 154,392.98 | 03.04 | 75 días |
| 156 | 1.2.3.4.1 | **TRABAJOS PRELIMINARES** | 2d | 2018-12-25 | 2018-12-28 |  | 1d |  | 2,309.94 | 03.04.01 | 4 días |
| 157 | 1.2.3.4.1.1 | LIMPIEZA DE TERRENO MANUAL | 1d | 2018-12-25 | 2018-12-27 | 89 | 1d | 0d | 1,152.83 | 03.04.01.01 | 3 días |
| 158 | 1.2.3.4.1.2 | TRAZO Y REPLANTEO PRELIMINAR | 1d | 2018-12-27 | 2018-12-28 | 157 | 1d | 0d | 1,157.11 | 03.04.01.02 | 2 días |
| 159 | 1.2.3.4.2 | **MOVIMIENTO DE TIERRAS** | 45d | 2018-12-27 | 2019-03-09 |  | 1d |  | 126,304.79 | 03.04.02 | 73 días |
| 160 | 1.2.3.4.2.1 | EXCAVACIÓN MANUAL EN TERRENO NORMAL PARA TUBERIA H<1m | 10d | 2018-12-29 | 2019-01-13 | 158 | 1d | 0d | 13,883.2 | 03.04.02.01 | 16 días |
| 161 | 1.2.3.4.2.2 | EXCAVACIÓN MANUAL EN TERRENO NORMAL PARA TUBERIA H>1m | 16d | 2019-01-06 | 2019-01-31 | 160FS-5d | 1d | 0d | 25,853.03 | 03.04.02.02 | 26 días |
| 162 | 1.2.3.4.2.3 | REFINE, NIVELACION Y CONFORMACION DE FONDOS DE ZANJA | 11d | 2019-01-20 | 2019-02-06 | 161FS-7d | 1d | 0d | 24,829.75 | 03.04.02.03 | 18 días |
| 163 | 1.2.3.4.2.4 | CAMA DE APOYO CON MATERIAL PROPIO ZARANDEADO PARA TUBERIA | 10d | 2019-01-30 | 2019-02-14 | 162FS-5d | 1d | 0d | 1,814.58 | 03.04.02.04 | 16 días |
| 164 | 1.2.3.4.2.5 | ACARREO DE TUBERIA PVC UF DE 4" - 6" | 4d | 2019-02-15 | 2019-02-21 | 163 | 11d |  | 758.82 | 03.04.02.05 | 7 días |
| 165 | 1.2.3.4.2.6 | TUBERIA PVC UF S-25 DE Ø 4" | 1d | 2019-02-15 | 2019-02-16 | 163 | 1d | 0d | 26,083.31 | 03.04.02.06 | 2 días |
| 166 | 1.2.3.4.2.7 | CODO PVC UF-S-25 Ø 6" x 45° | 1d | 2019-02-15 | 2019-02-16 | 165SS | 14d |  | 185.9 | 03.04.02.07 | 2 días |
| 167 | 1.2.3.4.2.8 | CODO PVC UF-S-25 Ø 6" x 90° | 1d | 2019-02-15 | 2019-02-16 | 165SS | 14d |  | 96.66 | 03.04.02.08 | 2 días |
| 168 | 1.2.3.4.2.9 | RELLENO Y COMPACTADO CON MATERIAL PROPIO SELECCIONADO | 7d | 2019-02-16 | 2019-02-27 | 165 | 1d | 0d | 13,555.35 | 03.04.02.09 | 12 días |
| 169 | 1.2.3.4.2.10 | RELLENO Y COMPACTADO CON MATERIAL PROPIO SIN TRATAR | 7d | 2019-02-24 | 2019-03-07 | 168FS-2d | 1d | 0d | 17,573.17 | 03.04.02.10 | 12 días |
| 170 | 1.2.3.4.2.11 | DEMOLICION DE VEREDA DE CONCRETO | 2d | 2018-12-27 | 2018-12-30 | 157 | 40d | 0d | 380.96 | 03.04.02.11 | 4 días |
| 171 | 1.2.3.4.2.12 | ELIMINACIÓN DE MATERIAL EXCEDENTE | 1d | 2019-03-07 | 2019-03-09 | 169 | 1d |  | 286.36 | 03.04.02.12 | 3 días |
| 172 | 1.2.3.4.2.13 | ELIMINACION DE MATERIAL PROVENIENTE DE DEMOLICION DE VEREDA | 4d | 2018-12-30 | 2019-01-05 | 170 | 40d |  | 1,003.7 | 03.04.02.13 | 7 días |

| ID | WBS | Task | Duration | Start | Finish | Predecessors | Total slack | Free slack | Cost | Text1 | Text2 |
| --- | --- | --- | --- | --- | --- | --- | --- | --- | --- | --- | --- |
| 173 | 1.2.3.4.3 | **CAMARAS DE INSPECCIÓN** | 11d | 2018-12-29 | 2019-01-15 |  | 34d |  | 9,955.85 | 03.04.03 | 18 días |
| 174 | 1.2.3.4.3.1 | SOLADO f´c=100 Kg/cm2 E=10 CM | 1d | 2019-01-01 | 2019-01-02 | 175 | 34d | 0d | 1,411.38 | 03.04.03.01 | 2 días |
| 175 | 1.2.3.4.3.2 | ACARREO DE MEZCLA DE CONCRETO | 2d | 2018-12-29 | 2019-01-01 | 158 | 34d | 0d | 858.87 | 03.04.03.02 | 4 días |
| 176 | 1.2.3.4.3.3 | ENCOFRADO Y DESENCOFRADO EN CAJAS DE REGISTRO | 5d | 2019-01-02 | 2019-01-10 | 174 | 34d | 0d | 4,643.33 | 03.04.03.03 | 9 días |
| 177 | 1.2.3.4.3.4 | ACABADO PULIDO | 3d | 2019-01-10 | 2019-01-15 | 176 | 34d |  | 3,042.27 | 03.04.03.04 | 6 días |
| 178 | 1.2.3.4.4 | **ESTRUCTURAS** | 6d | 2019-01-02 | 2019-01-12 |  | 36d |  | 15,822.4 | 03.04.04 | 11 días |
| 179 | 1.2.3.4.4.1 | COLUMNETAS DE CONCRETO f'c=175 Kg/cm2 PARA MONTANTES.. | 6d | 2019-01-02 | 2019-01-12 | 174 | 36d |  | 15,822.4 | 03.04.04.01 | 11 días |
| 180 | 1.2.4 | **INSTALACIONES ELECTRICAS** | 58d | 2018-12-03 | 2019-03-06 | 16SS | 3d |  | 432,553.99 | 04 | 94 días |
| 181 | 1.2.4.1 | **ALIMENTADORES** | 18d | 2018-12-03 | 2019-01-01 |  | 3d | 0d | 74,548.89 | 04.01 | 30 días |
| 182 | 1.2.4.1.1 | **INTERRUPTORES TERMOMAGNETICOS** | 1d | 2018-12-03 | 2018-12-04 |  | 3d |  | 1,067.5 | 04.01.01 | 2 días |
| 183 | 1.2.4.1.1.1 | INTERRUPTOR TERMOMAGNETICO DE 2x25 A, 220V | 1d | 2018-12-03 | 2018-12-04 |  | 3d | 0d | 1,067.5 | 04.01.01.01 | 2 días |
| 184 | 1.2.4.1.2 | **DUCTOS Y TUBERIAS** | 10d | 2018-12-05 | 2018-12-20 |  | 39d | 0d | 10,124.17 | 04.01.02 | 16 días |
| 185 | 1.2.4.1.2.1 | TENDIDO DE TUBERIA PVC SAP 1 1/2" | 5d | 2018-12-05 | 2018-12-12 | 183 | 39d | 0d | 4,860.36 | 04.01.02.01 | 8 días |
| 186 | 1.2.4.1.2.2 | CURVA PVC SAP 1 1/2" | 3d | 2018-12-13 | 2018-12-17 | 185 | 41d |  | 828.8 | 04.01.02.02 | 5 días |
| 187 | 1.2.4.1.2.3 | CONECTOR PVC SAP 1 1/2" | 2d | 2018-12-13 | 2018-12-16 | 185 | 42d |  | 392 | 04.01.02.03 | 4 días |
| 188 | 1.2.4.1.2.4 | TENDIDO DE TUBERIA PVC SAP 2" | 3d | 2018-12-13 | 2018-12-17 | 185 | 39d | 0d | 3,198.55 | 04.01.02.04 | 5 días |
| 189 | 1.2.4.1.2.5 | CURVA PVC SAP 2" | 1d | 2018-12-17 | 2018-12-19 | 188 | 40d |  | 90 | 04.01.02.05 | 3 días |
| 190 | 1.2.4.1.2.6 | CONECTOR PVC SAP 2" | 2d | 2018-12-17 | 2018-12-20 | 188 | 39d |  | 754.46 | 04.01.02.06 | 4 días |
| 191 | 1.2.4.1.3 | **CONDUCTORES Y CABLES** | 7d | 2018-12-21 | 2019-01-01 |  | 39d |  | 63,357.22 | 04.01.03 | 12 días |
| 192 | 1.2.4.1.3.1 | TENDIDO DE CABLE N2XOH DE 3X10mm2 | 3d | 2018-12-21 | 2018-12-25 | 184 | 39d | 0d | 10,888.4 | 04.01.03.01 | 5 días |
| 193 | 1.2.4.1.3.2 | TENDIDO DE CABLE N2XOH DE 3x16mm² | 2d | 2018-12-21 | 2018-12-24 | 192SS | 39d | 0d | 6,933.84 | 04.01.03.02 | 4 días |
| 194 | 1.2.4.1.3.3 | TENDIDO DE CABLE N2XOH DE 3X25mm2 | 1d | 2018-12-24 | 2018-12-25 | 193 | 39d | 0d | 4,014.08 | 04.01.03.03 | 2 días |
| 195 | 1.2.4.1.3.4 | TENDIDO DE CABLE N2XOH DE 3X35mm2 | 3d | 2018-12-24 | 2018-12-28 | 194SS | 39d | 0d | 20,910 | 04.01.03.04 | 5 días |
| 196 | 1.2.4.1.3.5 | TENDIDO DE CABLE N2XOH DE 3X70mm2 | 1d | 2018-12-29 | 2018-12-30 | 195 | 39d | 0d | 14,673.6 | 04.01.03.05 | 2 días |
| 197 | 1.2.4.1.3.6 | TENDIDO DE CABLE N2XOH DE 3X95mm2 | 1d | 2018-12-29 | 2018-12-30 | 196SS | 39d | 0d | 3,129.6 | 04.01.03.06 | 2 días |
| 198 | 1.2.4.1.3.7 | CABLE DE COBRE DESNUDO DE 50MM2 | 1d | 2018-12-30 | 2019-01-01 | 197 | 39d |  | 2,807.7 | 04.01.03.07 | 3 días |

| ID | WBS | Task | Duration | Start | Finish | Predecessors | Total slack | Free slack | Cost | Text1 | Text2 |
| --- | --- | --- | --- | --- | --- | --- | --- | --- | --- | --- | --- |
| 199 | 1.2.4.2 | **ALUMBRADO** | 57d | 2018-12-05 | 2019-03-06 |  | 3d |  | 358,005.1 | 04.02 | 92 días |
| 200 | 1.2.4.2.1 | **DUCTOS Y TUBERIAS** | 6d | 2018-12-05 | 2018-12-14 |  | 3d |  | 13,156.78 | 04.02.01 | 10 días |
| 201 | 1.2.4.2.1.1 | CURVA METALICO EMT 19mm | 1d | 2018-12-13 | 2018-12-14 | 202 | 54d |  | 539.44 | 04.02.01.01 | 2 días |
| 202 | 1.2.4.2.1.2 | CONECTOR RECTO METALICO EMT 19 mm | 5d | 2018-12-05 | 2018-12-12 | 183 | 3d | 0d | 11,379.48 | 04.02.01.02 | 8 días |
| 203 | 1.2.4.2.1.3 | COPLE METALICO EMT 19 mm | 1d | 2018-12-13 | 2018-12-14 | 202 | 54d |  | 647.78 | 04.02.01.03 | 2 días |
| 204 | 1.2.4.2.1.4 | TENDIDO DE TUBERIA EMT 1 1/2" | 1d | 2018-12-13 | 2018-12-14 | 202 | 3d | 0d | 590.08 | 04.02.01.04 | 2 días |
| 205 | 1.2.4.2.2 | **ARTEFACTOS DE ILUMINACION** | 51d | 2018-12-14 | 2019-03-06 |  | 3d |  | 344,848.32 | 04.02.02 | 83 días |
| 206 | 1.2.4.2.2.1 | **PARA TECHO** | 41d | 2018-12-14 | 2019-02-18 |  | 3d |  | 330,802.6 | 04.02.02.01 | 67 días |
| 207 | 1.2.4.2.2.1.1 | LUMINARIA PANEL LED RECTANGULAR 1200X300mm | 7d | 2018-12-14 | 2018-12-25 | 204 | 3d | 0d | 103,127.3 | 04.02.02.01.01 | 12 días |
| 208 | 1.2.4.2.2.1.2 | TUBO LED T5/T8 10W CON CARCASA, ACCESORIOS DE CONEXIÓN Y FIJACION | 3d | 2018-12-14 | 2018-12-19 | 207SS | 3d | 0d | 4,442.31 | 04.02.02.01.02 | 6 días |
| 209 | 1.2.4.2.2.1.3 | TUBO LED T5/T8 18W CON CARCASA, ACCESORIOS DE CONEXIÓN Y FIJACION | 5d | 2018-12-19 | 2018-12-27 | 208 | 3d | 0d | 7,624.26 | 04.02.02.01.03 | 9 días |
| 210 | 1.2.4.2.2.1.4 | LUMINARIA PANEL LED PARA ADOSAR CIRCULAR DE 40 W | 3d | 2018-12-19 | 2018-12-24 | 209SS | 3d | 0d | 5,128.2 | 04.02.02.01.04 | 6 días |
| 211 | 1.2.4.2.2.1.5 | LUMINARIA PANEL LED PARA ADOSAR CIRCULAR DE 24 W | 4d | 2018-12-24 | 2018-12-30 | 210 | 3d | 0d | 12,589.92 | 04.02.02.01.05 | 7 días |
| 212 | 1.2.4.2.2.1.6 | LUMINARIA PANEL LED PARA ADOSAR CIRCULAR DE 18 W | 8d | 2018-12-24 | 2019-01-05 | 211SS | 3d | 0d | 33,056.25 | 04.02.02.01.06 | 13 días |
| 213 | 1.2.4.2.2.1.7 | LUMINARIA PANEL LED PARA ADOSAR CIRCULAR DE 12 W | 2d | 2019-01-06 | 2019-01-09 | 212 | 3d | 0d | 889.8 | 04.02.02.01.07 | 4 días |
| 214 | 1.2.4.2.2.1.8 | LUMINARIA TIPO DICROICO DE 10W | 5d | 2019-01-06 | 2019-01-13 | 213SS | 3d | 0d | 9,677.3 | 04.02.02.01.08 | 8 días |
| 215 | 1.2.4.2.2.1.9 | FAROLA LED ORNAMENTAL 60W 6500K,IP65 | 4d | 2019-01-14 | 2019-01-20 | 214 | 3d | 0d | 32,985.2 | 04.02.02.01.09 | 7 días |
| 216 | 1.2.4.2.2.1.10 | DOWNLUGTH LED PARA ADOSAR Y/O EMPOTRAR 20W | 2d | 2019-01-14 | 2019-01-17 | 215SS | 3d | 0d | 2,086.24 | 04.02.02.01.10 | 4 días |
| 217 | 1.2.4.2.2.1.11 | REFLECTOR LED 50W | 3d | 2019-01-17 | 2019-01-21 | 216 | 3d | 0d | 4,534.88 | 04.02.02.01.11 | 5 días |
| 218 | 1.2.4.2.2.1.12 | MARCO PARA PANEL LED DE 30X120CM | 7d | 2019-01-17 | 2019-01-28 | 217SS | 3d | 0d | 30,717.2 | 04.02.02.01.12 | 12 días |
| 219 | 1.2.4.2.2.1.13 | APLIQUE LED 20W IP 65 | 1d | 2019-01-28 | 2019-01-29 | 218 | 3d | 0d | 1,255.95 | 04.02.02.01.13 | 2 días |
| 220 | 1.2.4.2.2.1.14 | LUZ DE EMERGENCIA TIPO LED | 4d | 2019-01-30 | 2019-02-05 | 219 | 3d | 0d | 50,172 | 04.02.02.01.14 | 7 días |
| 221 | 1.2.4.2.2.1.15 | LUMINARIA REFLECTOR LED DE 200W | 3d | 2019-02-05 | 2019-02-10 | 220 | 3d | 0d | 26,534.8 | 04.02.02.01.15 | 6 días |
| 222 | 1.2.4.2.2.1.16 | REFLECTOR LED DE 10W INTERPERIE | 1d | 2019-02-10 | 2019-02-11 | 221 | 3d | 0d | 585.2 | 04.02.02.01.16 | 2 días |
| 223 | 1.2.4.2.2.1.17 | APLIQUE DUAL DE MURO DUAL LED 2X11 W | 2d | 2019-02-11 | 2019-02-14 | 222 | 3d | 0d | 3,755.8 | 04.02.02.01.17 | 4 días |
| 224 | 1.2.4.2.2.1.18 | LUZ GUIA LED 2W PARA EMPOTRAR | 2d | 2019-02-15 | 2019-02-18 | 223 | 3d | 0d | 1,639.99 | 04.02.02.01.18 | 4 días |

| ID | WBS | Task | Duration | Start | Finish | Predecessors | Total slack | Free slack | Cost | Text1 | Text2 |
| --- | --- | --- | --- | --- | --- | --- | --- | --- | --- | --- | --- |
| 225 | 1.2.4.2.2.2 | **INTERRUPTORES** | 4d | 2019-01-01 | 2019-01-07 | 181 | 39d |  | 2,420.72 | 04.02.02.02 | 7 días |
| 226 | 1.2.4.2.2.2.1 | SALIDA PARA INTERRUPTOR CONMUTADO SIMPLE, INCLUYE INSTALACION | 2d | 2019-01-01 | 2019-01-04 |  | 39d | 0d | 1,163.2 | 04.02.02.02.01 | 4 días |
| 227 | 1.2.4.2.2.2.2 | SALIDA PARA INTERRUPTOR CONMUTADO DOBLE, INCLUYE INSTALACION | 2d | 2019-01-04 | 2019-01-07 | 226 | 39d |  | 1,257.52 | 04.02.02.02.02 | 4 días |
| 228 | 1.2.4.2.2.3 | **PRUEBAS ELECTRICAS** | 10d | 2019-02-18 | 2019-03-06 |  | 3d |  | 11,625 | 04.02.02.03 | 17 días |
| 229 | 1.2.4.2.2.3.1 | MEDICION DE LUMINOCIDAD | 2d | 2019-02-18 | 2019-02-21 | 224 | 3d | 0d | 1,800 | 04.02.02.03.01 | 4 días |
| 230 | 1.2.4.2.2.3.2 | MEDICION DE CONTINUIDAD | 3d | 2019-02-21 | 2019-02-26 | 229 | 3d | 0d | 1,875 | 04.02.02.03.02 | 6 días |
| 231 | 1.2.4.2.2.3.3 | MEDION DE RESISTENCIA DE PUESTA A TIERRA | 2d | 2019-02-26 | 2019-03-01 | 230 | 3d | 0d | 1,575 | 04.02.02.03.03 | 4 días |
| 232 | 1.2.4.2.2.3.4 | MEDICION DE AISLAMIENTO | 3d | 2019-03-01 | 2019-03-06 | 231 | 3d |  | 6,375 | 04.02.02.03.04 | 6 días |
| 233 | 1.2.5 | **INSTALACIONES ESPECIALES** | 50d | 2018-12-03 | 2019-02-21 | 16SS | 11d |  | 516,372.56 | 05 | 81 días |
| 234 | 1.2.5.1 | **ACOMETIDAS Y BACKBONES** | 12d | 2018-12-03 | 2018-12-22 |  | 11d |  | 93,298.71 | 05.01 | 20 días |
| 235 | 1.2.5.1.1 | **RACK DE COMUNICACIONES** | 12d | 2018-12-03 | 2018-12-22 |  | 11d |  | 93,298.71 | 05.01.01 | 20 días |
| 236 | 1.2.5.1.1.1 | GABINETE DE PISO PARA COMUNICACIONES 42UR | 4d | 2018-12-03 | 2018-12-09 |  | 11d | 0d | 18,491.7 | 05.01.01.01 | 7 días |
| 237 | 1.2.5.1.1.2 | GABINETE DE PISO PARA COMUNICACIONES 12UR | 5d | 2018-12-09 | 2018-12-17 | 236 | 35d | 0d | 56,562.15 | 05.01.01.02 | 9 días |
| 238 | 1.2.5.1.1.3 | GABINETE DE PARED PARA COMUNICACIONES 12UR | 3d | 2018-12-17 | 2018-12-22 | 237 | 35d | 0d | 18,244.86 | 05.01.01.03 | 6 días |
| 239 | 1.2.5.2 | **EQUIPOS Y ACCESORIOS** | 22d | 2018-12-09 | 2019-01-13 |  | 11d |  | 220,173.95 | 05.02 | 36 días |
| 240 | 1.2.5.2.1 | SWITCH CORE DE 24 PUERTOS RJ45 10/100/1000Mbps | 1d | 2018-12-22 | 2018-12-24 | 238 | 35d | 0d | 15,201.62 | 05.02.01 | 3 días |
| 241 | 1.2.5.2.2 | SWITCH POE DE 24 PUERTOS RJ45 10/100/1000Mbps | 2d | 2018-12-24 | 2018-12-27 | 240 | 35d | 0d | 57,514.2 | 05.02.02 | 4 días |
| 242 | 1.2.5.2.3 | CENTRAL TELEFÓNICA IP HÍBRIDA | 1d | 2018-12-27 | 2018-12-28 | 241 | 35d | 0d | 5,810.81 | 05.02.03 | 2 días |
| 243 | 1.2.5.2.4 | CENTRAL DE DETECCIÓN Y ALARMA CONTRAINCENDIO | 1d | 2018-12-29 | 2018-12-30 | 242 | 35d | 0d | 11,624.04 | 05.02.04 | 2 días |
| 244 | 1.2.5.2.5 | ROUTER CLOUD CORE | 1d | 2018-12-30 | 2019-01-01 | 243 | 35d | 0d | 7,262.02 | 05.02.05 | 3 días |
| 245 | 1.2.5.2.6 | **CONFIGURACION DE EQUIPOS** | 22d | 2018-12-09 | 2019-01-13 |  | 11d |  | 122,761.26 | 05.02.06 | 36 días |
| 246 | 1.2.5.2.6.1 | CONFIGURACION DE SISTEMA DE DETECCION DE HUMO | 5d | 2019-01-01 | 2019-01-09 | 244 | 35d | 0d | 6,601.1 | 05.02.06.01 | 9 días |
| 247 | 1.2.5.2.6.2 | CONFIGURACION DE TELEFONO IP | 2d | 2019-01-09 | 2019-01-12 | 246 | 35d | 0d | 869.76 | 05.02.06.02 | 4 días |
| 248 | 1.2.5.2.6.3 | CONFIGURACION DE SISTEMA DE CENTRAL TELEFONICA | 1d | 2019-01-12 | 2019-01-13 | 247 | 35d |  | 271.85 | 05.02.06.03 | 2 días |

| ID | WBS | Task | Type | Duration | Start | Finish | Predecessors | Total slack | Free slack | Cost | Text1 | Text2 |
| --- | --- | --- | --- | --- | --- | --- | --- | --- | --- | --- | --- | --- |
| 249 | 1.2.5.2.6.4 | **CONDUCTORES DE COMUNICACIONES** |  | 22d | 2018-12-09 | 2019-01-13 |  | 11d | 0d | 115,018.55 | 05.02.06.04 | 36 días |
| 250 | 1.2.5.2.6.4.1 | TENDIDO DE CABLE FPL ANTIFLAMA 2X16AWG LSZH |  | 11d | 2018-12-09 | 2018-12-27 | 236 | 11d | 0d | 49,821.75 | 05.02.06.04.01 | 19 días |
| 251 | 1.2.5.2.6.4.2 | TENDIDO DE CABLE FTP CAT 6A |  | 11d | 2018-12-27 | 2019-01-13 | 250 | 11d | 0d | 65,196.8 | 05.02.06.04.02 | 18 días |
| 252 | 1.2.5.3 | **RED DE VOZ, VIDEO Y DATOS** |  | 50d | 2018-12-03 | 2019-02-21 |  | 11d |  | 196,143.9 | 05.03 | 81 días |
| 253 | 1.2.5.3.1 | **PATCH PANEL** |  | 3d | 2019-01-14 | 2019-01-18 |  | 11d |  | 5,111.37 | 05.03.01 | 5 días |
| 254 | 1.2.5.3.1.1 | PATCH PANEL 24 PUERTOS CAT6 |  | 3d | 2019-01-14 | 2019-01-18 | 251 | 11d | 0d | 5,111.37 | 05.03.01.01 | 5 días |
| 255 | 1.2.5.3.2 | **EQUIPOS Y ACCESORIOS** |  | 21d | 2019-01-18 | 2019-02-21 |  | 11d |  | 185,653.53 | 05.03.02 | 35 días |
| 256 | 1.2.5.3.2.1 | ACCESS POINT WI-FI 4 POE OMNIDIRECCIONALES |  | 5d | 2019-01-18 | 2019-01-26 | 254 | 11d | 0d | 80,898 | 05.03.02.01 | 9 días |
| 257 | 1.2.5.3.2.2 | CÁMARAS IP DOMO PoE IP67 IK10 |  | 5d | 2019-01-26 | 2019-02-03 | 256 | 11d | 0d | 32,001.48 | 05.03.02.02 | 9 días |
| 258 | 1.2.5.3.2.3 | CÁMARAS IP PTZ DOMO PoE IP67 IK10 |  | 5d | 2019-01-26 | 2019-02-03 | 257SS | 11d | 0d | 16,608.1 | 05.03.02.03 | 9 días |
| 259 | 1.2.5.3.2.4 | CÁMARAS IP WIFI IP67 IK10 |  | 1d | 2019-02-03 | 2019-02-05 | 258 | 11d | 0d | 2,304.05 | 05.03.02.04 | 3 días |
| 260 | 1.2.5.3.2.5 | CÁMARAS INTERIOR IP WIFI IP67 IK10 |  | 4d | 2019-02-03 | 2019-02-10 | 259SS | 11d | 0d | 15,246.66 | 05.03.02.05 | 8 días |
| 261 | 1.2.5.3.2.6 | GRABADOR NVR POE |  | 1d | 2019-02-10 | 2019-02-11 | 260 | 11d | 0d | 6,543.78 | 05.03.02.06 | 2 días |
| 262 | 1.2.5.3.2.7 | TELÉFONO IP POE DE ESCRITORIO |  | 6d | 2019-02-11 | 2019-02-21 | 261 | 11d | 0d | 22,644.3 | 05.03.02.07 | 11 días |
| 263 | 1.2.5.3.2.8 | TELÉFONO IP POE DE SMART |  | 2d | 2019-02-11 | 2019-02-14 | 262SS | 15d |  | 9,407.16 | 05.03.02.08 | 4 días |
| 264 | 1.2.5.3.3 | **OBRAS PROVICIONALES** |  | 5d | 2018-12-03 | 2018-12-11 |  | 56d |  | 5,379 | 05.03.03 | 9 días |
| 265 | 1.2.5.3.3.1 | ARMADO DE ANDAMIO PARA INSTALACIONES |  | 5d | 2018-12-03 | 2018-12-11 | 236SS | 56d |  | 5,379 | 05.03.03.01 | 9 días |
| 266 | 1.2.5.4 | **SISTEMA DE EXTRACION DE AIRE** |  | 3d | 2019-01-14 | 2019-01-18 |  | 32d |  | 6,756 | 05.04 | 5 días |
| 267 | 1.2.5.4.1 | **CONDUCTORES Y CABLES** |  | 3d | 2019-01-14 | 2019-01-18 | 249 | 32d |  | 6,756 | 05.04.01 | 5 días |
| 268 | 1.2.5.4.1.1 | CABLE LSZH UNIPOLAR 4mm2 |  | 3d | 2019-01-14 | 2019-01-18 |  | 32d |  | 6,756 | 05.04.01.01 | 5 días |
| 269 | 1.3 | Termino de Obra | milestone | 0d | 2018-12-03 | 2018-12-03 |  | 61d |  |  |  | 0 días |
| 270 | 1.4 | OBRAS PROVISIONALES, TRABAJOS PRELIMINARES, SEGURIDAD Y SALUD |  | 1d? | 2018-12-03 | 2018-12-04 |  | 60d |  |  |  | 2 días |
